# BIO4-2410-CRO-Rev.19

Schedule from MS Project XML, 2025-03-07 to 2026-08-17, status date 2025-12-23, 9 hours a day, costs in $, A marks actual dates.

## Calendars

- Lunes - Sabado: Mon-Sat 08:00-13:00, 14:00-18:00; Sun off.
- Copia de Lunes - Sabado: Mon-Sat 08:00-13:00, 14:00-18:00; Sun off. Exceptions (off unless hours are given): 2025-12-01 to 2026-01-04 (Diciembre 2025).

## Schedule

| ID | WBS | Task | Type | Duration | Start | Finish | Predecessors | Complete | Remaining | Baseline start | Baseline finish | Baseline duration | Baseline 1 start | Baseline 1 finish | Total slack | Free slack | Constraint | Cost | Baseline cost | Actual cost |
| --- | --- | --- | --- | --- | --- | --- | --- | --- | --- | --- | --- | --- | --- | --- | --- | --- | --- | --- | --- | --- |
| 1 | 0 | **PROYECTO - BIO4-22103** |  | 452.5d | 2025-03-07 A | 2026-08-17 |  | 34% | 297.97d | 2025-03-07 | 2026-08-01 | 440d | 2025-01-01 | 2026-08-15 | 0d |  |  | 6,784,541.98 | 8,131,041.98 | 965,301.38 |
| 2 | - | **HITOS PRINCIPALES** |  | 452.5d | 2025-03-07 A | 2026-08-17 |  |  | 452.5d | 2025-03-07 | 2026-08-01 | 440d | 2025-03-07 | 2026-08-15 | 0d |  |  |  |  |  |
| 3 | - | INICIO DE PROYECTO (Firma del contrato con PRAJ) | milestone | 0d | 2025-03-07 A | 2025-03-07 A |  | 100% |  | 2025-03-07 | 2025-03-07 |  | 2025-03-07 | 2025-03-07 |  |  | start no earlier than 2025-03-07 |  |  |  |
| 4 | - | Inicio de recepción de equipos en planta | milestone | 0d | 2026-01-14 | 2026-01-14 | 474FF |  |  | 2026-01-13 | 2026-01-13 |  | 2025-12-10 | 2025-12-10 | 184.3d |  | finish no earlier than 2023-04-03 |  |  |  |
| 5 | - | Fin de recepción de equipos en planta | milestone | 0d | 2026-02-19 | 2026-02-19 | 493FF |  |  | 2026-02-10 | 2026-02-10 |  | 2026-01-05 | 2026-01-05 | 153.1d |  |  |  |  |  |
| 6 | - | Disponibilidad operativa de back-up TQ-411 | milestone | 0d | 2026-03-26 | 2026-03-26 | 604FF |  |  | 2026-03-27 | 2026-03-27 |  | 2026-03-26 | 2026-03-26 | 123d |  |  |  |  |  |
| 7 | - | Finalización de montaje de estructura de destilería nueva | milestone | 0d | 2026-03-26 | 2026-03-26 | 522FF |  |  |  |  |  | 2026-03-06 | 2026-03-06 | 123d |  |  |  |  |  |
| 8 | - | Finalización de montaje de equipos | milestone | 0d | 2026-05-08 | 2026-05-08 | 537FF, 544FF, 571FF |  |  |  |  |  | 2026-03-12 | 2026-03-12 | 85.5d |  |  |  |  |  |
| 9 | - | Finalización montaje de piping destilería | milestone | 0d | 2026-05-18 | 2026-05-18 | 599FF |  |  | 2026-05-02 | 2026-05-02 |  | 2026-05-16 | 2026-05-16 | 78d |  |  |  |  |  |
| 10 | - | Finalización montaje eléctrico | milestone | 0d | 2026-05-21 | 2026-05-21 | 611FF, 612FF, 614FF, 615FF, 616FF, 622FF, 624FF |  |  | 2026-05-06 | 2026-05-06 |  | 2026-07-22 | 2026-07-22 | 75d |  |  |  |  |  |
| 11 | - | Inicio parada pre-arranque | milestone | 0d | 2026-05-21 | 2026-05-21 | 19SS |  |  | 2026-05-07 | 2026-05-07 |  | 2026-05-21 | 2026-05-21 | 75d |  |  |  |  |  |
| 12 | - | Puesta en marcha de destilería | milestone | 0d | 2026-06-02 | 2026-06-02 | 644SS |  |  | 2026-05-19 | 2026-05-19 |  | 2026-06-02 | 2026-06-02 | 65d |  |  |  |  |  |
| 13 | - | FIN DE PROYECTO | milestone | 0d | 2026-08-17 | 2026-08-17 | 647FF, 642, 633, 634, 635, 585 |  |  | 2026-08-01 | 2026-08-01 |  | 2026-08-15 | 2026-08-15 | 0d |  |  |  |  |  |
| 14 | - | **PARADA DE PLANTA** |  | 309.5d | 2025-06-06 A | 2026-06-02 |  | 41% | 182.06d | 2025-06-06 | 2026-06-13 | 320d | 2025-06-06 | 2026-06-01 | 0d |  |  |  |  |  |
| 15 | - | CIP 1 DESTILERÍA |  | 1d | 2025-06-06 A | 2025-06-06 A | 3 | 100% |  | 2025-06-06 | 2025-06-06 | 1d | 2025-06-06 | 2025-06-06 |  |  | start no earlier than 2025-06-06 |  |  |  |
| 16 | - | CIP 2 DESTILERÍA |  | 1d | 2025-08-26 A | 2025-08-26 A | 15FS+68d | 100% |  | 2025-08-26 | 2025-08-26 | 1d | 2025-08-26 | 2025-08-26 |  |  |  |  |  |  |
| 17 | - | CIP 4 DESTILERÍA | milestone | 0d | 2026-03-25 | 2026-03-25 | 18FS+68d |  |  | 2026-03-25 | 2026-03-25 | 1d | 2026-03-25 | 2026-03-25 | 0.5d | 0d | start no earlier than 2026-03-25 |  |  |  |
| 18 | - | Parada Anual de Planta |  | 5d | 2025-11-24 A | 2025-11-28 A | 3 | 100% |  | 2025-10-27 | 2025-10-31 | 5d | 2025-11-24 | 2025-11-28 |  |  | start no earlier than 2025-11-24 |  |  |  |
| 19 | - | Parada pre-arranque de destilería a 500m3 |  | 10d | 2026-05-21 | 2026-06-02 | 622, 624 |  |  | 2026-05-07 | 2026-05-18 | 10d | 2026-05-21 | 2026-06-01 | 0d |  |  |  |  |  |
| 20 | 1 | **INGENIERIA** |  | 291.5d | 2025-03-25 A | 2026-02-27 |  | 74% | 74.67d | 2025-03-07 | 2025-10-28 | 201d | 2025-03-25 | 2026-02-24 | 146d |  |  | 106,500 | 106,500 | 21,000 |
| 21 | 1.1 | **PRAJ** |  | 235d | 2025-03-25 A | 2025-12-23 |  |  | 235d | 2025-03-07 | 2025-10-28 | 201d | 2025-03-25 | 2025-10-30 | 202.5d |  |  |  |  |  |
| 22 | 1.1.1 | **Ingenieria básica** |  | 91d | 2025-03-25 A | 2025-07-09 |  |  | 91d | 2025-03-07 | 2025-06-17 | 87d | 2025-03-25 | 2025-07-09 | 171.5d |  |  |  |  |  |
| 23 | - | Liberación del listado de equipos | milestone | 0d | 2025-03-31 A | 2025-03-31 A | 3 | 100% |  | 2025-03-14 | 2025-03-14 |  | 2025-03-31 | 2025-03-31 |  |  | start no earlier than 2025-03-14 |  |  |  |
| 24 | - | Liberación de PFD | milestone | 0d | 2025-03-31 A | 2025-03-31 A | 3 | 100% |  | 2025-03-17 | 2025-03-17 |  | 2025-03-31 | 2025-03-31 |  |  | start no earlier than 2025-03-17 |  |  |  |
| 25 | - | Liberación de la descripción de proceso | milestone | 0d | 2025-04-01 | 2025-04-01 | 3 |  |  | 2025-04-01 | 2025-04-01 |  | 2025-04-01 | 2025-04-01 | 0d |  | must finish on 2025-04-01 |  |  |  |
| 26 | - | Liberación de lista de entradas y salidas | milestone | 0d | 2025-06-04 A | 2025-06-04 A | 3 | 100% |  | 2025-06-17 | 2025-06-17 |  | 2025-06-04 | 2025-06-04 |  |  | start no earlier than 2025-06-17 |  |  |  |
| 27 | - | Liberación de indice de fluidos | milestone | 0d | 2025-03-25 | 2025-03-25 | 3 |  |  | 2025-03-25 | 2025-03-25 |  | 2025-03-25 | 2025-03-25 | 262.5d | 235d | finish no earlier than 2025-03-25 |  |  |  |
| 28 | - | Resumen de servicios | milestone | 0d | 2025-06-04 A | 2025-06-04 A | 3 | 100% |  | 2025-04-01 | 2025-04-01 |  | 2025-06-04 | 2025-06-04 |  |  | start no earlier than 2025-04-01 |  |  |  |
| 29 | - | Liberacion Balance de Masa-Energia preliminar | milestone | 0d | 2025-05-02 A | 2025-05-02 A | 25 | 100% |  | 2025-04-01 | 2025-04-01 |  | 2025-05-02 | 2025-05-02 |  |  |  |  |  |  |
| 30 | - | Liberación de P&ID | milestone | 0d | 2025-05-14 A | 2025-05-14 A | 3 | 100% |  | 2025-04-11 | 2025-04-11 |  | 2025-05-14 | 2025-05-14 |  |  | start no earlier than 2025-04-11 |  |  |  |
| 31 | - | Liberación de lista de cargas eléctricas | milestone | 0d | 2025-05-13 A | 2025-05-13 A | 3 | 100% |  | 2025-03-07 | 2025-03-07 |  | 2025-05-13 | 2025-05-13 |  |  |  |  |  |  |
| 32 | - | Liberación de descripción de enclavamientos y logica de control | milestone | 0d | 2025-07-09 A | 2025-07-09 A | 3 | 100% |  | 2025-05-16 | 2025-05-16 |  | 2025-07-09 | 2025-07-09 |  |  | start no earlier than 2025-05-16 |  |  |  |
| 33 | - | Liberación de balance de Masa-Energia final | milestone | 0d | 2025-06-25 A | 2025-06-25 A | 3 | 100% |  | 2025-05-23 | 2025-05-23 |  | 2025-06-25 | 2025-06-25 |  |  | must finish on 2025-05-23 |  |  |  |

| ID | WBS | Task | Type | Duration | Start | Finish | Predecessors | Complete | Remaining | Baseline start | Baseline finish | Baseline duration | Baseline 1 start | Baseline 1 finish | Total slack | Free slack | Constraint | Cost | Baseline cost | Actual cost |
| --- | --- | --- | --- | --- | --- | --- | --- | --- | --- | --- | --- | --- | --- | --- | --- | --- | --- | --- | --- | --- |
| 34 | 1.1.2 | **Ingeniería estática** |  | 30d | 2025-04-30 A | 2025-06-04 A |  | 100% |  | 2025-04-18 | 2025-05-07 | 16d | 2025-04-30 | 2025-06-04 |  |  |  |  |  |  |
| 35 | - | Datos de carga civil | milestone | 0d | 2025-04-30 A | 2025-04-30 A | 3 | 100% |  | 2025-04-18 | 2025-04-18 |  | 2025-04-30 | 2025-04-30 |  |  | must finish on 2025-04-18 |  |  |  |
| 36 | - | Especificación de pintura y aislación de equipos | milestone | 0d | 2025-06-04 A | 2025-06-04 A | 3 | 100% |  | 2025-05-07 | 2025-05-07 |  | 2025-06-04 | 2025-06-04 |  |  | must finish on 2025-05-07 |  |  |  |
| 37 | 1.1.3 | **Ingenieria piping** |  | 212d | 2025-04-21 A | 2025-12-23 |  |  | 212d | 2025-03-07 | 2025-09-17 | 166d | 2025-04-21 | 2025-10-01 | 202.5d |  |  |  |  |  |
| 38 | - | Lay out de equipos y elevaciones | milestone | 0d | 2025-04-21 A | 2025-04-21 A | 3 | 100% |  | 2025-03-07 | 2025-04-09 | 29d | 2025-04-21 | 2025-04-21 |  |  | finish no earlier than 2025-03-28 |  |  |  |
| 39 | - | Liberación de especificaciones de cañerías y válvulas | milestone | 0d | 2025-12-23 | 2025-12-23 | 3 |  |  | 2025-03-31 | 2025-03-31 |  | 2025-10-01 | 2025-10-01 | 202.5d |  | start no earlier than 2025-12-23 |  |  |  |
| 40 | - | Liberación de limite de bateria (Tie-in points) | milestone | 0d | 2025-06-05 A | 2025-06-05 A | 3 | 100% |  | 2025-04-17 | 2025-04-17 |  | 2025-06-05 | 2025-06-05 |  |  | start no earlier than 2025-04-17 |  |  |  |
| 41 | - | Lanzamiento de lote 1 de piping | milestone | 0d | 2025-09-29 A | 2025-09-29 A | 3 | 100% |  | 2025-04-21 | 2025-04-21 |  | 2025-04-21 | 2025-04-21 |  |  | must finish on 2025-04-21 |  |  |  |
| 42 | - | Datos de carga civil adquirida | milestone | 0d | 2025-06-12 A | 2025-06-12 A | 3 | 100% |  | 2025-05-19 | 2025-05-28 | 9d | 2025-06-12 | 2025-06-12 |  |  | start no earlier than 2025-05-19 |  |  |  |
| 43 | - | Modelo 3D - 30% | milestone | 0d | 2025-06-30 A | 2025-06-30 A | 3 | 100% |  | 2025-05-20 | 2025-05-20 |  | 2025-06-30 | 2025-06-30 |  |  | must finish on 2025-05-20 |  |  |  |
| 44 | - | Modelo 3D - 60% |  | 0d | 2025-09-01 A | 2025-09-01 A | 3 | 100% |  | 2025-06-06 | 2025-06-06 |  | 2025-09-01 | 2025-09-01 |  |  | must finish on 2025-06-06 |  |  |  |
| 45 | - | Modelo 3D - 100% | milestone | 0d | 2025-12-23 | 2025-12-23 | 3 |  |  | 2025-07-02 | 2025-07-02 |  | 2025-10-01 | 2025-10-01 | 58.5d | 0d | start no earlier than 2025-12-23 |  |  |  |
| 46 | - | Lanzamiento de lote 2 de piping | milestone | 0d | 2025-06-23 | 2025-06-23 | 3 |  |  | 2025-06-23 | 2025-06-23 |  | 2025-06-23 | 2025-06-23 | 0d |  | must finish on 2025-06-23 |  |  |  |
| 47 | - | Lanzamiento de lote 3 de piping | milestone | 0d | 2025-07-09 | 2025-07-09 | 3 |  |  | 2025-07-09 | 2025-07-09 |  | 2025-07-09 | 2025-07-09 | 0d |  | must finish on 2025-07-09 |  |  |  |
| 48 | - | Especificación de aislación y pintura de cañerías | milestone | 0d | 2025-07-04 | 2025-07-04 | 3 |  |  | 2025-07-04 | 2025-07-04 |  | 2025-07-04 | 2025-07-04 | 0d |  | must finish on 2025-07-04 |  |  |  |
| 49 | - | Liberación de planos generales de piping | milestone | 0d | 2025-12-23 | 2025-12-23 | 3 |  |  | 2025-07-30 | 2025-07-30 |  | 2025-10-01 | 2025-10-01 | 202.5d |  | start no earlier than 2025-12-23 |  |  |  |
| 50 | - | Isométricos de cañerías mayores a 3" | milestone | 0d | 2025-09-17 | 2025-09-17 | 3 |  |  | 2025-09-17 | 2025-09-17 |  | 2025-09-17 | 2025-09-17 | 0d |  | must finish on 2025-09-17 |  |  |  |
| 51 | 1.1.4 | **Ingenieria de Instrumentación** |  | 0d | 2025-07-31 A | 2025-07-31 A |  | 100% |  | 2025-05-13 | 2025-06-17 | 30d | 2025-07-31 | 2025-07-31 |  |  |  |  |  |  |
| 52 | - | Listado de instrumentos | milestone | 0d | 2025-07-31 A | 2025-07-31 A | 3 | 100% |  | 2025-05-13 | 2025-05-13 |  | 2025-07-31 | 2025-07-31 |  |  | start no earlier than 2025-05-13 |  |  |  |
| 53 | - | Liberación de lista de entradas y salidas | milestone | 0d | 2025-07-31 A | 2025-07-31 A | 3 | 100% |  | 2025-06-17 | 2025-06-17 |  | 2025-07-31 | 2025-07-31 |  |  | start no earlier than 2025-06-17 |  |  |  |
| 54 | 1.1.5 | **Logística** |  | 23d | 2025-10-03 A | 2025-10-30 |  |  | 23d | 2025-10-28 | 2025-10-28 |  | 2025-10-03 | 2025-10-30 | 0d |  |  |  |  |  |
| 55 | - | Paquete 1 en puerto de Origen | milestone | 0d | 2025-10-03 A | 2025-10-03 A |  | 100% |  |  |  |  | 2025-10-03 | 2025-10-03 |  |  | must finish on 2025-10-03 |  |  |  |
| 56 | - | Paquete 2 en puerto de Origen | milestone | 0d | 2025-10-30 | 2025-10-30 |  |  |  | 2025-10-28 | 2025-10-28 |  | 2025-10-30 | 2025-10-30 | 0d |  | must finish on 2025-10-30 |  |  |  |
| 57 | 1.2 | **BIO4** |  | 268.5d | 2025-04-21 A | 2026-02-27 |  | 74% | 68.78d | 2025-04-10 | 2025-09-27 | 147d | 2025-04-21 | 2026-02-24 | 146d |  |  | 106,500 | 106,500 | 21,000 |
| 58 | 1.2.1 | **Procesos** |  | 147d | 2025-07-23 A | 2026-01-09 |  | 60% | 59.07d | 2025-04-11 | 2025-09-01 | 123d | 2025-07-23 | 2025-10-18 | 48.5d |  |  | 15,000 | 15,000 | 6,000 |
| 59 | 1.2.1.1 | **Destilería** |  | 147d | 2025-07-23 A | 2026-01-09 |  | 59% | 60.25d | 2025-04-11 | 2025-07-07 | 75d | 2025-07-23 | 2025-10-18 | 48.5d |  |  |  |  |  |
| 60 | 1.2.1.1.1 | Confección de PID definitivo |  | 15d | 2025-12-24 | 2026-01-09 | 30 |  |  | 2025-04-11 | 2025-04-28 | 15d | 2025-10-02 | 2025-10-18 | 0d |  | start no earlier than 2025-12-23 |  |  |  |
| 61 | 1.2.1.1.2 | Listado de equipos definitivo | milestone | 0d | 2025-08-22 A | 2025-08-27 A | 60 | 100% |  | 2025-04-29 | 2025-05-03 | 5d | 2025-08-22 | 2025-08-27 |  |  | start no earlier than 2025-08-31 |  |  |  |
| 62 | 1.2.1.1.3 | Listado de instrumentos definitivo |  | 5d | 2025-12-24 | 2025-12-29 | 52 |  |  | 2025-05-13 | 2025-05-17 | 5d | 2025-10-02 | 2025-10-07 | 0d |  | start no earlier than 2025-12-23 |  |  |  |

Notes:
- 35: Chequear Rafa a que se refiere esta tarea y que diferencia tiene con Datos de carga civil adquirida (linea 27)
- 42: VER CON RAFA

| ID | WBS | Task | Duration | Start | Finish | Predecessors | Complete | Remaining | Baseline start | Baseline finish | Baseline duration | Baseline 1 start | Baseline 1 finish | Total slack | Free slack | Constraint | Cost | Baseline cost | Actual cost |
| --- | --- | --- | --- | --- | --- | --- | --- | --- | --- | --- | --- | --- | --- | --- | --- | --- | --- | --- | --- |
| 63 | 1.2.1.1.4 | **Revisión de maqueta 3D** | 137d | 2025-07-23 A | 2025-12-29 |  | 88% | 16.71d | 2025-05-20 | 2025-07-07 | 42d | 2025-07-23 | 2025-10-07 | 58.5d |  |  |  |  |  |
| 64 | 1.2.1.1.4.1 | Revisión Maqueta 3D - 30% | 25d | 2025-07-23 A | 2025-08-20 A | 43, 98 | 100% |  | 2025-05-20 | 2025-05-24 | 5d | 2025-07-23 | 2025-08-20 |  |  |  |  |  |  |
| 65 | 1.2.1.1.4.2 | Revisión Maqueta 3D - 60% | 11d | 2025-09-01 A | 2025-09-12 A | 64, 44 | 100% |  | 2025-06-07 | 2025-06-12 | 5d | 2025-09-01 | 2025-09-12 |  |  |  |  |  |  |
| 66 | 1.2.1.1.4.3 | Revisión Maqueta 3D - 100% | 5d | 2025-12-24 | 2025-12-29 | 65, 45 |  |  | 2025-07-02 | 2025-07-07 | 5d | 2025-10-02 | 2025-10-07 | 58.5d | 44.4d | start no earlier than 2025-12-23 |  |  |  |
| 67 | 1.2.1.2 | **Servicios** | 82d | 2025-10-02 A | 2026-01-05 |  | 70% | 24.6d | 2025-05-23 | 2025-06-07 | 14d | 2025-10-02 | 2025-10-17 | 36.5d |  |  | 15,000 | 15,000 | 6,000 |
| 68 | 1.2.1.2.1 | **Torres de enfriamiento** | 77d | 2025-10-02 A | 2025-12-30 |  | 80% | 15.4d | 2025-05-23 | 2025-06-02 | 9d | 2025-10-02 | 2025-10-11 | 11.5d |  |  | 7,500 | 7,500 | 6,000 |
| 69 | 1.2.1.2..1.1 | Balance energético | 28d | 2025-10-02 A | 2025-11-03 A | 33 | 100% |  | 2025-05-23 | 2025-05-26 | 3d | 2025-10-02 | 2025-10-04 |  |  | start no earlier than 2025-10-01 |  |  |  |
| 70 | 1.2.1.2..1.2 | Datasheet de equipos | 1d | 2025-12-24 | 2025-12-24 | 69, 28 |  |  | 2025-05-27 | 2025-05-27 | 1d | 2025-10-06 | 2025-10-06 | 16.5d | 5d | start no earlier than 2025-12-23 |  |  |  |
| 71 | 1.2.1.2..1.3 | Confección de PID torres | 5d | 2025-12-24 | 2025-12-29 | 69 |  |  | 2025-05-27 | 2025-05-31 | 5d | 2025-10-06 | 2025-10-10 | 11.5d | 0d | start no earlier than 2025-12-23 |  |  |  |
| 72 | 1.2.1.2..1.4 | Listado de equipos e instrumentos | 1d | 2025-12-30 | 2025-12-30 | 71 |  |  | 2025-06-02 | 2025-06-02 | 1d | 2025-10-11 | 2025-10-11 | 11.5d | 0d | start no earlier than 2025-12-23 |  |  |  |
| 73 | 1.2.1.2.2 | Vapor | 5d | 2025-12-31 | 2026-01-05 | 72 |  |  | 2025-06-03 | 2025-06-07 | 5d | 2025-10-13 | 2025-10-17 | 36.5d | 0d | start no earlier than 2025-12-23 | 7,500 | 7,500 |  |
| 74 | 1.2.1.3 | **Verificación de bombas periféricas** | 6d | 2025-12-24 | 2025-12-30 |  |  |  | 2025-05-23 | 2025-05-29 | 6d | 2025-10-02 | 2025-10-08 | 27.5d |  |  |  |  |  |
| 75 | 1.2.1.3.1 | Mosto fermentado | 3d | 2025-12-24 | 2025-12-26 | 33, 27, 30 |  |  | 2025-05-23 | 2025-05-26 | 3d | 2025-10-02 | 2025-10-04 | 27.5d | 0d | start no earlier than 2025-12-23 |  |  |  |
| 76 | 1.2.1.3.2 | Vinasa liviana | 3d | 2025-12-27 | 2025-12-30 | 75 |  |  | 2025-05-27 | 2025-05-29 | 3d | 2025-10-06 | 2025-10-08 | 27.5d | 16d | start no earlier than 2025-12-23 |  |  |  |
| 77 | 1.2.2 | **Piping** | 79d | 2025-10-02 A | 2026-01-01 |  | 46% | 42.32d | 2025-05-23 | 2025-09-27 | 110d | 2025-10-02 | 2025-10-13 | 81.5d |  |  | 27,000 | 27,000 |  |
| 78 | 1.2.2.1 | **Interconexiones** | 7d | 2025-12-24 | 2025-12-31 |  |  |  | 2025-06-13 | 2025-06-20 | 7d | 2025-10-02 | 2025-10-09 | 64.5d |  |  | 7,000 | 7,000 |  |
| 79 | 1.2.2.1.1 | Diseño 3D | 5d | 2025-12-24 | 2025-12-29 | 40, 65 |  |  | 2025-06-13 | 2025-06-18 | 5d | 2025-10-02 | 2025-10-07 | 64.5d | 0d | start no earlier than 2025-12-23 | 6,500 | 6,500 |  |
| 80 | 1.2.2.1.2 | Isométricos | 1d | 2025-12-30 | 2025-12-30 | 79 |  |  | 2025-06-19 | 2025-06-19 | 1d | 2025-10-08 | 2025-10-08 | 64.5d | 0d | start no earlier than 2025-12-23 | 250 | 250 |  |
| 81 | 1.2.2.1.3 | Listado de materiales | 1d | 2025-12-31 | 2025-12-31 | 80 |  |  | 2025-06-20 | 2025-06-20 | 1d | 2025-10-09 | 2025-10-09 | 64.5d | 0d | start no earlier than 2025-12-23 | 250 | 250 |  |
| 82 | 1.2.2.2 | **Servicios** | 8d | 2025-12-24 | 2026-01-01 |  |  |  | 2025-05-23 | 2025-05-31 | 8d | 2025-10-02 | 2025-10-10 | 81.5d |  |  | 20,000 | 20,000 |  |
| 83 | 1.2.2.2.1 | Cálculo | 5d | 2025-12-24 | 2025-12-29 | 33, 27, 28 |  |  | 2025-05-23 | 2025-05-28 | 5d | 2025-10-02 | 2025-10-07 | 81.5d | 0d | start no earlier than 2025-12-23 | 4,500 | 4,500 |  |
| 84 | 1.2.2.2.2 | Diseño 3D | 1d | 2025-12-30 | 2025-12-30 | 83 |  |  | 2025-05-29 | 2025-05-29 | 1d | 2025-10-08 | 2025-10-08 | 81.5d | 0d | start no earlier than 2025-12-23 | 15,000 | 15,000 |  |
| 85 | 1.2.2.2.3 | Isométricos | 1d | 2025-12-31 | 2025-12-31 | 84 |  |  | 2025-05-30 | 2025-05-30 | 1d | 2025-10-09 | 2025-10-09 | 81.5d | 0d | start no earlier than 2025-12-23 | 250 | 250 |  |
| 86 | 1.2.2.2.4 | Listado de materiales | 1d | 2026-01-01 | 2026-01-01 | 85 |  |  | 2025-05-31 | 2025-05-31 | 1d | 2025-10-10 | 2025-10-10 | 81.5d | 0d | start no earlier than 2025-12-23 | 250 | 250 |  |

Notes:
- 67: Es necesario el Balance de masa enviado por PRAJ
- 74: Es necesario el balance de masa enviado por PRAJ
- 79: Es necesaria la maqueta enviada por PRAJ donde figuran los tp point
- 83: Para el calculo del piping de servicios necesito el balance de masa enviado por PRAJ

| ID | WBS | Task | Type | Duration | Start | Finish | Predecessors | Complete | Remaining | Baseline start | Baseline finish | Baseline duration | Baseline 1 start | Baseline 1 finish | Total slack | Free slack | Constraint | Cost | Baseline cost | Actual cost |
| --- | --- | --- | --- | --- | --- | --- | --- | --- | --- | --- | --- | --- | --- | --- | --- | --- | --- | --- | --- | --- |
| 87 | 1.2.2.3 | **Piping para montaje en parada anual** |  | 10d | 2025-10-02 A | 2025-10-13 A |  | 100% |  | 2025-07-02 | 2025-09-27 | 76d | 2025-10-02 | 2025-10-13 |  |  |  |  |  |  |
| 88 | 1.2.2.3.1 | Definición de isométricos |  | 10d | 2025-10-02 A | 2025-10-13 A | 50 | 100% |  | 2025-09-17 | 2025-09-27 | 10d | 2025-10-02 | 2025-10-13 |  |  | start no earlier than 2025-10-01 |  |  |  |
| 89 | 1.2.2.3.2 | Listado de materiales |  | 3d | 2025-10-02 A | 2025-10-04 A | 45 | 100% |  | 2025-07-02 | 2025-07-04 | 3d | 2025-10-02 | 2025-10-04 |  |  | start no earlier than 2025-10-01 |  |  |  |
| 90 | 1.2.3 | **Estatica** |  | 82d | 2025-06-12 A | 2025-09-15 A |  | 100% |  | 2025-04-18 | 2025-06-09 | 45d | 2025-06-12 | 2025-09-15 |  |  |  | 5,000 | 5,000 | 5,000 |
| 91 | 1.2.3.1 | Estructura metálica | milestone | 0d | 2025-06-12 A | 2025-09-15 A | 38, 35 | 100% |  | 2025-04-18 | 2025-06-09 | 45d | 2025-06-12 | 2025-09-15 |  |  |  | 5,000 | 5,000 | 5,000 |
| 92 | 1.2.4 | **Civil** |  | 217d | 2025-04-21 A | 2025-12-29 |  | 97% | 6.54d | 2025-04-10 | 2025-07-09 | 78d | 2025-04-21 | 2025-10-07 | 197.5d |  |  | 4,500 | 4,500 | 3,500 |
| 93 | 1.2.4.1 | Layout de planta |  | 16d | 2025-04-21 A | 2025-09-18 A | 38 | 100% |  | 2025-04-10 | 2025-04-21 | 10d | 2025-04-21 | 2025-09-18 |  |  |  |  |  |  |
| 94 | 1.2.4.2 | Bases de equipos |  | 67d | 2025-05-02 A | 2025-07-18 A | 93, 35 | 100% |  | 2025-04-22 | 2025-05-02 | 10d | 2025-05-02 | 2025-07-18 |  |  |  | 2,000 | 2,000 | 2,000 |
| 95 | 1.2.4.3 | Nivelacion de terreno y platea |  | 2d | 2025-07-19 A | 2025-07-21 A | 94 | 100% |  | 2025-05-03 | 2025-05-14 | 10d | 2025-07-19 | 2025-07-21 |  |  |  | 1,500 | 1,500 | 1,500 |
| 96 | 1.2.4.4 | Verificación estructuras existentes |  | 5d | 2025-09-10 A | 2025-12-29 | 61 |  | 5d | 2025-05-05 | 2025-05-09 | 5d | 2025-09-10 | 2025-10-07 | 197.5d |  |  | 1,000 | 1,000 |  |
| 97 | 1.2.4.5 | Diseño de sala de tableros de destilería |  | 6d | 2025-07-04 A | 2025-07-10 A | 105FS-20d | 100% |  | 2025-07-04 | 2025-07-09 | 5d | 2025-07-04 | 2025-07-10 |  |  |  |  |  |  |
| 98 | 1.2.4.6 | Maqueta 3D para enviar a PRAJ |  | 70d | 2025-05-02 A | 2025-07-22 A | 93 | 100% |  | 2025-04-22 | 2025-05-08 | 15d | 2025-05-02 | 2025-07-22 |  |  |  |  |  |  |
| 99 | 1.2.5 | **Eléctrica y Automatización** |  | 228.5d | 2025-06-06 A | 2026-02-27 |  | 69% | 70.6d | 2025-04-22 | 2025-09-13 | 125d | 2025-06-06 | 2026-02-24 | 146d |  |  | 55,000 | 55,000 | 6,500 |
| 100 | 1.2.5.1 | **Especificaciones** |  | 203d | 2025-06-06 A | 2026-01-28 |  | 81% | 39.47d | 2025-05-05 | 2025-06-21 | 42d | 2025-06-06 | 2025-11-11 | 156.5d |  |  |  |  |  |
| 101 | 1.2.5.1.1 | Listado de cargas de destilería |  | 65d | 2025-06-06 A | 2025-08-20 A | 31, 61 | 100% |  | 2025-05-05 | 2025-05-09 | 5d | 2025-06-06 | 2025-08-20 |  |  |  |  |  |  |
| 102 | 1.2.5.1.2 | Listado de entradas y salidas de destilería |  | 5d | 2025-09-01 A | 2025-12-31 | 62, 101, 53 | 70% | 1.5d | 2025-06-17 | 2025-06-21 | 5d | 2025-09-01 | 2025-10-13 | 75d | 0d |  |  |  |  |
| 103 | 1.2.5.1.4 | Intelocks destilería |  | 20d | 2025-11-10 A | 2026-01-28 | 60, 32 | 20% | 16d | 2025-05-16 | 2025-06-07 | 20d | 2025-10-20 | 2025-11-11 | 156.5d | 0d | start no earlier than 2025-10-01 |  |  |  |
| 104 | 1.2.5.2 | **Diseño de tableros** |  | 154.5d | 2025-09-01 A | 2026-02-27 |  | 32% | 104.39d | 2025-06-23 | 2025-09-01 | 61d | 2025-09-01 | 2025-12-10 | 109d |  |  | 5,000 | 5,000 | 1,500 |
| 105 | 1.2.5.2.1 | Tablero sala de destilería |  | 24d | 2025-09-01 A | 2025-10-30 A | 101, 102 | 100% |  | 2025-06-23 | 2025-07-26 | 30d | 2025-09-01 | 2025-11-06 |  |  |  | 1,500 | 1,500 | 1,500 |
| 106 | 1.2.5.2.2 | Tablero sala de caldera |  | 30d | 2025-12-31 | 2026-02-04 | 101, 102 |  |  | 2025-06-23 | 2025-07-26 | 30d | 2025-10-14 | 2025-11-17 | 75d | 0d | start no earlier than 2025-12-23 | 1,500 | 1,500 |  |
| 107 | 1.2.5.2.3 | Tablero sub estaciones |  | 20d | 2026-02-04 | 2026-02-27 | 105, 106 |  |  | 2025-07-28 | 2025-08-19 | 20d | 2025-11-18 | 2025-12-10 | 109d | 0d | start no earlier than 2025-12-23 | 2,000 | 2,000 |  |
| 108 | 1.2.5.3 | **Montaje en campo** |  | 111d | 2025-08-27 A | 2026-01-02 A |  | 100% |  | 2025-04-22 | 2025-09-13 | 125d | 2025-08-27 | 2026-02-24 |  |  |  | 5,000 | 5,000 | 5,000 |
| 109 | 1.2.5.3.1 | Layout montaje eléctrico sala de tableros |  | 7d | 2025-10-31 A | 2025-11-07 A | 105 | 100% |  | 2025-07-28 | 2025-08-04 | 7d | 2025-11-07 | 2025-11-14 |  |  |  | 1,000 | 1,000 | 1,000 |
| 110 | 1.2.5.3.2 | Planimetria y planillas para montaje en campo |  | 1d | 2025-08-27 A | 2025-09-30 A | 93 | 100% |  | 2025-04-22 | 2025-05-26 | 30d | 2025-08-27 | 2025-11-05 |  |  |  | 1,000 | 1,000 | 1,000 |
| 111 | 1.2.5.3.3 | Layout montaje eléctrico en campo |  | 30d | 2025-10-02 A | 2025-11-05 A | 110 | 100% |  | 2025-05-27 | 2025-06-30 | 30d | 2025-11-06 | 2025-12-10 |  |  |  | 1,000 | 1,000 | 1,000 |
| 112 | 1.2.5.3.4 | Diseño |  | 30d | 2025-11-06 A | 2025-12-10 A | 111 | 100% |  | 2025-07-01 | 2025-08-21 | 45d | 2025-12-11 | 2026-01-31 |  |  |  | 1,000 | 1,000 | 1,000 |
| 113 | 1.2.5.3.5 | Maqueta 3D - Tendido electrico |  | 20d | 2025-12-11 A | 2026-01-02 A | 112, 65 | 100% |  | 2025-08-22 | 2025-09-13 | 20d | 2026-02-02 | 2026-02-24 |  |  |  | 1,000 | 1,000 | 1,000 |

Notes:
- 91: Necesitamos plano de carga de PRAJ y layout de elevación. Para diseño y calculo de la estructura se contrata empresa. Y luego se cotiza para fabricación.
- 98: Está asociada a línea 7 en cronograma de PRAJ

| ID | WBS | Task | Duration | Start | Finish | Predecessors | Complete | Remaining | Baseline start | Baseline finish | Baseline duration | Baseline 1 start | Baseline 1 finish | Total slack | Free slack | Constraint | Cost | Baseline cost | Actual cost |
| --- | --- | --- | --- | --- | --- | --- | --- | --- | --- | --- | --- | --- | --- | --- | --- | --- | --- | --- | --- |
| 114 | 1.2.5.4 | **Software** | 15d | 2026-01-29 | 2026-02-14 |  |  |  | 2025-06-09 | 2025-06-25 | 15d | 2025-11-12 | 2025-11-28 | 156.5d |  |  | 45,000 | 45,000 |  |
| 115 | 1.2.5.4.1 | Programación nueva destilería (Integración con actual) | 15d | 2026-01-29 | 2026-02-14 | 60, 103 |  |  | 2025-06-09 | 2025-06-25 | 15d | 2025-11-12 | 2025-11-28 | 156.5d |  | start no earlier than 2025-12-23 | 45,000 | 45,000 |  |
| 116 | 2 | **ADQUISICIONES Y CONTRATACIONES** | 319.5d | 2025-05-19 A | 2026-05-26 |  | 34% | 210.67d | 2025-03-07 | 2026-05-09 | 367d | 2025-07-07 | 2026-06-29 | 71d |  |  | 5,006,288.4 | 6,048,138.4 | 841,221.38 |
| 117 | 2.1 | **CONTRATACIONES PARA CONSTRUCCIÓN** | 277.5d | 2025-07-07 A | 2026-05-26 |  | 41% | 164d | 2025-05-13 | 2026-05-09 | 310d | 2025-07-07 | 2026-05-26 | 71d |  |  | 156,574 | 156,574 | 54,000 |
| 118 | 2.1.1 | **Adjudicaciones montaje equipos** | 130d | 2025-10-02 A | 2026-03-02 |  | 32% | 88.16d | 2025-08-05 | 2025-10-29 | 74d | 2025-10-02 | 2025-12-23 | 67.5d |  |  | 60,000 | 60,000 | 54,000 |
| 119 | 2.1.1.1 | **Equipos de destilación y modificaciones en planta existente** | 35d | 2025-10-02 A | 2025-11-11 A |  | 100% |  | 2025-08-05 | 2025-10-17 | 64d | 2025-10-02 | 2025-10-29 |  |  |  | 54,000 | 54,000 | 54,000 |
| 120 | 2.1.1.1.1 | Confeccion del pliego | 5d | 2025-10-02 A | 2025-10-15 A | 36 | 100% |  | 2025-08-05 | 2025-08-21 | 15d | 2025-10-02 | 2025-10-15 |  |  | finish no earlier than 2025-10-10 |  |  |  |
| 121 | 2.1.1.1.2 | Oferta economica | 10d | 2025-10-16 A | 2025-10-27 A | 120 | 100% |  | 2025-08-22 | 2025-09-13 | 20d | 2025-10-16 | 2025-10-21 |  |  |  |  |  |  |
| 122 | 2.1.1.1.3 | Analisis de la oferta | 5d | 2025-10-28 A | 2025-11-01 A | 121 | 100% |  | 2025-09-15 | 2025-10-07 | 20d | 2025-10-22 | 2025-10-27 |  |  |  |  |  |  |
| 123 | 2.1.1.1.4 | Confección de PC/OC | 1d | 2025-11-03 A | 2025-11-03 A | 122 | 100% |  | 2025-10-08 | 2025-10-16 | 8d | 2025-10-28 | 2025-10-28 |  |  |  |  |  |  |
| 124 | 2.1.1.1.5 | Envio de OC a proveedor | 7d | 2025-11-04 A | 2025-11-11 A | 123 | 100% |  | 2025-10-17 | 2025-10-17 | 1d | 2025-10-29 | 2025-10-29 |  |  |  | 54,000 | 54,000 | 54,000 |
| 125 | 2.1.1.2 | **Bombas Torres de enfriamiento** | 59d | 2025-12-24 | 2026-03-02 |  |  |  | 2025-08-22 | 2025-10-29 | 59d | 2025-10-16 | 2025-12-23 | 13.5d |  |  | 6,000 | 6,000 |  |
| 126 | 2.1.1.2.1 | Confeccion del pliego | 10d | 2025-12-24 | 2026-01-03 | 120 |  |  | 2025-08-22 | 2025-09-02 | 10d | 2025-10-16 | 2025-10-27 | 13.5d | 0d | start no earlier than 2025-12-23 |  |  |  |
| 127 | 2.1.1.2.2 | Oferta economica | 20d | 2026-01-05 | 2026-01-27 | 126 |  |  | 2025-09-03 | 2025-09-25 | 20d | 2025-10-28 | 2025-11-19 | 13.5d | 0d | start no earlier than 2025-12-23 |  |  |  |
| 128 | 2.1.1.2.3 | Analisis de la oferta | 20d | 2026-01-28 | 2026-02-19 | 127 |  |  | 2025-09-26 | 2025-10-18 | 20d | 2025-11-20 | 2025-12-12 | 13.5d | 0d | start no earlier than 2025-12-23 |  |  |  |
| 129 | 2.1.1.2.4 | Confección de PC/OC | 8d | 2026-02-20 | 2026-02-28 | 128 |  |  | 2025-10-20 | 2025-10-28 | 8d | 2025-12-13 | 2025-12-22 | 67.5d | 0d | start no earlier than 2025-12-23 |  |  |  |
| 130 | 2.1.1.2.5 | Envio de OC a proveedor | 1d | 2026-03-02 | 2026-03-02 | 129 |  |  | 2025-10-29 | 2025-10-29 | 1d | 2025-12-23 | 2025-12-23 | 67.5d | 52d | start no earlier than 2025-12-23 | 6,000 | 6,000 |  |
| 131 | 2.1.2 | **Adjudicaciones estructuras** | 106d | 2025-10-02 A | 2026-02-02 |  | 64% | 38.25d | 2025-05-13 | 2025-08-28 | 93d | 2025-10-02 | 2025-12-04 | 167.5d |  |  |  |  |  |
| 132 | 2.1.2.1 | **Montaje de estructuras de destilería** | 31d | 2025-10-02 A | 2025-11-06 A |  | 100% |  | 2025-07-11 | 2025-08-20 | 35d | 2025-10-02 | 2025-11-11 |  |  |  |  |  |  |
| 133 | 2.1.2.1.1 | Confeccion del pliego | 12d | 2025-10-02 A | 2025-10-15 A | 337 | 100% |  | 2025-07-11 | 2025-07-22 | 10d | 2025-10-02 | 2025-10-13 |  |  | start no earlier than 2025-10-01 |  |  |  |
| 134 | 2.1.2.1.2 | Oferta economica | 10d | 2025-10-16 A | 2025-10-27 A | 133 | 100% |  | 2025-07-23 | 2025-08-08 | 15d | 2025-10-14 | 2025-10-30 |  |  |  |  |  |  |
| 135 | 2.1.2.1.3 | Analisis de la oferta | 5d | 2025-10-28 A | 2025-11-01 A | 134 | 100% |  | 2025-08-09 | 2025-08-11 | 2d | 2025-10-31 | 2025-11-01 |  |  |  |  |  |  |
| 136 | 2.1.2.1.4 | Confección de PC/OC | 1d | 2025-11-03 A | 2025-11-03 A | 135 | 100% |  | 2025-08-12 | 2025-08-16 | 5d | 2025-11-03 | 2025-11-07 |  |  |  |  |  |  |
| 137 | 2.1.2.1.5 | Envio de OC a proveedor | 3d | 2025-11-04 A | 2025-11-06 A | 136 | 100% |  | 2025-08-18 | 2025-08-20 | 3d | 2025-11-08 | 2025-11-11 |  |  |  |  |  |  |

| ID | WBS | Task | Duration | Start | Finish | Predecessors | Complete | Baseline start | Baseline finish | Baseline duration | Baseline 1 start | Baseline 1 finish | Total slack | Free slack | Constraint |
| --- | --- | --- | --- | --- | --- | --- | --- | --- | --- | --- | --- | --- | --- | --- | --- |
| 138 | 2.1.2.2 | **Estructura cañeros** | 35d | 2025-12-24 | 2026-02-02 |  |  | 2025-07-19 | 2025-08-28 | 35d | 2025-10-25 | 2025-12-04 | 167.5d |  |  |
| 139 | 2.1.2.2.1 | Confeccion del pliego | 10d | 2025-12-24 | 2026-01-03 | 133SS |  | 2025-07-19 | 2025-07-30 | 10d | 2025-10-25 | 2025-11-05 | 167.5d | 0d | start no earlier than 2025-12-23 |
| 140 | 2.1.2.2.2 | Oferta economica | 15d | 2026-01-05 | 2026-01-21 | 139 |  | 2025-07-31 | 2025-08-16 | 15d | 2025-11-06 | 2025-11-22 | 167.5d | 0d | start no earlier than 2025-12-23 |
| 141 | 2.1.2.2.3 | Analisis de la oferta | 2d | 2026-01-22 | 2026-01-23 | 140 |  | 2025-08-18 | 2025-08-19 | 2d | 2025-11-24 | 2025-11-25 | 167.5d | 0d | start no earlier than 2025-12-23 |
| 142 | 2.1.2.2.4 | Confección de PC/OC | 5d | 2026-01-24 | 2026-01-29 | 141 |  | 2025-08-20 | 2025-08-25 | 5d | 2025-11-26 | 2025-12-01 | 167.5d | 0d | start no earlier than 2025-12-23 |
| 143 | 2.1.2.2.5 | Envio de OC a proveedor | 3d | 2026-01-30 | 2026-02-02 | 142 |  | 2025-08-26 | 2025-08-28 | 3d | 2025-12-02 | 2025-12-04 | 167.5d |  | start no earlier than 2025-12-23 |
| 144 | 2.1.2.3 | **Soportes y refuerzo en estructura existente** | 31d | 2025-10-02 A | 2025-11-06 A |  | 100% | 2025-05-13 | 2025-07-01 | 43d | 2025-10-10 | 2025-11-22 |  |  |  |
| 145 | 2.1.2.3.1 | Confeccion del pliego | 12d | 2025-10-02 A | 2025-10-15 A | 343 | 100% | 2025-05-13 | 2025-05-23 | 10d | 2025-10-10 | 2025-10-21 |  |  | start no earlier than 2025-10-01 |
| 146 | 2.1.2.3.2 | Oferta economica | 10d | 2025-10-16 A | 2025-10-27 A | 145 | 100% | 2025-05-24 | 2025-06-16 | 20d | 2025-10-22 | 2025-11-07 |  |  | start no earlier than 2025-10-01 |
| 147 | 2.1.2.3.3 | Analisis de la oferta | 5d | 2025-10-28 A | 2025-11-01 A | 146 | 100% | 2025-06-17 | 2025-06-21 | 5d | 2025-11-08 | 2025-11-13 |  |  |  |
| 148 | 2.1.2.3.4 | Confección de PC/OC | 1d | 2025-11-03 A | 2025-11-03 A | 147 | 100% | 2025-06-23 | 2025-06-27 | 5d | 2025-11-14 | 2025-11-19 |  |  |  |
| 149 | 2.1.2.3.5 | Envio de OC a proveedor | 3d | 2025-11-04 A | 2025-11-06 A | 148 | 100% | 2025-06-28 | 2025-07-01 | 3d | 2025-11-20 | 2025-11-22 |  |  |  |
| 150 | 2.1.3 | **Adjudicaciones civiles** | 50d | 2025-07-07 A | 2025-09-02 A |  | 100% | 2025-05-15 | 2025-09-05 | 98d | 2025-07-07 | 2025-09-02 |  |  |  |
| 151 | 2.1.3.1 | **Bases y plateas para equipos y estructuras** | 37d | 2025-07-22 A | 2025-09-02 A |  | 100% | 2025-05-15 | 2025-06-26 | 37d | 2025-07-22 | 2025-09-02 |  |  |  |
| 152 | 2.1.3.1.1 | Confeccion del pliego | 16d | 2025-07-22 A | 2025-08-08 A | 93, 94, 95 | 100% | 2025-05-15 | 2025-05-26 | 10d | 2025-07-22 | 2025-08-08 |  |  |  |
| 153 | 2.1.3.1.2 | Oferta economica | 10d | 2025-08-09 A | 2025-08-20 A | 152 | 100% | 2025-05-27 | 2025-06-18 | 20d | 2025-08-09 | 2025-08-20 |  |  |  |
| 154 | 2.1.3.1.3 | Analisis de la oferta | 8d | 2025-08-21 A | 2025-08-29 A | 153 | 100% | 2025-06-19 | 2025-06-23 | 4d | 2025-08-21 | 2025-08-29 |  |  |  |
| 155 | 2.1.3.1.4 | Confección de PC/OC | 2d | 2025-08-30 A | 2025-09-01 A | 154 | 100% | 2025-06-24 | 2025-06-25 | 2d | 2025-08-30 | 2025-09-01 |  |  |  |
| 156 | 2.1.3.1.5 | Envio de OC a proveedor | 1d | 2025-09-02 A | 2025-09-02 A | 155 | 100% | 2025-06-26 | 2025-06-26 | 1d | 2025-09-02 | 2025-09-02 |  |  |  |
| 157 | 2.1.3.2 | **Modificaciones en sala de tableros destilería** | 26d | 2025-07-07 A | 2025-08-05 A |  | 100% | 2025-07-10 | 2025-09-05 | 50d | 2025-07-07 | 2025-08-05 |  |  |  |
| 158 | 2.1.3.2.1 | Confeccion del pliego | 4d | 2025-07-07 A | 2025-07-10 A | 97 | 100% | 2025-07-10 | 2025-07-21 | 10d | 2025-07-07 | 2025-07-10 |  |  |  |
| 159 | 2.1.3.2.2 | Oferta economica | 10d | 2025-07-11 A | 2025-07-22 A | 158 | 100% | 2025-07-22 | 2025-08-13 | 20d | 2025-07-11 | 2025-07-22 |  |  |  |
| 160 | 2.1.3.2.3 | Analisis de la oferta | 6d | 2025-07-23 A | 2025-07-29 A | 159 | 100% | 2025-08-14 | 2025-08-25 | 10d | 2025-07-23 | 2025-07-29 |  |  |  |
| 161 | 2.1.3.2.4 | Confección de PC/OC | 5d | 2025-07-30 A | 2025-08-04 A | 160 | 100% | 2025-08-26 | 2025-08-30 | 5d | 2025-07-30 | 2025-08-04 |  |  |  |
| 162 | 2.1.3.2.5 | Envio de OC a proveedor | 1d | 2025-08-05 A | 2025-08-05 A | 161 | 100% | 2025-09-01 | 2025-09-05 | 5d | 2025-08-05 | 2025-08-05 |  |  |  |

| ID | WBS | Task | Duration | Start | Finish | Predecessors | Complete | Remaining | Baseline start | Baseline finish | Baseline duration | Baseline 1 start | Baseline 1 finish | Total slack | Free slack | Constraint |
| --- | --- | --- | --- | --- | --- | --- | --- | --- | --- | --- | --- | --- | --- | --- | --- | --- |
| 163 | 2.1.4 | **Adjudicaciones para fabricación y montaje de piping** | 109d | 2025-10-02 A | 2026-02-05 |  | 57% | 46.81d | 2025-05-31 | 2025-11-04 | 135d | 2025-10-02 | 2025-11-19 | 164.5d |  |  |
| 164 | 2.1.4.1 | **Dentro de límites de batería** | 71.8d | 2025-10-02 A | 2025-12-24 |  | 99% | 0.88d | 2025-08-05 | 2025-09-10 | 32d | 2025-10-02 | 2025-11-07 | 62.7d |  |  |
| 165 | 2.1.4.1.1 | Confeccion del pliego | 12d | 2025-10-02 A | 2025-10-15 A | 120SS, 39, 49, 36 | 100% |  | 2025-08-05 | 2025-08-09 | 5d | 2025-10-02 | 2025-10-07 |  |  |  |
| 166 | 2.1.4.1.2 | Oferta economica | 20d | 2025-10-16 A | 2025-11-07 A | 165 | 100% |  | 2025-08-11 | 2025-09-02 | 20d | 2025-10-08 | 2025-10-30 |  |  |  |
| 167 | 2.1.4.1.3 | Analisis de la oferta | 29d | 2025-11-08 A | 2025-12-11 A | 166 | 100% |  | 2025-09-03 | 2025-09-06 | 4d | 2025-10-31 | 2025-11-04 |  |  |  |
| 168 | 2.1.4.1.4 | Confección de PC/OC | 3d | 2025-12-12 A | 2025-12-15 A | 167 | 100% |  | 2025-09-08 | 2025-09-09 | 2d | 2025-11-05 | 2025-11-06 |  |  |  |
| 169 | 2.1.4.1.5 | Envio de OC a proveedor | 1d | 2025-12-16 A | 2025-12-24 | 168 | 20% | 0.8d | 2025-09-10 | 2025-09-10 | 1d | 2025-11-07 | 2025-11-07 | 62.7d | 9.2d |  |
| 170 | 2.1.4.2 | **Interconexiones** | 32d | 2025-12-31 | 2026-02-05 |  |  |  | 2025-08-05 | 2025-09-10 | 32d | 2025-10-09 | 2025-11-14 | 128.5d |  |  |
| 171 | 2.1.4.2.1 | Confeccion del pliego | 5d | 2025-12-31 | 2026-01-05 | 120SS, 79, 80, 36 |  |  | 2025-08-05 | 2025-08-09 | 5d | 2025-10-09 | 2025-10-14 | 128.5d | 0d | start no earlier than 2025-12-23 |
| 172 | 2.1.4.2.2 | Oferta economica | 20d | 2026-01-06 | 2026-01-28 | 171 |  |  | 2025-08-11 | 2025-09-02 | 20d | 2025-10-15 | 2025-11-06 | 128.5d | 0d | start no earlier than 2025-12-23 |
| 173 | 2.1.4.2.3 | Analisis de la oferta | 4d | 2026-01-29 | 2026-02-02 | 172 |  |  | 2025-09-03 | 2025-09-06 | 4d | 2025-11-07 | 2025-11-11 | 128.5d | 0d | start no earlier than 2025-12-23 |
| 174 | 2.1.4.2.4 | Confección de PC/OC | 2d | 2026-02-03 | 2026-02-04 | 173 |  |  | 2025-09-08 | 2025-09-09 | 2d | 2025-11-12 | 2025-11-13 | 128.5d | 0d | start no earlier than 2025-12-23 |
| 175 | 2.1.4.2.5 | Envio de OC a proveedor | 1d | 2026-02-05 | 2026-02-05 | 174 |  |  | 2025-09-10 | 2025-09-10 | 1d | 2025-11-14 | 2025-11-14 | 128.5d | 86.5d | start no earlier than 2025-12-23 |
| 176 | 2.1.4.3 | **SGT** | 32d | 2025-12-24 | 2026-01-29 |  |  |  | 2025-09-29 | 2025-11-04 | 32d | 2025-10-14 | 2025-11-19 | 170.5d |  |  |
| 177 | 2.1.4.3.1 | Confeccion del pliego | 5d | 2025-12-24 | 2025-12-29 | 88 |  |  | 2025-09-29 | 2025-10-03 | 5d | 2025-10-14 | 2025-10-18 | 170.5d | 0d | start no earlier than 2025-12-23 |
| 178 | 2.1.4.3.2 | Oferta economica | 20d | 2025-12-30 | 2026-01-21 | 177 |  |  | 2025-10-04 | 2025-10-27 | 20d | 2025-10-20 | 2025-11-11 | 170.5d | 0d | start no earlier than 2025-12-23 |
| 179 | 2.1.4.3.3 | Analisis de la oferta | 4d | 2026-01-22 | 2026-01-26 | 178 |  |  | 2025-10-28 | 2025-10-31 | 4d | 2025-11-12 | 2025-11-15 | 170.5d | 0d | start no earlier than 2025-12-23 |
| 180 | 2.1.4.3.4 | Confección de PC/OC | 2d | 2026-01-27 | 2026-01-28 | 179 |  |  | 2025-11-01 | 2025-11-03 | 2d | 2025-11-17 | 2025-11-18 | 170.5d | 0d | start no earlier than 2025-12-23 |
| 181 | 2.1.4.3.5 | Envio de OC a proveedor | 1d | 2026-01-29 | 2026-01-29 | 180 |  |  | 2025-11-04 | 2025-11-04 | 1d | 2025-11-19 | 2025-11-19 | 170.5d |  | start no earlier than 2025-12-23 |
| 182 | 2.1.4.4 | **Bombas torres de enfriamiento** | 64.9d | 2025-10-10 A | 2025-12-24 |  | 96% | 2.43d | 2025-05-31 | 2025-07-07 | 32d | 2025-10-10 | 2025-11-15 | 201.6d |  |  |
| 183 | 2.1.4.4.1 | Confeccion del pliego | 11d | 2025-10-10 A | 2025-10-22 A | 84, 85 | 100% |  | 2025-05-31 | 2025-06-05 | 5d | 2025-10-10 | 2025-10-15 |  |  | start no earlier than 2025-10-01 |
| 184 | 2.1.4.4.2 | Oferta economica | 8d | 2025-10-23 A | 2025-10-31 A | 183 | 100% |  | 2025-06-06 | 2025-06-28 | 20d | 2025-10-16 | 2025-11-07 |  |  | start no earlier than 2025-10-01 |
| 185 | 2.1.4.4.3 | Analisis de la oferta | 2d | 2025-11-01 A | 2025-11-03 A | 184 | 100% |  | 2025-06-30 | 2025-07-03 | 4d | 2025-11-08 | 2025-11-12 |  |  | start no earlier than 2025-08-31 |
| 186 | 2.1.4.4.4 | Confección de PC/OC | 2d | 2025-11-04 A | 2025-11-05 A | 185 | 100% |  | 2025-07-04 | 2025-07-05 | 2d | 2025-11-13 | 2025-11-14 |  |  |  |
| 187 | 2.1.4.4.5 | Envio de OC a proveedor | 1d | 2025-11-06 A | 2025-12-24 | 186 | 10% | 0.9d | 2025-07-07 | 2025-07-07 | 1d | 2025-11-15 | 2025-11-15 | 201.6d |  |  |

| ID | WBS | Task | Type | Duration | Start | Finish | Predecessors | Remaining | Baseline start | Baseline finish | Baseline duration | Baseline 1 start | Baseline 1 finish | Total slack | Free slack | Constraint |
| --- | --- | --- | --- | --- | --- | --- | --- | --- | --- | --- | --- | --- | --- | --- | --- | --- |
| 188 | 2.1.5 | **Adjudicaciones eléctricas** |  | 99.5d | 2025-12-11 A | 2026-04-06 |  | 99.28d | 2025-07-01 | 2025-10-21 | 97d | 2025-11-07 | 2026-01-16 | 113d |  |  |
| 189 | 2.1.5.1 | **Montaje y armado de tableros** |  | 83.5d | 2025-12-23 | 2026-03-31 |  |  | 2025-08-14 | 2025-09-19 | 32d | 2025-11-25 | 2026-01-10 | 63.5d |  |  |
| 190 | 2.1.5.1.1 | **Tablero sala destilería** |  | 38d | 2025-12-23 | 2026-02-05 |  |  | 2025-08-14 | 2025-09-19 | 32d | 2025-11-25 | 2025-12-31 | 63.5d |  |  |
| 191 | 2.1.5.1.1.1 | Confeccion del pliego | milestone | 0d | 2025-12-23 | 2025-12-23 | 388, 105 |  | 2025-08-14 | 2025-08-19 | 5d | 2025-11-25 | 2025-11-29 | 63.5d | 0d | start no earlier than 2025-12-23 |
| 192 | 2.1.5.1.1.2 | Oferta economica |  | 13d | 2025-12-24 | 2026-01-07 | 191 |  | 2025-08-20 | 2025-09-11 | 20d | 2025-12-01 | 2025-12-23 | 63.5d | 0d | start no earlier than 2025-12-23 |
| 193 | 2.1.5.1.1.3 | Analisis de la oferta |  | 12d | 2026-01-08 | 2026-01-21 | 192 |  | 2025-09-12 | 2025-09-16 | 4d | 2025-12-24 | 2025-12-27 | 63.5d | 0d | start no earlier than 2025-12-23 |
| 194 | 2.1.5.1.1.4 | Confección de PC/OC |  | 2d | 2026-01-22 | 2026-01-23 | 193 |  | 2025-09-17 | 2025-09-18 | 2d | 2025-12-29 | 2025-12-30 | 63.5d | 0d | start no earlier than 2025-12-23 |
| 195 | 2.1.5.1.1.5 | Envio de OC a proveedor |  | 11d | 2026-01-24 | 2026-02-05 | 194 |  | 2025-09-19 | 2025-09-19 | 1d | 2025-12-31 | 2025-12-31 | 63.5d | 52d | start no earlier than 2025-12-23 |
| 196 | 2.1.5.1.2 | **Tablero sala de calderas** |  | 32d | 2026-02-21 | 2026-03-31 |  |  | 2025-08-14 | 2025-09-19 | 32d | 2025-12-05 | 2026-01-10 | 109d |  |  |
| 197 | 2.1.5.1.2.1 | Confeccion del pliego |  | 5d | 2026-02-21 | 2026-02-27 | 106, 403 |  | 2025-08-14 | 2025-08-19 | 5d | 2025-12-05 | 2025-12-10 | 109d | 0d | start no earlier than 2025-12-23 |
| 198 | 2.1.5.1.2.2 | Oferta economica |  | 20d | 2026-02-27 | 2026-03-23 | 197 |  | 2025-08-20 | 2025-09-11 | 20d | 2025-12-11 | 2026-01-02 | 109d | 0d | start no earlier than 2025-12-23 |
| 199 | 2.1.5.1.2.3 | Analisis de la oferta |  | 4d | 2026-03-23 | 2026-03-27 | 198 |  | 2025-09-12 | 2025-09-16 | 4d | 2026-01-03 | 2026-01-07 | 109d | 0d |  |
| 200 | 2.1.5.1.2.4 | Confección de PC/OC |  | 2d | 2026-03-27 | 2026-03-30 | 199 |  | 2025-09-17 | 2025-09-18 | 2d | 2026-01-08 | 2026-01-09 | 109d | 0d |  |
| 201 | 2.1.5.1.2.5 | Envio de OC a proveedor |  | 1d | 2026-03-30 | 2026-03-31 | 200 |  | 2025-09-19 | 2025-09-19 | 1d | 2026-01-10 | 2026-01-10 | 109d | 34d |  |
| 202 | 2.1.5.2 | **Intervención tableros existentes** |  | 88.5d | 2025-12-24 | 2026-04-06 |  |  | 2025-07-28 | 2025-09-25 | 52d | 2025-11-07 | 2026-01-16 | 113d |  |  |
| 203 | 2.1.5.2.1 | **Tablero SET** |  | 32d | 2026-02-27 | 2026-04-06 |  |  | 2025-08-20 | 2025-09-25 | 32d | 2025-12-11 | 2026-01-16 | 109d |  |  |
| 204 | 2.1.5.2.1.1 | Confeccion del pliego |  | 5d | 2026-02-27 | 2026-03-05 | 107 |  | 2025-08-20 | 2025-08-25 | 5d | 2025-12-11 | 2025-12-16 | 109d | 0d | start no earlier than 2025-12-23 |
| 205 | 2.1.5.2.1.2 | Oferta economica |  | 20d | 2026-03-05 | 2026-03-28 | 204 |  | 2025-08-26 | 2025-09-17 | 20d | 2025-12-17 | 2026-01-08 | 109d | 0d | start no earlier than 2025-12-23 |
| 206 | 2.1.5.2.1.3 | Analisis de la oferta |  | 4d | 2026-03-28 | 2026-04-02 | 205 |  | 2025-09-18 | 2025-09-22 | 4d | 2026-01-09 | 2026-01-13 | 109d | 0d |  |
| 207 | 2.1.5.2.1.4 | Confección de PC/OC |  | 2d | 2026-04-02 | 2026-04-04 | 206 |  | 2025-09-23 | 2025-09-24 | 2d | 2026-01-14 | 2026-01-15 | 109d | 0d |  |
| 208 | 2.1.5.2.1.5 | Envio de OC a proveedor |  | 1d | 2026-04-04 | 2026-04-06 | 207 |  | 2025-09-25 | 2025-09-25 | 1d | 2026-01-16 | 2026-01-16 | 109d | 22.5d |  |
| 209 | 2.1.5.2.2 | **Tablero sala destilería** |  | 32d | 2025-12-24 | 2026-01-29 |  |  | 2025-07-28 | 2025-09-02 | 32d | 2025-11-07 | 2025-12-13 | 169.5d |  |  |
| 210 | 2.1.5.2.2.1 | Confeccion del pliego |  | 5d | 2025-12-24 | 2025-12-29 | 3, 105 |  | 2025-07-28 | 2025-08-01 | 5d | 2025-11-07 | 2025-11-12 | 169.5d | 0d | start no earlier than 2025-12-23 |
| 211 | 2.1.5.2.2.2 | Oferta economica |  | 20d | 2025-12-30 | 2026-01-21 | 210 |  | 2025-08-02 | 2025-08-25 | 20d | 2025-11-13 | 2025-12-05 | 169.5d | 0d | start no earlier than 2025-12-23 |
| 212 | 2.1.5.2.2.3 | Analisis de la oferta |  | 4d | 2026-01-22 | 2026-01-26 | 211 |  | 2025-08-26 | 2025-08-29 | 4d | 2025-12-06 | 2025-12-10 | 169.5d | 0d | start no earlier than 2025-12-23 |
| 213 | 2.1.5.2.2.4 | Confección de PC/OC |  | 2d | 2026-01-27 | 2026-01-28 | 212 |  | 2025-08-30 | 2025-09-01 | 2d | 2025-12-11 | 2025-12-12 | 169.5d | 0d | start no earlier than 2025-12-23 |
| 214 | 2.1.5.2.2.5 | Envio de OC a proveedor |  | 1d | 2026-01-29 | 2026-01-29 | 213 |  | 2025-09-02 | 2025-09-02 | 1d | 2025-12-13 | 2025-12-13 | 169.5d | 46d | start no earlier than 2025-12-23 |

| ID | WBS | Task | Type | Duration | Start | Finish | Predecessors | Complete | Remaining | Baseline start | Baseline finish | Baseline duration | Baseline 1 start | Baseline 1 finish | Total slack | Free slack | Constraint |
| --- | --- | --- | --- | --- | --- | --- | --- | --- | --- | --- | --- | --- | --- | --- | --- | --- | --- |
| 215 | 2.1.5.2.3 | **Tablero sala de calderas** |  | 32d | 2026-02-04 | 2026-03-13 |  |  |  | 2025-07-28 | 2025-09-02 | 32d | 2025-11-18 | 2025-12-24 | 129d |  |  |
| 216 | 2.1.5.2.3.1 | Confeccion del pliego |  | 5d | 2026-02-04 | 2026-02-10 | 3, 106 |  |  | 2025-07-28 | 2025-08-01 | 5d | 2025-11-18 | 2025-11-22 | 129d | 0d | start no earlier than 2025-12-23 |
| 217 | 2.1.5.2.3.2 | Oferta economica |  | 20d | 2026-02-10 | 2026-03-05 | 216 |  |  | 2025-08-02 | 2025-08-25 | 20d | 2025-11-24 | 2025-12-16 | 129d | 0d | start no earlier than 2025-12-23 |
| 218 | 2.1.5.2.3.3 | Analisis de la oferta |  | 4d | 2026-03-05 | 2026-03-10 | 217 |  |  | 2025-08-26 | 2025-08-29 | 4d | 2025-12-17 | 2025-12-20 | 129d | 0d | start no earlier than 2025-12-23 |
| 219 | 2.1.5.2.3.4 | Confección de PC/OC |  | 2d | 2026-03-10 | 2026-03-12 | 218 |  |  | 2025-08-30 | 2025-09-01 | 2d | 2025-12-22 | 2025-12-23 | 129d | 0d | start no earlier than 2025-12-23 |
| 220 | 2.1.5.2.3.5 | Envio de OC a proveedor |  | 1d | 2026-03-12 | 2026-03-13 | 219 |  |  | 2025-09-02 | 2025-09-02 | 1d | 2025-12-24 | 2025-12-24 | 129d | 0d |  |
| 221 | 2.1.5.3 | **Montaje en campo** |  | 43d | 2025-12-11 A | 2026-01-29 |  | 1% | 42.66d | 2025-07-01 | 2025-10-21 | 97d | 2025-12-11 | 2026-01-16 | 97.5d |  |  |
| 222 | 2.1.5.3.1 | **Destilería** |  | 42.5d | 2025-12-11 A | 2026-01-29 |  | 2% | 41.84d | 2025-09-15 | 2025-10-21 | 32d | 2025-12-11 | 2026-01-16 | 60d |  |  |
| 223 | 2.1.5.3.1.1 | Confeccion del pliego |  | 5d | 2025-12-11 A | 2025-12-29 | 3, 111, 109 | 10% | 4.5d | 2025-09-15 | 2025-09-19 | 5d | 2025-12-11 | 2025-12-16 | 60d | 0d |  |
| 224 | 2.1.5.3.1.2 | Oferta economica |  | 20d | 2025-12-29 | 2026-01-21 | 223 |  |  | 2025-09-20 | 2025-10-13 | 20d | 2025-12-17 | 2026-01-08 | 60d | 0d | start no earlier than 2025-12-23 |
| 225 | 2.1.5.3.1.3 | Analisis de la oferta |  | 4d | 2026-01-21 | 2026-01-26 | 224 |  |  | 2025-10-14 | 2025-10-17 | 4d | 2026-01-09 | 2026-01-13 | 60d | 0d |  |
| 226 | 2.1.5.3.1.4 | Confección de PC/OC |  | 2d | 2026-01-26 | 2026-01-28 | 225 |  |  | 2025-10-18 | 2025-10-20 | 2d | 2026-01-14 | 2026-01-15 | 60d | 0d |  |
| 227 | 2.1.5.3.1.5 | Envio de OC a proveedor |  | 1d | 2026-01-28 | 2026-01-29 | 226 |  |  | 2025-10-21 | 2025-10-21 | 1d | 2026-01-16 | 2026-01-16 | 60d | 35d |  |
| 228 | 2.1.5.3.2 | **Bombas Torres de enfriamiento** |  | 32d | 2025-12-24 | 2026-01-29 |  |  |  | 2025-07-01 | 2025-08-06 | 32d | 2025-12-11 | 2026-01-16 | 97.5d |  |  |
| 229 | 2.1.5.3.2.1 | Confeccion del pliego |  | 5d | 2025-12-24 | 2025-12-29 | 111 |  |  | 2025-07-01 | 2025-07-05 | 5d | 2025-12-11 | 2025-12-16 | 97.5d | 0d | start no earlier than 2025-12-23 |
| 230 | 2.1.5.3.2.2 | Oferta economica |  | 20d | 2025-12-30 | 2026-01-21 | 229 |  |  | 2025-07-07 | 2025-07-29 | 20d | 2025-12-17 | 2026-01-08 | 97.5d | 0d | start no earlier than 2025-12-23 |
| 231 | 2.1.5.3.2.3 | Analisis de la oferta |  | 4d | 2026-01-22 | 2026-01-26 | 230 |  |  | 2025-07-30 | 2025-08-02 | 4d | 2026-01-09 | 2026-01-13 | 97.5d | 0d | start no earlier than 2025-12-23 |
| 232 | 2.1.5.3.2.4 | Confección de PC/OC |  | 2d | 2026-01-27 | 2026-01-28 | 231 |  |  | 2025-08-04 | 2025-08-05 | 2d | 2026-01-14 | 2026-01-15 | 97.5d | 0d | start no earlier than 2025-12-23 |
| 233 | 2.1.5.3.2.5 | Envio de OC a proveedor |  | 1d | 2026-01-29 | 2026-01-29 | 232 |  |  | 2025-08-06 | 2025-08-06 | 1d | 2026-01-16 | 2026-01-16 | 97.5d | 84d | start no earlier than 2025-12-23 |
| 234 | 2.1.6 | **Adjudicaciones de Programación** |  | 33.85d | 2025-11-14 A | 2025-12-24 |  | 97% | 0.96d | 2025-06-26 | 2025-08-01 | 32d | 2025-11-29 | 2026-01-05 | 75.65d |  |  |
| 235 | 2.1.6.1 | **Programación Software Destilería** |  | 33.85d | 2025-11-14 A | 2025-12-24 |  | 97% | 0.96d | 2025-06-26 | 2025-08-01 | 32d | 2025-11-29 | 2026-01-05 | 75.65d |  |  |
| 236 | 2.1.6.1.1 | Confeccion del pliego | milestone | 0d | 2025-11-14 A | 2025-11-14 A | 115 | 100% |  | 2025-06-26 | 2025-07-01 | 5d | 2025-11-29 | 2025-12-04 |  |  |  |
| 237 | 2.1.6.1.2 | Oferta economica |  | 21d | 2025-11-15 A | 2025-12-09 A | 236 | 100% |  | 2025-07-02 | 2025-07-24 | 20d | 2025-12-05 | 2025-12-27 |  |  |  |
| 238 | 2.1.6.1.3 | Analisis de la oferta |  | 5d | 2025-12-09 A | 2025-12-13 A | 237 | 100% |  | 2025-07-25 | 2025-07-29 | 4d | 2025-12-29 | 2026-01-01 |  |  |  |
| 239 | 2.1.6.1.4 | Confección de PC/OC |  | 3d | 2025-12-13 A | 2025-12-16 A | 238 | 100% |  | 2025-07-30 | 2025-07-31 | 2d | 2026-01-02 | 2026-01-03 |  |  |  |
| 240 | 2.1.6.1.5 | Envio de OC a proveedor |  | 1d | 2025-12-17 A | 2025-12-24 | 239 | 15% | 0.85d | 2025-08-01 | 2025-08-01 | 1d | 2026-01-05 | 2026-01-05 | 75.65d | 9.15d |  |

| ID | WBS | Task | Type | Duration | Start | Finish | Predecessors | Complete | Remaining | Baseline start | Baseline finish | Baseline duration | Baseline 1 start | Baseline 1 finish | Total slack | Free slack | Constraint | Cost | Baseline cost | Actual cost |
| --- | --- | --- | --- | --- | --- | --- | --- | --- | --- | --- | --- | --- | --- | --- | --- | --- | --- | --- | --- | --- |
| 241 | 2.1.7 | **Adjudicaciones de Grúas** |  | 131.5d | 2025-12-23 | 2026-05-26 |  |  |  | 2025-09-23 | 2026-05-09 | 196d | 2025-12-02 | 2026-05-26 | 71d |  |  | 96,574 | 96,574 |  |
| 242 | 2.1.7.1 | **Grúa 45 Tn** |  | 25.5d | 2025-12-23 | 2026-01-22 |  |  |  | 2025-09-27 | 2026-02-10 | 116d | 2026-01-03 | 2026-01-03 | 177d |  |  | 14,384 | 14,384 |  |
| 243 | 2.1.7.1.1 | Montaje de cañeros | milestone | 0d | 2025-12-23 | 2025-12-23 |  |  |  | 2025-09-27 | 2025-09-27 |  | 2026-01-03 | 2026-01-03 | 202.5d |  | start no earlier than 2025-12-23 | 11,456 | 11,456 |  |
| 244 | 2.1.7.1.2 | Retención montaje de columna C-1461 | milestone | 0d | 2026-01-22 | 2026-01-22 | 537SS-1d |  |  | 2026-02-10 | 2026-02-10 |  | 2026-01-03 | 2026-01-03 | 177d |  |  | 2,928 | 2,928 |  |
| 245 | 2.1.7.2 | **Grúa 60 Tn** |  | 120.3d | 2026-01-06 | 2026-05-26 |  |  |  | 2026-01-07 | 2026-05-09 | 104d | 2025-12-02 | 2026-05-26 | 71d |  |  | 43,775 | 43,775 |  |
| 246 | 2.1.7.2.1 | Descarga de contenedores | milestone | 0d | 2026-01-06 | 2026-01-06 | 470 |  |  | 2026-01-07 | 2026-01-07 |  | 2025-12-02 | 2025-12-02 | 191.3d |  |  | 3,925 | 3,925 |  |
| 247 | 2.1.7.2.2 | Montaje de equipos | milestone | 0d | 2026-05-26 | 2026-05-26 | 568SS-1d |  |  | 2026-05-09 | 2026-05-09 |  | 2026-05-26 | 2026-05-26 | 71d |  |  | 13,525 | 13,525 |  |
| 248 | 2.1.7.2.3 | Montaje de piping | milestone | 0d | 2026-01-13 | 2026-01-13 | 596SS-1d |  |  | 2026-01-30 | 2026-01-30 |  | 2026-01-03 | 2026-01-03 | 185.3d |  |  | 19,635 | 19,635 |  |
| 249 | 2.1.7.2.4 | Desmontaje de equipos existentes | milestone | 0d | 2026-05-20 | 2026-05-20 | 573SS-1d |  |  | 2026-05-06 | 2026-05-06 |  | 2026-05-20 | 2026-05-20 | 76d |  |  | 6,690 | 6,690 |  |
| 250 | 2.1.7.3 | **Grúa 80 Tn** |  | 0d | 2026-01-22 | 2026-01-22 |  |  |  | 2025-09-23 | 2025-09-23 |  | 2026-01-03 | 2026-01-03 | 177d |  |  | 29,350 | 29,350 |  |
| 251 | 2.1.7.3.1 | Montaje de estructura de destilería | milestone | 0d | 2026-01-22 | 2026-01-22 | 515SS-1d |  |  | 2025-09-23 | 2025-09-23 |  | 2026-01-03 | 2026-01-03 | 177d |  |  | 29,350 | 29,350 |  |
| 252 | 2.1.7.4 | **Grúa 160 Tn** |  | 0d | 2026-01-22 | 2026-01-22 |  |  |  | 2026-02-10 | 2026-02-10 |  | 2026-01-03 | 2026-01-03 | 177d |  |  | 9,065 | 9,065 |  |
| 253 | 2.1.7.4.1 | Montaje columna C-1461 | milestone | 0d | 2026-01-22 | 2026-01-22 | 537SS-1d |  |  | 2026-02-10 | 2026-02-10 |  | 2026-01-03 | 2026-01-03 | 177d |  |  | 9,065 | 9,065 |  |
| 254 | 2.2 | **ADQUISICIÓN DE EQUIPOS** |  | 309d | 2025-05-19 A | 2026-05-13 |  | 33% | 208.22d | 2025-03-07 | 2026-03-18 | 323d | 2025-08-29 | 2026-06-29 | 81.5d |  |  | 4,074,257.4 | 5,116,107.4 | 429,890 |
| 255 | 2.2.1 | **Equipos Mecánicos** |  | 309d | 2025-05-19 A | 2026-05-13 |  | 23% | 239.41d | 2025-03-07 | 2026-01-13 | 268d | 2025-08-29 | 2026-03-28 | 79.5d |  |  | 1,966,307.4 | 2,096,307.4 | 50,000 |
| 256 | 2.2.1.1 | **Bombas 421 A/B y 432 A/B** |  | 215.7d | 2025-08-29 A | 2026-05-07 |  | 19% | 175.75d | 2025-05-05 | 2026-01-13 | 218d | 2025-08-29 | 2026-02-13 | 84.8d |  |  | 1,535,400 | 1,535,400 |  |
| 257 | 2.2.1.1.1 | Confeccion del Data sheets |  | 1d | 2025-08-29 A | 2025-08-29 A | 3, 33 | 100% |  | 2025-05-05 | 2025-05-05 | 1d | 2025-08-29 | 2025-08-29 |  |  | start no earlier than 2025-08-31 |  |  |  |
| 258 | 2.2.1.1.2 | Oferta economica |  | 25d | 2025-09-02 A | 2025-09-30 A | 257 | 100% |  | 2025-05-06 | 2025-05-28 | 20d | 2025-09-02 | 2025-09-30 |  |  | start no earlier than 2025-08-31 |  |  |  |
| 259 | 2.2.1.1.3 | Analisis de la oferta |  | 20d | 2025-10-01 A | 2026-01-15 | 258 | 2% | 19.7d | 2025-05-29 | 2025-05-29 | 1d | 2025-10-01 | 2025-10-24 | 84.8d | 0d | start no earlier than 2025-08-31 |  |  |  |
| 260 | 2.2.1.1.4 | Confección de PC/OC |  | 1d | 2026-01-15 | 2026-01-16 | 259 |  |  | 2025-05-30 | 2025-05-30 | 1d | 2025-10-24 | 2025-10-25 | 84.8d | 0d | start no earlier than 2025-12-23 |  |  |  |
| 261 | 2.2.1.1.5 | Envio de OC a proveedor |  | 5d | 2026-01-16 | 2026-01-22 | 260 |  |  | 2025-05-31 | 2025-05-31 | 1d | 2025-10-25 | 2025-10-31 | 84.8d | 0d | start no earlier than 2025-12-23 |  |  |  |
| 262 | 2.2.1.1.6 | Entrega de equipo |  | 90d | 2026-01-22 | 2026-05-07 | 261 |  |  | 2025-06-06 | 2026-01-13 | 190d | 2025-10-31 | 2026-02-13 | 84.8d | 11.8d | finish no earlier than 2026-01-08 | 1,535,400 | 1,535,400 |  |
| 263 | 2.2.1.2 | **Bombas mosto fermentado** |  | 84d | 2025-12-27 | 2026-04-03 |  |  |  | 2025-05-27 | 2025-09-01 | 84d | 2025-10-06 | 2026-01-10 | 45.5d |  |  | 79,413.4 | 79,413.4 |  |
| 264 | 2.2.1.2.1 | Confeccion del Data sheets |  | 1d | 2025-12-27 | 2025-12-27 | 75 |  |  | 2025-05-27 | 2025-05-27 | 1d | 2025-10-06 | 2025-10-06 | 45.5d | 0d | start no earlier than 2025-12-23 |  |  |  |
| 265 | 2.2.1.2.2 | Oferta economica |  | 20d | 2025-12-29 | 2026-01-20 | 264 |  |  | 2025-05-28 | 2025-06-19 | 20d | 2025-10-07 | 2025-10-29 | 45.5d | 0d | start no earlier than 2025-12-23 |  |  |  |
| 266 | 2.2.1.2.3 | Analisis de la oferta |  | 1d | 2026-01-21 | 2026-01-21 | 265 |  |  | 2025-06-20 | 2025-06-20 | 1d | 2025-10-30 | 2025-10-30 | 45.5d | 0d | start no earlier than 2025-12-23 |  |  |  |
| 267 | 2.2.1.2.4 | Confección de PC/OC |  | 1d | 2026-01-22 | 2026-01-22 | 266 |  |  | 2025-06-21 | 2025-06-21 | 1d | 2025-10-31 | 2025-10-31 | 45.5d | 0d | start no earlier than 2025-12-23 |  |  |  |
| 268 | 2.2.1.2.5 | Envio de OC a proveedor |  | 1d | 2026-01-23 | 2026-01-23 | 267 |  |  | 2025-06-23 | 2025-06-23 | 1d | 2025-11-01 | 2025-11-01 | 45.5d | 0d | start no earlier than 2025-12-23 |  |  |  |
| 269 | 2.2.1.2.6 | Entrega de equipo |  | 60d | 2026-01-24 | 2026-04-03 | 268 |  |  | 2025-06-24 | 2025-09-01 | 60d | 2025-11-03 | 2026-01-10 | 45.5d | 0d | start no earlier than 2025-12-23 | 79,413.4 | 79,413.4 |  |

Notes:
- 244: VER CON RAFA EN DONDE SE MONTA ESTA COLUMNA
- 253: VER CON RAFA EN DONDE SE MONTA ESTA COLUMNA
- 256: ESTA TAREA SE REFIERE A LOS EQUIPOS DE PRAJ?

| ID | WBS | Task | Type | Duration | Start | Finish | Predecessors | Baseline start | Baseline finish | Baseline duration | Baseline 1 start | Baseline 1 finish | Total slack | Free slack | Constraint | Cost | Baseline cost |
| --- | --- | --- | --- | --- | --- | --- | --- | --- | --- | --- | --- | --- | --- | --- | --- | --- | --- |
| 270 | 2.2.1.3 | **Bomba torre de enfriamiento** |  | 105d | 2025-12-31 | 2026-05-01 |  | 2025-06-03 | 2025-10-02 | 105d | 2025-10-13 | 2026-02-11 | 11.5d |  |  | 65,494 | 65,494 |
| 271 | 2.2.1.3.1 | Confeccion del Data sheets |  | 1d | 2025-12-31 | 2025-12-31 | 72, 70 | 2025-06-03 | 2025-06-03 | 1d | 2025-10-13 | 2025-10-13 | 11.5d | 0d | start no earlier than 2025-12-23 |  |  |
| 272 | 2.2.1.3.2 | Oferta economica |  | 10d | 2026-01-01 | 2026-01-12 | 271 | 2025-06-04 | 2025-06-14 | 10d | 2025-10-14 | 2025-10-24 | 11.5d | 0d | start no earlier than 2025-12-23 |  |  |
| 273 | 2.2.1.3.3 | Analisis de la oferta |  | 1d | 2026-01-13 | 2026-01-13 | 272 | 2025-06-16 | 2025-06-16 | 1d | 2025-10-25 | 2025-10-25 | 11.5d | 0d | start no earlier than 2025-12-23 |  |  |
| 274 | 2.2.1.3.4 | Confección de PC/OC |  | 1d | 2026-01-14 | 2026-01-14 | 273 | 2025-06-17 | 2025-06-17 | 1d | 2025-10-27 | 2025-10-27 | 11.5d | 0d | start no earlier than 2025-12-23 |  |  |
| 275 | 2.2.1.3.5 | Envio de OC a proveedor |  | 2d | 2026-01-15 | 2026-01-16 | 274 | 2025-06-18 | 2025-06-19 | 2d | 2025-10-28 | 2025-10-29 | 11.5d | 0d | start no earlier than 2025-12-23 |  |  |
| 276 | 2.2.1.3.6 | Entrega de equipo |  | 90d | 2026-01-17 | 2026-05-01 | 275 | 2025-06-20 | 2025-10-02 | 90d | 2025-10-30 | 2026-02-11 | 11.5d | 0d | start no earlier than 2025-12-23 | 65,494 | 65,494 |
| 277 | 2.2.1.5 | **Distribuidor de vapor en caldera** |  | 88d | 2026-01-06 | 2026-04-17 |  | 2025-06-09 | 2025-09-18 | 88d | 2025-10-18 | 2026-01-28 | 36.5d |  |  | 30,000 | 30,000 |
| 278 | 2.2.1.5.1 | Confeccion del Data sheets |  | 8d | 2026-01-06 | 2026-01-14 | 73 | 2025-06-09 | 2025-06-17 | 8d | 2025-10-18 | 2025-10-27 | 36.5d | 0d | start no earlier than 2025-12-23 |  |  |
| 279 | 2.2.1.5.2 | Oferta economica |  | 2d | 2026-01-15 | 2026-01-16 | 278 | 2025-06-18 | 2025-06-19 | 2d | 2025-10-28 | 2025-10-29 | 36.5d | 0d | start no earlier than 2025-12-23 |  |  |
| 280 | 2.2.1.5.3 | Analisis de la oferta |  | 6d | 2026-01-17 | 2026-01-23 | 279 | 2025-06-20 | 2025-06-26 | 6d | 2025-10-30 | 2025-11-05 | 36.5d | 0d | start no earlier than 2025-12-23 |  |  |
| 281 | 2.2.1.5.4 | Confección de PC/OC | milestone | 0d | 2026-01-23 | 2026-01-23 | 280 | 2025-06-26 | 2025-06-26 |  | 2025-11-05 | 2025-11-05 | 36.5d | 0d | start no earlier than 2025-12-23 |  |  |
| 282 | 2.2.1.5.5 | Envio de OC a proveedor |  | 12d | 2026-01-24 | 2026-02-06 | 281 | 2025-06-27 | 2025-07-10 | 12d | 2025-11-06 | 2025-11-19 | 36.5d | 0d | start no earlier than 2025-12-23 |  |  |
| 283 | 2.2.1.5.6 | Entrega de equipo |  | 60d | 2026-02-07 | 2026-04-17 | 282 | 2025-07-11 | 2025-09-18 | 60d | 2025-11-20 | 2026-01-28 | 36.5d | 28.5d | start no earlier than 2025-12-23 | 30,000 | 30,000 |
| 284 | 2.2.1.6 | **Distribuidor de vapor en destilería** |  | 89d | 2026-01-17 | 2026-04-30 |  | 2025-06-20 | 2025-10-01 | 89d | 2025-10-30 | 2026-02-10 | 11.5d |  |  | 20,000 | 20,000 |
| 285 | 2.2.1.6.1 | Confeccion del Data sheets |  | 1d | 2026-01-17 | 2026-01-17 | 276SS | 2025-06-20 | 2025-06-20 | 1d | 2025-10-30 | 2025-10-30 | 11.5d | 0d | start no earlier than 2025-12-23 |  |  |
| 286 | 2.2.1.6.2 | Oferta economica |  | 20d | 2026-01-19 | 2026-02-10 | 285 | 2025-06-21 | 2025-07-14 | 20d | 2025-10-31 | 2025-11-22 | 21.5d | 0d | start no earlier than 2025-12-23 |  |  |
| 287 | 2.2.1.6.3 | Analisis de la oferta |  | 5d | 2026-02-11 | 2026-02-16 | 286 | 2025-07-15 | 2025-07-19 | 5d | 2025-11-24 | 2025-11-28 | 21.5d | 0d | start no earlier than 2025-12-23 |  |  |
| 288 | 2.2.1.6.4 | Confección de PC/OC |  | 2d | 2026-02-17 | 2026-02-18 | 287 | 2025-07-21 | 2025-07-22 | 2d | 2025-11-29 | 2025-12-01 | 21.5d | 0d |  |  |  |
| 289 | 2.2.1.6.5 | Envio de OC a proveedor |  | 1d | 2026-02-19 | 2026-02-19 | 288 | 2025-07-23 | 2025-07-23 | 1d | 2025-12-02 | 2025-12-02 | 21.5d | 0d |  |  |  |
| 290 | 2.2.1.6.6 | Entrega de equipo |  | 60d | 2026-02-20 | 2026-04-30 | 289 | 2025-07-24 | 2025-10-01 | 60d | 2025-12-03 | 2026-02-10 | 21.5d | 0d |  | 20,000 | 20,000 |
| 291 | 2.2.1.7 | **Bombas vinasa liviana a destilería** |  | 99d | 2026-01-19 | 2026-05-13 |  | 2025-06-21 | 2025-10-14 | 99d | 2025-10-31 | 2026-02-23 | 11.5d |  |  | 30,000 | 30,000 |
| 292 | 2.2.1.7.1 | Confeccion del Data sheets |  | 2d | 2026-01-19 | 2026-01-20 | 285, 76 | 2025-06-21 | 2025-06-23 | 2d | 2025-10-31 | 2025-11-01 | 11.5d | 0d | start no earlier than 2025-12-23 |  |  |
| 293 | 2.2.1.7.2 | Oferta economica | milestone | 0d | 2026-01-20 | 2026-01-20 | 292 | 2025-06-23 | 2025-06-23 |  | 2025-11-01 | 2025-11-01 | 11.5d | 0d | start no earlier than 2025-12-23 |  |  |
| 294 | 2.2.1.7.3 | Analisis de la oferta |  | 4d | 2026-01-21 | 2026-01-24 | 293 | 2025-06-24 | 2025-06-27 | 4d | 2025-11-03 | 2025-11-06 | 11.5d | 0d | start no earlier than 2025-12-23 |  |  |
| 295 | 2.2.1.7.4 | Confección de PC/OC |  | 2d | 2026-01-26 | 2026-01-27 | 294 | 2025-06-28 | 2025-06-30 | 2d | 2025-11-07 | 2025-11-08 | 11.5d | 0d | start no earlier than 2025-12-23 |  |  |
| 296 | 2.2.1.7.5 | Envio de OC a proveedor |  | 1d | 2026-01-28 | 2026-01-28 | 295 | 2025-07-01 | 2025-07-01 | 1d | 2025-11-10 | 2025-11-10 | 11.5d | 0d | start no earlier than 2025-12-23 |  |  |
| 297 | 2.2.1.7.6 | Entrega de equipo |  | 90d | 2026-01-29 | 2026-05-13 | 296 | 2025-07-02 | 2025-10-14 | 90d | 2025-11-11 | 2026-02-23 | 11.5d | 0d | start no earlier than 2025-12-23 | 30,000 | 30,000 |

| ID | WBS | Task | Type | Duration | Start | Finish | Predecessors | Complete | Remaining | Baseline start | Baseline finish | Baseline duration | Baseline 1 start | Baseline 1 finish | Total slack | Free slack | Constraint | Cost | Baseline cost | Actual cost |
| --- | --- | --- | --- | --- | --- | --- | --- | --- | --- | --- | --- | --- | --- | --- | --- | --- | --- | --- | --- | --- |
| 298 | 2.2.1.8 | **Cuadros de vapor** |  | 114d | 2025-12-24 | 2026-05-05 |  |  |  | 2025-03-07 | 2025-08-21 | 144d | 2025-10-02 | 2026-02-11 | 20.5d |  |  |  |  |  |
| 299 | 2.2.1.8.1 | Confeccion del Data sheets |  | 1d | 2025-12-24 | 2025-12-24 | 3 |  |  | 2025-03-07 | 2025-03-07 | 1d | 2025-10-02 | 2025-10-02 | 20.5d | 0d | start no earlier than 2025-12-23 |  |  |  |
| 300 | 2.2.1.8.2 | Oferta economica |  | 20d | 2025-12-25 | 2026-01-16 | 299 |  |  | 2025-03-08 | 2025-03-31 | 20d | 2025-10-03 | 2025-10-25 | 20.5d | 0d | start no earlier than 2025-12-23 |  |  |  |
| 301 | 2.2.1.8.3 | Analisis de la oferta |  | 1d | 2026-01-17 | 2026-01-17 | 300 |  |  | 2025-04-01 | 2025-04-01 | 1d | 2025-10-27 | 2025-10-27 | 20.5d | 0d | start no earlier than 2025-12-23 |  |  |  |
| 302 | 2.2.1.8.4 | Confección de PC/OC |  | 1d | 2026-01-19 | 2026-01-19 | 301 |  |  | 2025-04-02 | 2025-04-02 | 1d | 2025-10-28 | 2025-10-28 | 20.5d | 0d | start no earlier than 2025-12-23 |  |  |  |
| 303 | 2.2.1.8.5 | Envio de OC a proveedor |  | 1d | 2026-01-20 | 2026-01-20 | 302 |  |  | 2025-04-03 | 2025-04-03 | 1d | 2025-10-29 | 2025-10-29 | 20.5d | 0d | start no earlier than 2025-12-23 |  |  |  |
| 304 | 2.2.1.8.6 | Entrega de equipo |  | 90d | 2026-01-21 | 2026-05-05 | 303 |  |  | 2025-04-04 | 2025-08-21 | 120d | 2025-10-30 | 2026-02-11 | 20.5d | 0d | start no earlier than 2025-12-23 |  |  |  |
| 305 | 2.2.1.9 | **Sistema API para bombas** |  | 34d | 2026-01-26 | 2026-03-05 |  |  |  | 2025-06-28 | 2025-10-03 | 84d | 2025-11-07 | 2026-02-12 | 57.5d |  |  | 56,000 | 56,000 |  |
| 306 | 2.2.1.9.1 | Confeccion del Data sheets |  | 1d | 2026-01-26 | 2026-01-26 | 23, 265, 272, 294 |  |  | 2025-06-28 | 2025-06-28 | 1d | 2025-11-07 | 2025-11-07 | 57.5d | 0d | start no earlier than 2025-12-23 |  |  |  |
| 307 | 2.2.1.9.2 | Oferta economica |  | 20d | 2026-01-27 | 2026-02-18 | 306 |  |  | 2025-06-30 | 2025-07-22 | 20d | 2025-11-08 | 2025-12-01 | 57.5d | 0d | start no earlier than 2025-12-23 |  |  |  |
| 308 | 2.2.1.9.3 | Analisis de la oferta |  | 1d | 2026-02-19 | 2026-02-19 | 307 |  |  | 2025-07-23 | 2025-07-23 | 1d | 2025-12-02 | 2025-12-02 | 57.5d | 0d |  |  |  |  |
| 309 | 2.2.1.9.4 | Confección de PC/OC |  | 1d | 2026-02-20 | 2026-02-20 | 308 |  |  | 2025-07-24 | 2025-07-24 | 1d | 2025-12-03 | 2025-12-03 | 57.5d | 0d |  |  |  |  |
| 310 | 2.2.1.9.5 | Envio de OC a proveedor |  | 1d | 2026-02-21 | 2026-02-21 | 309 |  |  | 2025-07-25 | 2025-07-25 | 1d | 2025-12-04 | 2025-12-04 | 57.5d | 0d |  |  |  |  |
| 311 | 2.2.1.9.6 | Entrega de equipo |  | 10d | 2026-02-23 | 2026-03-05 | 310 |  |  | 2025-07-26 | 2025-10-03 | 60d | 2025-12-05 | 2026-02-12 | 57.5d | 0d |  | 56,000 | 56,000 |  |
| 312 | 2.2.1.10 | **Alimentadores de acopio** |  | 148d | 2025-10-08 A | 2026-03-28 A |  | 100% |  | 2025-06-30 | 2025-12-18 | 148d | 2025-10-08 | 2026-03-28 |  |  |  | 50,000 | 50,000 | 50,000 |
| 313 | 2.2.1.10.1 | Confeccion del Data sheets |  | 23d | 2025-10-08 A | 2025-11-03 A | 306 | 100% |  | 2025-06-30 | 2025-07-25 | 23d | 2025-10-08 | 2025-11-03 |  |  | start no earlier than 2025-08-31 |  |  |  |
| 314 | 2.2.1.10.2 | Oferta economica | milestone | 0d | 2025-11-03 A | 2025-11-03 A | 313 | 100% |  | 2025-07-25 | 2025-07-25 |  | 2025-11-03 | 2025-11-03 |  |  |  |  |  |  |
| 315 | 2.2.1.10.3 | Analisis de la oferta |  | 2d | 2025-11-04 A | 2025-11-05 A | 314 | 100% |  | 2025-07-26 | 2025-07-28 | 2d | 2025-11-04 | 2025-11-05 |  |  |  |  |  |  |
| 316 | 2.2.1.10.4 | Confección de PC/OC |  | 2d | 2025-11-06 A | 2025-11-07 A | 315 | 100% |  | 2025-07-29 | 2025-07-30 | 2d | 2025-11-06 | 2025-11-07 |  |  |  |  |  |  |
| 317 | 2.2.1.10.5 | Envio de OC a proveedor |  | 1d | 2025-11-08 A | 2025-11-08 A | 316 | 100% |  | 2025-07-31 | 2025-07-31 | 1d | 2025-11-08 | 2025-11-08 |  |  |  |  |  |  |
| 318 | 2.2.1.10.6 | Entrega de equipo |  | 120d | 2025-11-10 A | 2026-03-28 A | 317 | 100% |  | 2025-08-01 | 2025-12-18 | 120d | 2025-11-10 | 2026-03-28 |  |  |  | 50,000 | 50,000 | 50,000 |
| 319 | 2.2.1.11 | **Intercambiadores IC-421 (placas)** |  | 288d | 2025-05-19 A | 2026-04-18 |  | 29% | 205.71d | 2025-05-23 | 2025-10-15 | 125d | 2025-10-20 | 2026-03-13 | 35.5d |  |  | 50,000 | 50,000 |  |
| 320 | 2.2.1.11.1 | Confeccion del Data sheets | milestone | 0d | 2025-05-19 A | 2025-05-19 A | 27, 28, 33, 60, 61 | 100% |  | 2025-05-23 | 2025-05-23 | 1d | 2025-10-20 | 2025-10-20 |  |  | start no earlier than 2025-10-01 |  |  |  |
| 321 | 2.2.1.11.2 | Oferta economica |  | 20d | 2025-05-19 A | 2025-06-11 A | 320 | 100% |  | 2025-05-24 | 2025-06-16 | 20d | 2025-10-21 | 2025-11-12 |  |  | start no earlier than 2025-10-01 |  |  |  |
| 322 | 2.2.1.11.3 | Analisis de la oferta |  | 12d | 2025-06-11 A | 2025-06-25 A | 321 | 100% |  | 2025-06-17 | 2025-06-17 | 1d | 2025-11-13 | 2025-11-13 |  |  | start no earlier than 2025-08-31 |  |  |  |
| 323 | 2.2.1.11.4 | Confección de PC/OC |  | 4d | 2025-06-25 A | 2025-06-30 A | 322 | 100% |  | 2025-06-18 | 2025-06-18 | 1d | 2025-11-14 | 2025-11-14 |  |  | start no earlier than 2025-08-31 |  |  |  |
| 324 | 2.2.1.11.5 | Envio de OC a proveedor |  | 4d | 2025-06-30 A | 2025-07-03 A | 323 | 100% |  | 2025-06-19 | 2025-06-20 | 2d | 2025-11-15 | 2025-11-17 |  |  | start no earlier than 2025-08-31 |  |  |  |
| 325 | 2.2.1.11.6 | Entrega de equipo |  | 100d | 2025-07-03 A | 2026-04-18 | 324 |  | 100d | 2025-06-21 | 2025-10-15 | 100d | 2025-11-18 | 2026-03-13 | 35.5d | 0d |  | 50,000 | 50,000 |  |

Notes:
- 305: Ver con rafa las predecesoras
- 312: Ver con Rafa de donde salen los datos para la compra de este equipo. Solo para que comience dentro de las fechas del proceso, tiene como predecesora la tarea 390

| ID | WBS | Task | Type | Duration | Start | Finish | Predecessors | Complete | Remaining | Baseline start | Baseline finish | Baseline duration | Baseline 1 start | Baseline 1 finish | Total slack | Free slack | Constraint | Cost | Baseline cost | Actual cost |
| --- | --- | --- | --- | --- | --- | --- | --- | --- | --- | --- | --- | --- | --- | --- | --- | --- | --- | --- | --- | --- |
| 326 | 2.2.1.12 | **Intercambiadores IC-2209** |  | 248d | 2025-05-19 A | 2026-03-03 |  | 42% | 143.08d | 2025-07-26 | 2025-11-05 | 88d | 2025-11-04 | 2026-02-13 | 75.5d |  |  | 50,000 | 50,000 |  |
| 327 | 2.2.1.12.1 | Confeccion del Data sheets |  | 1d | 2025-05-19 A | 2025-05-19 A | 313, 320 | 100% |  | 2025-07-26 | 2025-08-04 | 8d | 2025-11-04 | 2025-11-12 |  |  |  |  |  |  |
| 328 | 2.2.1.12.2 | Oferta economica |  | 21d | 2025-05-19 A | 2025-06-11 A | 327 | 100% |  | 2025-08-05 | 2025-08-06 | 2d | 2025-11-13 | 2025-11-14 |  |  |  |  |  |  |
| 329 | 2.2.1.12.3 | Analisis de la oferta |  | 13d | 2025-06-11 A | 2025-06-25 A | 328 | 100% |  | 2025-08-07 | 2025-08-13 | 6d | 2025-11-15 | 2025-11-21 |  |  |  |  |  |  |
| 330 | 2.2.1.12.4 | Confección de PC/OC |  | 5d | 2025-06-25 A | 2025-06-30 A | 329 | 100% |  | 2025-08-13 | 2025-08-13 |  | 2025-11-21 | 2025-11-21 |  |  |  |  |  |  |
| 331 | 2.2.1.12.5 | Envio de OC a proveedor |  | 4d | 2025-06-30 A | 2025-07-03 A | 330 | 100% |  | 2025-08-14 | 2025-08-27 | 12d | 2025-11-22 | 2025-12-05 |  |  |  |  |  |  |
| 332 | 2.2.1.12.6 | Entrega de equipo |  | 60d | 2025-07-03 A | 2026-03-03 | 331 |  | 60d | 2025-08-28 | 2025-11-05 | 60d | 2025-12-06 | 2026-02-13 | 75.5d | 67.5d |  | 50,000 | 50,000 |  |
| 333 | 2.2.3 | **Estructuras** |  | 123.5d | 2025-09-02 A | 2026-01-23 |  | 85% | 18.98d | 2025-05-10 | 2025-09-27 | 121d | 2025-09-02 | 2025-12-23 | 10d |  |  | 250,100 | 320,600 | 214,350 |
| 334 | 2.2.3.1 | **Estructura de destilería** |  | 122.5d | 2025-09-02 A | 2026-01-23 |  | 78% | 26.61d | 2025-06-10 | 2025-09-23 | 91d | 2025-09-02 | 2025-12-02 | 0d |  |  | 141,000 | 141,000 | 141,000 |
| 335 | 2.2.3.1.1 | Confeccion del pliego | milestone | 0d | 2025-09-02 A | 2025-09-02 A | 91 | 100% |  | 2025-06-10 | 2025-06-11 | 2d | 2025-09-02 | 2025-09-02 |  |  |  |  |  |  |
| 336 | 2.2.3.1.2 | Oferta economica |  | 18d | 2025-09-03 A | 2025-09-23 A | 335 | 100% |  | 2025-06-12 | 2025-07-04 | 20d | 2025-09-03 | 2025-09-23 |  |  |  |  |  |  |
| 337 | 2.2.3.1.3 | Analisis de la oferta |  | 3d | 2025-09-24 A | 2025-09-26 A | 336 | 100% |  | 2025-07-05 | 2025-07-10 | 5d | 2025-09-24 | 2025-09-26 |  |  |  |  |  |  |
| 338 | 2.2.3.1.4 | Confección de PC/OC |  | 2d | 2025-09-27 A | 2025-09-29 A | 337 | 100% |  | 2025-07-11 | 2025-07-12 | 2d | 2025-09-27 | 2025-09-29 |  |  |  |  |  |  |
| 339 | 2.2.3.1.5 | Envio de OC a proveedor |  | 1d | 2025-09-30 A | 2025-09-30 A | 338 | 100% |  | 2025-07-14 | 2025-07-15 | 2d | 2025-09-30 | 2025-09-30 |  |  |  |  |  |  |
| 340 | 2.2.3.1.6 | Entrega de estructuras dentro de destilería existente |  | 45d | 2025-10-01 A | 2025-11-21 A | 339 | 100% |  | 2025-07-16 | 2025-09-23 | 60d | 2025-10-01 | 2025-11-03 |  |  |  | 141,000 | 141,000 | 141,000 |
| 341 | 2.2.3.1.7 | Entrega de estructuras dentro de destilería nueva |  | 53d | 2025-10-01 A | 2026-01-23 | 339 | 50% | 26.5d |  |  |  | 2025-10-01 | 2025-12-02 | 0d |  |  |  |  |  |
| 342 | 2.2.3.3 | **Soportes y refuerzos en estructura existente** |  | 70d | 2025-09-02 A | 2025-11-21 A |  | 100% |  | 2025-05-10 | 2025-07-25 | 66d | 2025-10-08 | 2025-12-23 |  |  |  | 37,600 | 37,600 | 37,600 |
| 343 | 2.2.3.3.1 | Confeccion del pliego |  | 1d | 2025-09-02 A | 2025-09-02 A | 96 | 100% |  | 2025-05-10 | 2025-05-12 | 2d | 2025-10-08 | 2025-10-09 |  |  | start no earlier than 2025-10-01 |  |  |  |
| 344 | 2.2.3.3.2 | Oferta economica |  | 18d | 2025-09-03 A | 2025-09-23 A | 343 | 100% |  | 2025-05-13 | 2025-05-31 | 17d | 2025-10-10 | 2025-10-29 |  |  | start no earlier than 2025-10-01 |  |  |  |
| 345 | 2.2.3.3.3 | Analisis de la oferta |  | 3d | 2025-09-24 A | 2025-09-26 A | 344 | 100% |  | 2025-06-02 | 2025-06-06 | 5d | 2025-10-30 | 2025-11-04 |  |  |  |  |  |  |
| 346 | 2.2.3.3.4 | Confección de PC/OC |  | 2d | 2025-09-27 A | 2025-09-29 A | 345 | 100% |  | 2025-06-07 | 2025-06-20 | 12d | 2025-11-05 | 2025-11-18 |  |  |  |  |  |  |
| 347 | 2.2.3.3.5 | Envio de OC a proveedor |  | 1d | 2025-09-30 A | 2025-09-30 A | 346 | 100% |  | 2025-06-20 | 2025-06-20 |  | 2025-11-18 | 2025-11-18 |  |  |  |  |  |  |
| 348 | 2.2.3.3.6 | Entrega de equipo |  | 45d | 2025-10-01 A | 2025-11-21 A | 347 | 100% |  | 2025-06-21 | 2025-07-25 | 30d | 2025-11-19 | 2025-12-23 |  |  |  | 37,600 | 37,600 | 37,600 |
| 349 | 2.2.3.4 | **Pisos técnicos** |  | 81d | 2025-10-08 A | 2026-01-09 |  | 81% | 15.58d | 2025-06-10 | 2025-08-25 | 66d | 2025-10-08 | 2025-12-23 | 21.5d |  |  | 71,500 | 71,500 | 35,750 |
| 350 | 2.2.3.4.1 | Confeccion del pliego |  | 13d | 2025-10-08 A | 2025-10-22 A | 96, 35, 91 | 100% |  | 2025-06-10 | 2025-06-11 | 2d | 2025-10-08 | 2025-10-09 |  |  | start no earlier than 2025-10-06 |  |  |  |
| 351 | 2.2.3.4.2 | Oferta economica |  | 7d | 2025-10-23 A | 2025-10-30 A | 350 | 100% |  | 2025-06-12 | 2025-07-01 | 17d | 2025-10-10 | 2025-10-29 |  |  |  |  |  |  |
| 352 | 2.2.3.4.3 | Analisis de la oferta |  | 1d | 2025-10-31 A | 2025-10-31 A | 351 | 100% |  | 2025-07-02 | 2025-07-07 | 5d | 2025-10-30 | 2025-11-04 |  |  |  |  |  |  |
| 353 | 2.2.3.4.4 | Confección de PC/OC |  | 26d | 2025-11-01 A | 2025-12-01 A | 352 | 100% |  | 2025-07-08 | 2025-07-21 | 12d | 2025-11-05 | 2025-11-18 |  |  |  |  |  |  |
| 354 | 2.2.3.4.5 | Envio de OC a proveedor |  | 1d | 2025-12-02 A | 2025-12-02 A | 353 | 100% |  | 2025-07-21 | 2025-07-21 |  | 2025-11-18 | 2025-11-18 |  |  |  |  |  |  |
| 355 | 2.2.3.4.6 | Entrega de equipo |  | 30d | 2025-12-03 A | 2026-01-09 | 354 | 50% | 15d | 2025-07-22 | 2025-08-25 | 30d | 2025-11-19 | 2025-12-23 | 21.5d |  |  | 71,500 | 71,500 | 35,750 |

| ID | WBS | Task | Type | Duration | Start | Finish | Predecessors | Complete | Remaining | Baseline start | Baseline finish | Baseline duration | Baseline 1 start | Baseline 1 finish | Total slack | Free slack | Constraint | Cost | Baseline cost | Actual cost |
| --- | --- | --- | --- | --- | --- | --- | --- | --- | --- | --- | --- | --- | --- | --- | --- | --- | --- | --- | --- | --- |
| 356 | 2.2.4 | **Piping** |  | 237d | 2025-07-19 A | 2026-04-21 |  | 32% | 161.5d | 2025-06-02 | 2025-11-11 | 140d | 2025-10-06 | 2026-02-05 | 100.5d |  |  | 1,117,450 | 1,513,125 | 100,000 |
| 357 | 2.2.4.1 | **Válvulas automáticas** |  | 80d | 2025-07-19 A | 2025-10-20 A |  | 100% |  | 2025-06-02 | 2025-09-26 | 101d | 2025-10-11 | 2026-02-05 |  |  |  | 100,000 | 100,000 | 100,000 |
| 358 | 2.2.4.1.1 | Confeccion del pliego | milestone | 0d | 2025-07-19 A | 2025-07-19 A | 86 | 100% |  | 2025-06-02 | 2025-06-03 | 2d | 2025-10-11 | 2025-10-13 |  |  | start no earlier than 2025-10-01 |  |  |  |
| 359 | 2.2.4.1.2 | Oferta economica |  | 5d | 2025-07-19 A | 2025-07-25 A | 358 | 100% |  | 2025-06-04 | 2025-07-08 | 30d | 2025-10-14 | 2025-11-17 |  |  | start no earlier than 2025-10-01 |  |  |  |
| 360 | 2.2.4.1.3 | Analisis de la oferta |  | 5d | 2025-07-25 A | 2025-07-31 A | 359 | 100% |  | 2025-07-09 | 2025-07-14 | 5d | 2025-11-18 | 2025-11-22 |  |  |  |  |  |  |
| 361 | 2.2.4.1.4 | Confección de PC/OC |  | 2d | 2025-07-31 A | 2025-08-02 A | 360 | 100% |  | 2025-07-15 | 2025-07-16 | 2d | 2025-11-24 | 2025-11-25 |  |  |  |  |  |  |
| 362 | 2.2.4.1.5 | Envio de OC a proveedor |  | 2d | 2025-08-02 A | 2025-08-05 A | 361 | 100% |  | 2025-07-17 | 2025-07-18 | 2d | 2025-11-26 | 2025-11-27 |  |  |  |  |  |  |
| 363 | 2.2.4.1.6 | Entrega de equipo |  | 65d | 2025-08-05 A | 2025-10-20 A | 362 | 100% |  | 2025-07-19 | 2025-09-26 | 60d | 2025-11-28 | 2026-02-05 |  |  |  | 100,000 | 100,000 | 100,000 |
| 364 | 2.2.4.2 | **Interconexiones** |  | 95d | 2026-01-01 | 2026-04-21 |  |  |  | 2025-06-21 | 2025-10-09 | 95d | 2025-10-10 | 2026-01-28 | 64.5d |  |  | 226,100 | 226,100 |  |
| 365 | 2.2.4.2.1 | Confeccion del pliego |  | 2d | 2026-01-01 | 2026-01-02 | 81 |  |  | 2025-06-21 | 2025-06-23 | 2d | 2025-10-10 | 2025-10-11 | 64.5d | 0d | start no earlier than 2025-12-23 |  |  |  |
| 366 | 2.2.4.2.2 | Oferta economica |  | 23d | 2026-01-03 | 2026-01-29 | 365 |  |  | 2025-06-24 | 2025-07-19 | 23d | 2025-10-13 | 2025-11-07 | 64.5d | 0d | start no earlier than 2025-12-23 |  |  |  |
| 367 | 2.2.4.2.3 | Analisis de la oferta |  | 9d | 2026-01-30 | 2026-02-09 | 366 |  |  | 2025-07-21 | 2025-07-30 | 9d | 2025-11-08 | 2025-11-18 | 64.5d | 0d | start no earlier than 2025-12-23 |  |  |  |
| 368 | 2.2.4.2.4 | Confección de PC/OC | milestone | 0d | 2026-02-09 | 2026-02-09 | 367 |  |  | 2025-07-30 | 2025-07-30 |  | 2025-11-18 | 2025-11-18 | 64.5d | 0d | start no earlier than 2025-12-23 |  |  |  |
| 369 | 2.2.4.2.5 | Envio de OC a proveedor |  | 1d | 2026-02-10 | 2026-02-10 | 368 |  |  | 2025-07-31 | 2025-07-31 | 1d | 2025-11-19 | 2025-11-19 | 64.5d | 0d | start no earlier than 2025-12-23 |  |  |  |
| 370 | 2.2.4.2.6 | Entrega de equipo |  | 60d | 2026-02-11 | 2026-04-21 | 369 |  |  | 2025-08-01 | 2025-10-09 | 60d | 2025-11-20 | 2026-01-28 | 64.5d | 22.5d | start no earlier than 2025-12-23 | 226,100 | 226,100 |  |
| 371 | 2.2.4.4 | **Materiales piping para parada** |  | 37d | 2025-12-24 | 2026-02-04 |  |  |  | 2025-07-05 | 2025-08-16 | 37d | 2025-10-06 | 2025-11-17 | 165.5d |  |  | 395,675 | 395,675 |  |
| 372 | 2.2.4.4.1 | Confeccion del pliego |  | 2d | 2025-12-24 | 2025-12-25 | 89 |  |  | 2025-07-05 | 2025-07-07 | 2d | 2025-10-06 | 2025-10-07 | 165.5d | 0d | start no earlier than 2025-12-23 |  |  |  |
| 373 | 2.2.4.4.2 | Oferta economica |  | 10d | 2025-12-26 | 2026-01-06 | 372 |  |  | 2025-07-08 | 2025-07-18 | 10d | 2025-10-08 | 2025-10-18 | 165.5d | 0d | start no earlier than 2025-12-23 |  |  |  |
| 374 | 2.2.4.4.3 | Analisis de la oferta |  | 2d | 2026-01-07 | 2026-01-08 | 373 |  |  | 2025-07-19 | 2025-07-21 | 2d | 2025-10-20 | 2025-10-21 | 165.5d | 0d | start no earlier than 2025-12-23 |  |  |  |
| 375 | 2.2.4.4.4 | Confección de PC/OC |  | 2d | 2026-01-09 | 2026-01-10 | 374 |  |  | 2025-07-22 | 2025-07-23 | 2d | 2025-10-22 | 2025-10-23 | 165.5d | 0d | start no earlier than 2025-12-23 |  |  |  |
| 376 | 2.2.4.4.5 | Envio de OC a proveedor |  | 1d | 2026-01-12 | 2026-01-12 | 375 |  |  | 2025-07-24 | 2025-07-24 | 1d | 2025-10-24 | 2025-10-24 | 165.5d | 0d | start no earlier than 2025-12-23 |  |  |  |
| 377 | 2.2.4.4.6 | Entrega de equipo |  | 20d | 2026-01-13 | 2026-02-04 | 376 |  |  | 2025-07-25 | 2025-08-16 | 20d | 2025-10-25 | 2025-11-17 | 165.5d |  | start no earlier than 2025-12-23 | 395,675 | 395,675 |  |
| 378 | 2.2.4.5 | **Bombas torres de enfriamiento** |  | 37d | 2026-01-02 | 2026-02-13 |  |  |  | 2025-06-02 | 2025-07-14 | 37d | 2025-10-11 | 2025-11-22 | 81.5d |  |  | 395,675 | 395,675 |  |
| 379 | 2.2.4.5.1 | Confeccion del pliego |  | 2d | 2026-01-02 | 2026-01-03 | 86 |  |  | 2025-06-02 | 2025-06-03 | 2d | 2025-10-11 | 2025-10-13 | 81.5d | 0d | start no earlier than 2025-12-23 |  |  |  |
| 380 | 2.2.4.5.2 | Oferta economica |  | 10d | 2026-01-05 | 2026-01-15 | 379 |  |  | 2025-06-04 | 2025-06-14 | 10d | 2025-10-14 | 2025-10-24 | 81.5d | 0d | start no earlier than 2025-12-23 |  |  |  |
| 381 | 2.2.4.5.3 | Analisis de la oferta |  | 2d | 2026-01-16 | 2026-01-17 | 380 |  |  | 2025-06-16 | 2025-06-17 | 2d | 2025-10-25 | 2025-10-27 | 81.5d | 0d | start no earlier than 2025-12-23 |  |  |  |
| 382 | 2.2.4.5.4 | Confección de PC/OC |  | 2d | 2026-01-19 | 2026-01-20 | 381 |  |  | 2025-06-18 | 2025-06-19 | 2d | 2025-10-28 | 2025-10-29 | 81.5d | 0d | start no earlier than 2025-12-23 |  |  |  |
| 383 | 2.2.4.5.5 | Envio de OC a proveedor |  | 1d | 2026-01-21 | 2026-01-21 | 382 |  |  | 2025-06-20 | 2025-06-20 | 1d | 2025-10-30 | 2025-10-30 | 81.5d | 0d | start no earlier than 2025-12-23 |  |  |  |
| 384 | 2.2.4.5.6 | Entrega de equipo |  | 20d | 2026-01-22 | 2026-02-13 | 383 |  |  | 2025-06-21 | 2025-07-14 | 20d | 2025-10-31 | 2025-11-22 | 81.5d | 66d | start no earlier than 2025-12-23 | 395,675 | 395,675 |  |

Notes:
- 370: Incluye proporcional de presupuestado para aislaciones
- 377: Incluye proporcional de presupuestado para aislaciones
- 384: Incluye proporcional de presupuestado para aislaciones

| ID | WBS | Task | Duration | Start | Finish | Predecessors | Complete | Remaining | Baseline start | Baseline finish | Baseline duration | Baseline 1 start | Baseline 1 finish | Total slack | Free slack | Constraint | Cost | Baseline cost | Actual cost |
| --- | --- | --- | --- | --- | --- | --- | --- | --- | --- | --- | --- | --- | --- | --- | --- | --- | --- | --- | --- |
| 385 | 2.2.5 | **Equipamiento Eléctrico y Electrónico** | 227.5d | 2025-08-18 A | 2026-05-09 |  | 30% | 158.54d | 2025-06-23 | 2026-03-18 | 231d | 2025-10-01 | 2026-06-29 | 85d |  |  | 740,400 | 1,186,075 | 65,540 |
| 386 | 2.2.5.1 | **Tableros Sala destilería** | 136d | 2025-10-31 A | 2026-04-07 |  | 30% | 94.88d | 2025-06-23 | 2026-03-18 | 231d | 2025-10-14 | 2026-06-29 | 11.5d |  |  | 235,000 | 235,000 |  |
| 387 | 2.2.5.1.1 | **CCM destilería** | 136d | 2025-10-31 A | 2026-04-07 |  | 30% | 94.88d | 2025-07-28 | 2026-03-18 | 201d | 2025-11-07 | 2026-06-29 | 11.5d |  |  | 200,000 | 200,000 |  |
| 388 | 2.2.5.1.1.1 | Confeccion del pliego | 1d | 2025-10-31 A | 2025-10-31 A | 105 | 100% |  | 2025-07-28 | 2025-08-13 | 15d | 2025-11-07 | 2025-11-24 |  |  |  |  |  |  |
| 389 | 2.2.5.1.1.2 | Oferta economica | 13d | 2025-11-01 A | 2025-11-15 A | 388 | 100% |  | 2025-08-14 | 2025-09-17 | 30d | 2025-11-25 | 2025-12-29 |  |  |  |  |  |  |
| 390 | 2.2.5.1.1.3 | Analisis de la oferta | 12d | 2025-11-17 A | 2025-11-30 A | 389 | 100% |  | 2025-09-18 | 2025-09-20 | 3d | 2025-12-30 | 2026-01-01 |  |  |  |  |  |  |
| 391 | 2.2.5.1.1.4 | Confección de PC/OC | 2d | 2025-12-01 A | 2025-12-02 A | 390 | 100% |  | 2025-09-22 | 2025-09-23 | 2d | 2026-01-02 | 2026-01-03 |  |  |  |  |  |  |
| 392 | 2.2.5.1.1.5 | Envio de OC a proveedor | 11d | 2025-12-03 A | 2025-12-15 A | 391 | 100% |  | 2025-09-24 | 2025-09-24 | 1d | 2026-01-05 | 2026-01-05 |  |  |  |  |  |  |
| 393 | 2.2.5.1.1.6 | Entrega de equipo | 90d | 2025-12-15 A | 2026-04-07 | 392 |  | 90d | 2025-09-25 | 2026-03-18 | 150d | 2026-01-06 | 2026-06-29 | 11.5d | 0d |  | 200,000 | 200,000 |  |
| 394 | 2.2.5.1.2 | **PLC destilería** | 136d | 2025-10-31 A | 2026-04-07 |  | 30% | 94.88d | 2025-06-23 | 2025-12-03 | 141d | 2025-10-14 | 2026-03-26 | 11.5d |  |  | 35,000 | 35,000 |  |
| 395 | 2.2.5.1.2.1 | Confeccion del pliego | 1d | 2025-10-31 A | 2025-10-31 A | 102 | 100% |  | 2025-06-23 | 2025-07-09 | 15d | 2025-10-14 | 2025-10-30 |  |  | start no earlier than 2025-10-01 |  |  |  |
| 396 | 2.2.5.1.2.2 | Oferta economica | 13d | 2025-11-01 A | 2025-11-15 A | 395 | 100% |  | 2025-07-10 | 2025-08-13 | 30d | 2025-10-31 | 2025-12-04 |  |  | start no earlier than 2025-10-01 |  |  |  |
| 397 | 2.2.5.1.2.3 | Analisis de la oferta | 12d | 2025-11-17 A | 2025-11-30 A | 396 | 100% |  | 2025-08-14 | 2025-08-16 | 3d | 2025-12-05 | 2025-12-08 |  |  |  |  |  |  |
| 398 | 2.2.5.1.2.4 | Confección de PC/OC | 2d | 2025-12-01 A | 2025-12-02 A | 397 | 100% |  | 2025-08-18 | 2025-08-19 | 2d | 2025-12-09 | 2025-12-10 |  |  |  |  |  |  |
| 399 | 2.2.5.1.2.5 | Envio de OC a proveedor | 11d | 2025-12-03 A | 2025-12-15 A | 398 | 100% |  | 2025-08-20 | 2025-08-20 | 1d | 2025-12-11 | 2025-12-11 |  |  |  |  |  |  |
| 400 | 2.2.5.1.2.6 | Entrega de equipo | 90d | 2025-12-15 A | 2026-04-07 | 399 |  | 90d | 2025-08-21 | 2025-12-03 | 90d | 2025-12-12 | 2026-03-26 | 11.5d | 0d |  | 35,000 | 35,000 |  |
| 401 | 2.2.5.2 | **Tableros Sala calderas** | 81d | 2026-02-04 | 2026-05-09 |  |  |  | 2025-07-28 | 2025-10-29 | 81d | 2025-11-18 | 2026-02-19 | 75d |  |  | 65,000 | 65,000 |  |
| 402 | 2.2.5.2.1 | **CCM torres de enfriamiento** | 81d | 2026-02-04 | 2026-05-09 |  |  |  | 2025-07-28 | 2025-10-29 | 81d | 2025-11-18 | 2026-02-19 | 75d |  |  | 65,000 | 65,000 |  |
| 403 | 2.2.5.2.1.1 | Confeccion del pliego | 15d | 2026-02-04 | 2026-02-21 | 106 |  |  | 2025-07-28 | 2025-08-13 | 15d | 2025-11-18 | 2025-12-04 | 75d | 0d | start no earlier than 2025-12-23 |  |  |  |
| 404 | 2.2.5.2.1.2 | Oferta economica | 30d | 2026-02-21 | 2026-03-28 | 403 |  |  | 2025-08-14 | 2025-09-17 | 30d | 2025-12-05 | 2026-01-08 | 75d | 0d | start no earlier than 2025-12-23 |  |  |  |
| 405 | 2.2.5.2.1.3 | Analisis de la oferta | 3d | 2026-03-28 | 2026-04-01 | 404 |  |  | 2025-09-18 | 2025-09-20 | 3d | 2026-01-09 | 2026-01-12 | 75d | 0d |  |  |  |  |
| 406 | 2.2.5.2.1.4 | Confección de PC/OC | 2d | 2026-04-01 | 2026-04-03 | 405 |  |  | 2025-09-22 | 2025-09-23 | 2d | 2026-01-13 | 2026-01-14 | 75d | 0d |  |  |  |  |
| 407 | 2.2.5.2.1.5 | Envio de OC a proveedor | 1d | 2026-04-03 | 2026-04-04 | 406 |  |  | 2025-09-24 | 2025-09-24 | 1d | 2026-01-15 | 2026-01-15 | 75d | 0d |  |  |  |  |
| 408 | 2.2.5.2.1.6 | Entrega de equipo | 30d | 2026-04-04 | 2026-05-09 | 407 |  |  | 2025-09-25 | 2025-10-29 | 30d | 2026-01-16 | 2026-02-19 | 75d | 0d |  | 65,000 | 65,000 |  |

| ID | WBS | Task | Type | Duration | Start | Finish | Predecessors | Complete | Remaining | Baseline start | Baseline finish | Baseline duration | Baseline 1 start | Baseline 1 finish | Total slack | Free slack | Constraint | Cost | Baseline cost | Actual cost |
| --- | --- | --- | --- | --- | --- | --- | --- | --- | --- | --- | --- | --- | --- | --- | --- | --- | --- | --- | --- | --- |
| 409 | 2.2.5.4 | **Hardware SIEMENS (PLC y MODULOS)** |  | 79d | 2025-08-18 A | 2025-11-17 A |  | 100% |  | 2025-07-28 | 2025-11-21 | 101d | 2025-11-07 | 2026-03-14 |  |  |  | 65,000 | 65,000 | 65,000 |
| 410 | 2.2.5.4.1 | **Destilería** |  | 78d | 2025-08-18 A | 2025-11-17 A |  | 100% |  | 2025-07-28 | 2025-10-29 | 81d | 2025-11-07 | 2026-02-09 |  |  |  | 50,000 | 50,000 | 50,000 |
| 411 | 2.2.5.4.1.1 | Confeccion del pliego | milestone | 0d | 2025-08-18 A | 2025-08-18 A | 105 | 100% |  | 2025-07-28 | 2025-08-13 | 15d | 2025-11-07 | 2025-11-24 |  |  |  |  |  |  |
| 412 | 2.2.5.4.1.2 | Oferta economica |  | 1d | 2025-08-19 A | 2025-08-19 A | 411 | 100% |  | 2025-08-14 | 2025-09-17 | 30d | 2025-11-25 | 2025-12-29 |  |  |  |  |  |  |
| 413 | 2.2.5.4.1.3 | Analisis de la oferta |  | 37d | 2025-08-20 A | 2025-10-01 A | 412 | 100% |  | 2025-09-18 | 2025-09-20 | 3d | 2025-12-30 | 2026-01-01 |  |  |  |  |  |  |
| 414 | 2.2.5.4.1.4 | Confección de PC/OC |  | 2d | 2025-10-02 A | 2025-10-03 A | 413 | 100% |  | 2025-09-22 | 2025-09-23 | 2d | 2026-01-02 | 2026-01-03 |  |  |  |  |  |  |
| 415 | 2.2.5.4.1.5 | Envio de OC a proveedor |  | 3d | 2025-10-04 A | 2025-10-07 A | 414 | 100% |  | 2025-09-24 | 2025-09-24 | 1d | 2026-01-05 | 2026-01-05 |  |  |  |  |  |  |
| 416 | 2.2.5.4.1.6 | Entrega de equipo |  | 36d | 2025-10-07 A | 2025-11-17 A | 415 | 100% |  | 2025-09-25 | 2025-10-29 | 30d | 2026-01-06 | 2026-02-09 |  |  |  | 50,000 | 50,000 | 50,000 |
| 417 | 2.2.5.4.2 | **Intervención tableros existentes** |  | 79d | 2025-08-18 A | 2025-11-17 A |  | 100% |  | 2025-08-20 | 2025-11-21 | 81d | 2025-12-11 | 2026-03-14 |  |  |  | 15,000 | 15,000 | 15,000 |
| 418 | 2.2.5.4.2.1 | Confeccion del pliego |  | 1d | 2025-08-18 A | 2025-08-18 A | 106, 107 | 100% |  | 2025-08-20 | 2025-09-05 | 15d | 2025-12-11 | 2025-12-27 |  |  |  |  |  |  |
| 419 | 2.2.5.4.2.2 | Oferta economica |  | 1d | 2025-08-19 A | 2025-08-19 A | 418 | 100% |  | 2025-09-06 | 2025-10-10 | 30d | 2025-12-29 | 2026-01-31 |  |  |  |  |  |  |
| 420 | 2.2.5.4.2.3 | Analisis de la oferta |  | 37d | 2025-08-20 A | 2025-10-01 A | 419 | 100% |  | 2025-10-11 | 2025-10-14 | 3d | 2026-02-02 | 2026-02-04 |  |  |  |  |  |  |
| 421 | 2.2.5.4.2.4 | Confección de PC/OC |  | 2d | 2025-10-02 A | 2025-10-03 A | 420 | 100% |  | 2025-10-15 | 2025-10-16 | 2d | 2026-02-05 | 2026-02-06 |  |  |  |  |  |  |
| 422 | 2.2.5.4.2.5 | Envio de OC a proveedor |  | 3d | 2025-10-04 A | 2025-10-07 A | 421 | 100% |  | 2025-10-17 | 2025-10-17 | 1d | 2026-02-07 | 2026-02-07 |  |  |  |  |  |  |
| 423 | 2.2.5.4.2.6 | Entrega de equipo |  | 36d | 2025-10-07 A | 2025-11-17 A | 422 | 100% |  | 2025-10-18 | 2025-11-21 | 30d | 2026-02-09 | 2026-03-14 |  |  |  | 15,000 | 15,000 | 15,000 |
| 424 | 2.2.5.5 | **Materiales para tableros existentes** |  | 157d | 2025-10-31 A | 2026-05-01 |  | 19% | 127.84d | 2025-09-06 | 2026-01-30 | 126d | 2025-12-29 | 2026-05-23 | 86.5d |  |  | 140,000 | 140,000 |  |
| 425 | 2.2.5.5.1 | **CCM** |  | 106d | 2025-10-31 A | 2026-03-03 |  | 39% | 64.24d | 2025-09-06 | 2026-01-13 | 111d | 2025-12-29 | 2026-05-06 | 41.5d |  |  | 80,000 | 80,000 |  |
| 426 | 2.2.5.5.1.1 | Confeccion del pliego |  | 1d | 2025-10-31 A | 2025-10-31 A | 418 | 100% |  | 2025-09-06 | 2025-09-23 | 15d | 2025-12-29 | 2026-01-14 |  |  |  |  |  |  |
| 427 | 2.2.5.5.1.2 | Oferta economica |  | 13d | 2025-11-01 A | 2025-11-15 A | 426 | 100% |  | 2025-09-24 | 2025-10-28 | 30d | 2026-01-15 | 2026-02-18 |  |  |  |  |  |  |
| 428 | 2.2.5.5.1.3 | Analisis de la oferta |  | 12d | 2025-11-17 A | 2025-11-30 A | 427 | 100% |  | 2025-10-29 | 2025-10-31 | 3d | 2026-02-19 | 2026-02-21 |  |  |  |  |  |  |
| 429 | 2.2.5.5.1.4 | Confección de PC/OC |  | 2d | 2025-12-01 A | 2025-12-02 A | 428 | 100% |  | 2025-11-01 | 2025-11-03 | 2d | 2026-02-23 | 2026-02-24 |  |  |  |  |  |  |
| 430 | 2.2.5.5.1.5 | Envio de OC a proveedor |  | 11d | 2025-12-03 A | 2025-12-15 A | 429 | 100% |  | 2025-11-04 | 2025-11-04 | 1d | 2026-02-25 | 2026-02-25 |  |  |  |  |  |  |
| 431 | 2.2.5.5.1.6 | Entrega de equipo |  | 60d | 2025-12-15 A | 2026-03-03 | 430 |  | 60d | 2025-11-05 | 2026-01-13 | 60d | 2026-02-26 | 2026-05-06 | 41.5d | 8.5d |  | 80,000 | 80,000 |  |
| 432 | 2.2.5.5.2 | **TGBT** |  | 111d | 2025-12-24 | 2026-05-01 |  |  |  | 2025-09-24 | 2026-01-30 | 111d | 2026-01-15 | 2026-05-23 | 86.5d |  |  | 60,000 | 60,000 |  |
| 433 | 2.2.5.5.2.1 | Confeccion del pliego |  | 15d | 2025-12-24 | 2026-01-09 | 426 |  |  | 2025-09-24 | 2025-10-10 | 15d | 2026-01-15 | 2026-01-31 | 86.5d | 0d | start no earlier than 2025-12-23 |  |  |  |
| 434 | 2.2.5.5.2.2 | Oferta economica |  | 30d | 2026-01-10 | 2026-02-13 | 433 |  |  | 2025-10-11 | 2025-11-14 | 30d | 2026-02-02 | 2026-03-07 | 86.5d | 0d | start no earlier than 2025-12-23 |  |  |  |
| 435 | 2.2.5.5.2.3 | Analisis de la oferta |  | 3d | 2026-02-14 | 2026-02-17 | 434 |  |  | 2025-11-15 | 2025-11-18 | 3d | 2026-03-09 | 2026-03-11 | 86.5d | 0d |  |  |  |  |
| 436 | 2.2.5.5.2.4 | Confección de PC/OC |  | 2d | 2026-02-18 | 2026-02-19 | 435 |  |  | 2025-11-19 | 2025-11-20 | 2d | 2026-03-12 | 2026-03-13 | 86.5d | 0d |  |  |  |  |
| 437 | 2.2.5.5.2.5 | Envio de OC a proveedor |  | 1d | 2026-02-20 | 2026-02-20 | 436 |  |  | 2025-11-21 | 2025-11-21 | 1d | 2026-03-14 | 2026-03-14 | 86.5d | 0d |  |  |  |  |
| 438 | 2.2.5.5.2.6 | Entrega de equipo |  | 60d | 2026-02-21 | 2026-05-01 | 437 |  |  | 2025-11-22 | 2026-01-30 | 60d | 2026-03-16 | 2026-05-23 | 86.5d | 0d |  | 60,000 | 60,000 |  |

| ID | WBS | Task | Type | Duration | Start | Finish | Predecessors | Complete | Remaining | Baseline start | Baseline finish | Baseline duration | Baseline 1 start | Baseline 1 finish | Total slack | Free slack | Constraint | Cost | Baseline cost | Actual cost |
| --- | --- | --- | --- | --- | --- | --- | --- | --- | --- | --- | --- | --- | --- | --- | --- | --- | --- | --- | --- | --- |
| 439 | 2.2.5.6 | **Materiales eléctricos para montaje en campo** |  | 116d | 2025-12-24 | 2026-05-07 |  |  |  | 2025-09-02 | 2026-01-21 | 122d | 2025-11-07 | 2026-04-18 | 13.5d |  |  | 230,000 | 280,000 |  |
| 440 | 2.2.5.6.1 | **Destilería** |  | 111d | 2025-12-24 | 2026-05-01 |  |  |  | 2025-09-15 | 2026-01-21 | 111d | 2025-11-07 | 2026-03-16 | 13.5d |  |  | 120,000 | 120,000 |  |
| 441 | 2.2.5.6.1.1 | Confeccion del pliego |  | 15d | 2025-12-24 | 2026-01-09 | 105 |  |  | 2025-09-15 | 2025-10-01 | 15d | 2025-11-07 | 2025-11-24 | 13.5d | 0d | start no earlier than 2025-12-23 |  |  |  |
| 442 | 2.2.5.6.1.2 | Oferta economica |  | 30d | 2026-01-10 | 2026-02-13 | 441 |  |  | 2025-10-02 | 2025-11-05 | 30d | 2025-11-25 | 2025-12-29 | 13.5d | 0d | start no earlier than 2025-12-23 |  |  |  |
| 443 | 2.2.5.6.1.3 | Analisis de la oferta |  | 3d | 2026-02-14 | 2026-02-17 | 442 |  |  | 2025-11-06 | 2025-11-08 | 3d | 2025-12-30 | 2026-01-01 | 13.5d | 0d | start no earlier than 2025-12-23 |  |  |  |
| 444 | 2.2.5.6.1.4 | Confección de PC/OC |  | 2d | 2026-02-18 | 2026-02-19 | 443 |  |  | 2025-11-10 | 2025-11-11 | 2d | 2026-01-02 | 2026-01-03 | 13.5d | 0d |  |  |  |  |
| 445 | 2.2.5.6.1.5 | Envio de OC a proveedor |  | 1d | 2026-02-20 | 2026-02-20 | 444 |  |  | 2025-11-12 | 2025-11-12 | 1d | 2026-01-05 | 2026-01-05 | 13.5d | 0d |  |  |  |  |
| 446 | 2.2.5.6.1.6 | Entrega de equipo |  | 60d | 2026-02-21 | 2026-05-01 | 445 |  |  | 2025-11-13 | 2026-01-21 | 60d | 2026-01-06 | 2026-03-16 | 13.5d |  |  | 120,000 | 120,000 |  |
| 447 | 2.2.5.6.2 | **Bombas Torres de enfriamiento** |  | 66d | 2026-02-20 | 2026-05-07 |  |  |  | 2025-09-15 | 2025-12-17 | 81d | 2025-12-13 | 2026-02-27 | 13.5d |  |  | 60,000 | 60,000 |  |
| 448 | 2.2.5.6.2.1 | Confeccion del pliego |  | 15d | 2026-02-20 | 2026-03-09 | 128 |  |  | 2025-09-15 | 2025-10-01 | 15d | 2025-12-13 | 2025-12-30 | 13.5d | 0d | start no earlier than 2025-12-23 |  |  |  |
| 449 | 2.2.5.6.2.2 | Oferta economica |  | 15d | 2026-03-10 | 2026-03-26 | 448 |  |  | 2025-10-02 | 2025-11-05 | 30d | 2025-12-31 | 2026-01-16 | 13.5d | 0d |  |  |  |  |
| 450 | 2.2.5.6.2.3 | Analisis de la oferta |  | 3d | 2026-03-27 | 2026-03-30 | 449 |  |  | 2025-11-06 | 2025-11-08 | 3d | 2026-01-17 | 2026-01-20 | 13.5d | 0d |  |  |  |  |
| 451 | 2.2.5.6.2.4 | Confección de PC/OC |  | 2d | 2026-03-31 | 2026-04-01 | 450 |  |  | 2025-11-10 | 2025-11-11 | 2d | 2026-01-21 | 2026-01-22 | 13.5d | 0d |  |  |  |  |
| 452 | 2.2.5.6.2.5 | Envio de OC a proveedor |  | 1d | 2026-04-02 | 2026-04-02 | 451 |  |  | 2025-11-12 | 2025-11-12 | 1d | 2026-01-23 | 2026-01-23 | 13.5d | 0d |  |  |  |  |
| 453 | 2.2.5.6.2.6 | Entrega de equipo |  | 30d | 2026-04-03 | 2026-05-07 | 452 |  |  | 2025-11-13 | 2025-12-17 | 30d | 2026-01-24 | 2026-02-27 | 13.5d | 0d |  | 60,000 | 60,000 |  |
| 454 | 2.2.5.6.3 | **Equipos periféricos** |  | 66d | 2025-12-24 | 2026-03-10 |  |  |  | 2025-09-15 | 2025-12-17 | 81d | 2026-02-02 | 2026-04-18 | 136.5d |  |  | 50,000 | 50,000 |  |
| 455 | 2.2.5.6.3.1 | Confeccion del pliego |  | 15d | 2025-12-24 | 2026-01-09 | 111, 112 |  |  | 2025-09-15 | 2025-10-01 | 15d | 2026-02-02 | 2026-02-18 | 136.5d | 0d | start no earlier than 2025-12-23 |  |  |  |
| 456 | 2.2.5.6.3.2 | Oferta economica |  | 15d | 2026-01-10 | 2026-01-27 | 455 |  |  | 2025-10-02 | 2025-11-05 | 30d | 2026-02-19 | 2026-03-07 | 136.5d | 0d |  |  |  |  |
| 457 | 2.2.5.6.3.3 | Analisis de la oferta |  | 3d | 2026-01-28 | 2026-01-30 | 456 |  |  | 2025-11-06 | 2025-11-08 | 3d | 2026-03-09 | 2026-03-11 | 136.5d | 0d |  |  |  |  |
| 458 | 2.2.5.6.3.4 | Confección de PC/OC |  | 2d | 2026-01-31 | 2026-02-02 | 457 |  |  | 2025-11-10 | 2025-11-11 | 2d | 2026-03-12 | 2026-03-13 | 136.5d | 0d |  |  |  |  |
| 459 | 2.2.5.6.3.5 | Envio de OC a proveedor |  | 1d | 2026-02-03 | 2026-02-03 | 458 |  |  | 2025-11-12 | 2025-11-12 | 1d | 2026-03-14 | 2026-03-14 | 136.5d | 0d |  |  |  |  |
| 460 | 2.2.5.6.3.6 | Entrega de equipo |  | 30d | 2026-02-04 | 2026-03-10 | 459 |  |  | 2025-11-13 | 2025-12-17 | 30d | 2026-03-16 | 2026-04-18 | 136.5d |  |  | 50,000 | 50,000 |  |
| 461 | 2.2.5.7 | **Equipos de acondicionamiento térmico de sala de tableros destilería** |  | 85.5d | 2025-10-01 A | 2026-01-08 |  | 64% | 31.2d | 2025-08-20 | 2025-10-15 | 49d | 2025-10-01 | 2025-11-11 | 189d |  |  | 5,400 | 5,400 | 540 |
| 462 | 2.2.5.7.1 | Confeccion del pliego |  | 2d | 2025-10-01 A | 2025-10-02 A | 3 | 100% |  | 2025-08-20 | 2025-08-30 | 10d | 2025-10-01 | 2025-10-02 |  |  | start no earlier than 2025-10-01 |  |  |  |
| 463 | 2.2.5.7.2 | Oferta economica |  | 11d | 2025-10-03 A | 2025-10-15 A | 462 | 100% |  | 2025-09-01 | 2025-09-17 | 15d | 2025-10-03 | 2025-10-14 |  |  |  |  |  |  |
| 464 | 2.2.5.7.3 | Analisis de la oferta |  | 4d | 2025-10-16 A | 2025-10-20 A | 463 | 100% |  | 2025-09-18 | 2025-09-22 | 4d | 2025-10-15 | 2025-10-18 |  |  |  |  |  |  |
| 465 | 2.2.5.7.4 | Confección de PC/OC | milestone | 0d | 2025-10-20 A | 2025-10-23 A | 464 | 100% |  | 2025-09-23 | 2025-09-25 | 3d | 2025-10-20 | 2025-10-22 |  |  |  |  |  |  |
| 466 | 2.2.5.7.5 | Envio de OC a proveedor |  | 5d | 2025-10-24 A | 2025-10-29 A | 465 | 100% |  | 2025-09-26 | 2025-09-27 | 2d | 2025-10-23 | 2025-10-24 |  |  |  |  |  |  |
| 467 | 2.2.5.7.6 | Entrega de equipo |  | 15d | 2025-10-30 A | 2026-01-08 | 466 | 10% | 13.5d | 2025-09-29 | 2025-10-15 | 15d | 2025-10-25 | 2025-11-11 | 189d |  |  | 5,400 | 5,400 | 540 |

| ID | WBS | Task | Duration | Start | Finish | Predecessors | Complete | Remaining | Baseline start | Baseline finish | Baseline duration | Baseline 1 start | Baseline 1 finish | Total slack | Free slack | Constraint | Cost | Baseline cost | Actual cost |
| --- | --- | --- | --- | --- | --- | --- | --- | --- | --- | --- | --- | --- | --- | --- | --- | --- | --- | --- | --- |
| 468 | 2.3 | **LOGISTICA** | 132.4d | 2025-09-18 A | 2026-02-19 |  | 32% | 89.51d | 2025-09-24 | 2026-02-10 | 120d | 2025-09-18 | 2026-01-05 | 152.6d |  |  | 775,457 | 775,457 | 357,331.38 |
| 469 | 2.3.1 | **Nacionalización de equipos destilación** | 111.4d | 2025-10-04 A | 2026-02-11 |  | 66% | 37.41d | 2025-09-30 | 2026-02-04 | 110d | 2025-10-04 | 2025-12-27 | 14.1d |  |  | 528,768 | 528,768 | 348,986.88 |
| 470 | 2.3.1.1 | Paquete 1 | 80.2d | 2025-10-04 A | 2026-01-06 | 55 | 86% | 11.4d | 2025-09-30 | 2026-01-07 | 86d | 2025-10-04 | 2025-12-02 | 21.3d | 0d | start no earlier than 2025-08-31 |  |  |  |
| 471 | 2.3.1.2 | Paquete 2 | 80d | 2025-11-10 A | 2026-02-11 | 56 | 47% | 42.4d | 2025-10-17 | 2026-01-24 | 86d | 2025-10-30 | 2025-12-27 | 14.1d | 0d | start no earlier than 2025-10-30 |  |  |  |
| 472 | 2.3.2 | Gestión de permisos (SEDI) | 51d | 2025-09-18 A | 2025-11-15 | 3 | 50% | 25.5d | 2025-09-24 | 2025-12-15 | 71d | 2025-09-18 | 2025-11-15 | 64.5d | 43.2d | finish no earlier than 2025-11-15 | 16,689 | 16,689 | 8,344.5 |
| 473 | 2.3.3 | **Transporte de contenedores equipos PRAJ** | 38.2d | 2026-01-06 | 2026-02-19 |  |  |  | 2026-01-08 | 2026-02-10 | 29d | 2025-12-03 | 2026-01-05 | 21.3d |  |  | 230,000 | 230,000 |  |
| 474 | 2.3.3.1 | **Paquete 1** | 7d | 2026-01-06 | 2026-01-14 |  |  |  | 2026-01-08 | 2026-01-13 | 5d | 2025-12-03 | 2025-12-10 | 21.3d | 0d |  |  |  |  |
| 475 | 2.3.3.1.1 | TL-440 | 7d | 2026-01-06 | 2026-01-14 | 472, 470 |  |  | 2026-01-26 | 2026-01-30 | 5d | 2025-12-03 | 2025-12-10 | 99.3d | 27.5d |  |  |  |  |
| 476 | 2.3.3.1.2 | IC-444 | 7d | 2026-01-06 | 2026-01-14 | 472, 470 |  |  | 2026-01-26 | 2026-01-30 | 5d | 2025-12-03 | 2025-12-10 | 96.3d | 24.5d |  |  |  |  |
| 477 | 2.3.3.1.3 | IC-441 | 7d | 2026-01-06 | 2026-01-14 | 472, 470 |  |  | 2026-02-05 | 2026-02-10 | 5d | 2025-12-03 | 2025-12-10 | 75.8d | 4d |  |  |  |  |
| 478 | 2.3.3.1.4 | SC-440 | 7d | 2026-01-06 | 2026-01-14 | 472, 470 |  |  | 2026-02-05 | 2026-02-10 | 5d | 2025-12-03 | 2025-12-10 | 73.8d | 2d |  |  |  |  |
| 479 | 2.3.3.1.7 | TQ-432 | 7d | 2026-01-06 | 2026-01-14 | 472, 470 |  |  | 2026-01-26 | 2026-01-30 | 5d | 2025-12-03 | 2025-12-10 | 94.8d | 23d |  |  |  |  |
| 480 | 2.3.3.1.8 | TQ-444 | 7d | 2026-01-06 | 2026-01-14 | 472, 470 |  |  | 2026-01-26 | 2026-01-30 | 5d | 2025-12-03 | 2025-12-10 | 98.3d | 26.5d |  |  |  |  |
| 481 | 2.3.3.1.9 | TQ-443 | 7d | 2026-01-06 | 2026-01-14 | 472, 470 |  |  | 2026-01-26 | 2026-01-30 | 5d | 2025-12-03 | 2025-12-10 | 91.8d | 20d |  |  |  |  |
| 482 | 2.3.3.1.10 | TQ-448 | 7d | 2026-01-06 | 2026-01-14 | 472, 470 |  |  | 2026-01-26 | 2026-01-30 | 5d | 2025-12-03 | 2025-12-10 | 95.8d | 24d |  |  |  |  |
| 483 | 2.3.3.1.11 | IC-442 | 7d | 2026-01-06 | 2026-01-14 | 472, 470 |  |  | 2026-01-26 | 2026-01-30 | 5d | 2025-12-03 | 2025-12-10 | 51.3d | 0d |  |  |  |  |
| 484 | 2.3.3.1.13 | IC-432 | 7d | 2026-01-06 | 2026-01-14 | 472, 470 |  |  | 2026-01-26 | 2026-01-30 | 5d | 2025-12-03 | 2025-12-10 | 183.8d | 59.8d |  |  |  |  |
| 485 | 2.3.3.1.14 | IC-431 | 7d | 2026-01-06 | 2026-01-14 | 472, 470 |  |  | 2026-01-26 | 2026-01-30 | 5d | 2025-12-03 | 2025-12-10 | 92.8d | 21d |  |  |  |  |
| 486 | 2.3.3.1.15 | IC-433 | 7d | 2026-01-06 | 2026-01-14 | 470, 472 |  |  | 2026-01-08 | 2026-01-13 | 5d | 2025-12-03 | 2025-12-10 | 71.8d | 0d |  |  |  |  |
| 487 | 2.3.3.2.1 | TD-440 | 7d | 2026-01-06 | 2026-01-14 | 472, 470 |  |  | 2026-02-05 | 2026-02-10 | 5d | 2025-12-03 | 2025-12-10 | 111.3d | 8.3d |  |  |  |  |
| 488 | 2.3.3.2.2 | IC-440 | 7d | 2026-01-06 | 2026-01-14 | 472, 470 |  |  | 2026-01-26 | 2026-01-30 | 5d | 2025-12-03 | 2025-12-10 | 21.3d |  |  |  |  |  |
| 489 | 2.3.3.2.3 | IC-443 | 7d | 2026-01-06 | 2026-01-14 | 472, 470 |  |  | 2026-02-05 | 2026-02-10 | 5d | 2025-12-03 | 2025-12-10 | 77.8d | 6d |  |  |  |  |
| 490 | 2.3.3.2.8 | IC-2201 | 7d | 2026-01-06 | 2026-01-14 | 472, 470 |  |  | 2026-02-05 | 2026-02-10 | 5d | 2025-12-03 | 2025-12-10 | 182.3d | 114.3d |  |  |  |  |
| 491 | 2.3.3.2.9 | IC-2208 | 7d | 2026-01-06 | 2026-01-14 | 472, 470 |  |  | 2026-02-05 | 2026-02-10 | 5d | 2025-12-03 | 2025-12-10 | 118.3d | 114.3d |  |  |  |  |
| 492 | 2.3.3.1.16 | Lote 1 de Piping | 7d | 2026-01-06 | 2026-01-14 | 470, 472 |  |  | 2026-01-08 | 2026-01-13 | 5d | 2025-12-03 | 2025-12-10 | 51.3d | 0d |  |  |  |  |

Notes:
- 469: En que orden se dan las tareas de logistica?
- 470: Incluye IC-433, BO-433 y TQ-411, más lote 1 piping
- 471: Lote 2 de piping,
- 474: Incluye PHE, PUMPS y TQ-411 (TANKS)

| ID | WBS | Task | Type | Duration | Start | Finish | Predecessors | Complete | Remaining | Baseline start | Baseline finish | Baseline duration | Baseline 1 start | Baseline 1 finish | Total slack | Free slack | Constraint | Calendar | Cost | Baseline cost | Actual cost |
| --- | --- | --- | --- | --- | --- | --- | --- | --- | --- | --- | --- | --- | --- | --- | --- | --- | --- | --- | --- | --- | --- |
| 493 | 2.3.3.2 | **Paquete 2** |  | 7d | 2026-02-11 | 2026-02-19 |  |  |  | 2026-01-26 | 2026-01-30 | 5d | 2025-12-29 | 2026-01-05 | 14.1d | 0d |  |  |  |  |  |
| 494 | 2.3.3.1.5 | TQ-442 |  | 7d | 2026-02-11 | 2026-02-19 | 472, 471 |  |  | 2026-02-05 | 2026-02-10 | 5d | 2025-12-29 | 2026-01-05 | 68.1d | 0d |  |  |  |  |  |
| 495 | 2.3.3.1.6 | TQ-441 |  | 7d | 2026-02-11 | 2026-02-19 | 472, 471 |  |  | 2026-01-26 | 2026-01-30 | 5d | 2025-12-29 | 2026-01-05 | 77.1d | 1d |  |  |  |  |  |
| 496 | 2.3.3.1.12 | TQ-411C |  | 7d | 2026-02-11 | 2026-02-19 | 472, 471 |  |  | 2026-01-08 | 2026-01-13 | 5d | 2025-12-29 | 2026-01-05 | 151.6d | 28.6d |  |  |  |  |  |
| 497 | 2.3.3.2.4 | BO-441 |  | 7d | 2026-02-11 | 2026-02-19 | 471, 472 |  |  | 2026-01-26 | 2026-01-30 | 5d | 2025-12-29 | 2026-01-05 | 76.1d | 0d |  |  |  |  |  |
| 498 | 2.3.3.2.5 | BO-440 |  | 7d | 2026-02-11 | 2026-02-19 | 471, 472 |  |  | 2026-01-26 | 2026-01-30 | 5d | 2025-12-29 | 2026-01-05 | 68.1d | 0d |  |  |  |  |  |
| 499 | 2.3.3.2.6 | BO-442 |  | 7d | 2026-02-11 | 2026-02-19 | 472, 471 |  |  | 2026-02-05 | 2026-02-10 | 5d | 2025-12-29 | 2026-01-05 | 68.1d | 0d |  |  |  |  |  |
| 500 | 2.3.3.2.7 | BO-443 |  | 7d | 2026-02-11 | 2026-02-19 | 472, 471 |  |  | 2026-02-05 | 2026-02-10 | 5d | 2025-12-29 | 2026-01-05 | 68.1d | 0d |  |  |  |  |  |
| 501 | 2.3.3.2.10 | NZ-2402 |  | 7d | 2026-02-11 | 2026-02-19 | 472, 471 |  |  | 2026-02-05 | 2026-02-10 | 5d | 2025-12-29 | 2026-01-05 | 77.1d | 16.6d |  |  |  |  |  |
| 502 | 2.3.3.2.11 | BO-433 |  | 7d | 2026-02-11 | 2026-02-19 | 3, 472, 471 |  |  | 2026-01-08 | 2026-01-13 | 5d | 2025-12-29 | 2026-01-05 | 75.1d | 14.6d |  |  |  |  |  |
| 503 | 2.3.3.2.12 | Lote 2 de Piping |  | 7d | 2026-02-11 | 2026-02-19 | 471, 472 |  |  | 2026-01-26 | 2026-01-30 | 5d | 2025-12-29 | 2026-01-05 | 14.1d | 0d |  |  |  |  |  |
| 504 | 3 | **CONSTRUCCIÓN Y MONTAJE** |  | 229.5d | 2025-08-04 A | 2026-06-02 |  | 10% | 206.33d | 2025-06-27 | 2026-05-20 | 281d | 2025-01-01 | 2026-07-22 | 65d |  |  | Copia de Lunes - Sabado | 1,544,320.58 | 1,848,970.58 | 103,080 |
| 505 | 3.1 | **OBRA CIVIL** |  | 109d | 2025-08-04 A | 2026-01-12 |  | 79% | 22.44d | 2025-06-27 | 2025-11-01 | 110d | 2025-08-04 | 2026-01-22 | 150.5d |  |  | Copia de Lunes - Sabado | 82,000 | 82,000 | 67,000 |
| 506 | 3.1.1 | **Bases y plateas para estructuras y equipos** |  | 65d | 2025-09-24 A | 2026-01-12 |  | 79% | 13.38d | 2025-06-27 | 2025-08-22 | 49d | 2025-09-24 | 2025-11-25 | 150.5d |  |  | Copia de Lunes - Sabado | 75,000 | 75,000 | 60,000 |
| 507 | 3.1.1.1 | Pilotes de estructuras y equipos |  | 6d | 2025-09-24 A | 2025-10-06 A | 156 | 100% |  | 2025-06-27 | 2025-07-19 | 20d | 2025-09-24 | 2025-10-22 |  |  |  | Copia de Lunes - Sabado | 35,000 | 35,000 | 35,000 |
| 508 | 3.1.1.2 | Nivelación y platea |  | 14d | 2025-10-07 A | 2025-10-22 A | 507 | 100% |  | 2025-07-21 | 2025-08-06 | 15d | 2025-10-23 | 2025-11-08 |  |  |  | Copia de Lunes - Sabado | 20,000 | 20,000 | 20,000 |
| 509 | 3.1.1.3 | Base de equipos |  | 7d | 2025-10-23 A | 2025-10-30 A | 508 | 100% |  | 2025-08-07 | 2025-08-14 | 7d | 2025-11-10 | 2025-11-17 |  |  |  | Copia de Lunes - Sabado | 5,000 | 5,000 | 5,000 |
| 510 | 3.1.1.4 | Bases estructura de parral |  | 7d | 2026-01-05 | 2026-01-12 | 509 |  |  | 2025-08-15 | 2025-08-22 | 7d | 2025-11-18 | 2025-11-25 | 150.5d | 115.5d | start no earlier than 2025-12-23 | Copia de Lunes - Sabado | 15,000 | 15,000 |  |
| 511 | 3.1.2 | Modificaciones en sala de tableros destilería | milestone | 0d | 2025-08-04 A | 2025-10-20 A | 162, 467 | 100% |  | 2025-10-16 | 2025-11-01 | 15d | 2025-08-04 | 2026-01-22 |  |  |  | Copia de Lunes - Sabado | 7,000 | 7,000 | 7,000 |
| 512 | 3.2 | **MONTAJE DE ESTRUCTURAS** |  | 128.5d | 2025-11-24 A | 2026-05-27 |  | 41% | 75.3d | 2025-08-26 | 2026-03-25 | 182d | 2025-11-24 | 2026-05-26 | 68.5d |  |  | Copia de Lunes - Sabado | 269,550 | 352,050 | 36,080 |
| 513 | 3.2.1 | **Estructuras de destilería 3** |  | 53d | 2026-01-23 | 2026-03-26 |  |  |  | 2025-09-24 | 2026-03-06 | 141d | 2026-01-05 | 2026-03-06 | 0d |  |  | Copia de Lunes - Sabado | 225,550 | 225,550 |  |
| 514 | 3.2.1.1 | **Nivel 1** |  | 13d | 2026-01-23 | 2026-02-07 |  |  |  | 2025-09-24 | 2025-10-02 | 8d | 2026-01-05 | 2026-01-19 | 0d |  |  | Copia de Lunes - Sabado | 15,600 | 15,600 |  |
| 515 | 3.2.1.1.1 | Escalera Nivel 1 |  | 10d | 2026-01-23 | 2026-02-04 | 137, 341 |  |  | 2025-09-24 | 2025-09-29 | 5d | 2026-01-05 | 2026-01-15 | 0d |  |  | Copia de Lunes - Sabado |  |  |  |
| 516 | 3.2.1.1.2 | Piso técnico Nivel 1 |  | 3d | 2026-02-04 | 2026-02-07 | 515, 355 |  |  | 2025-09-30 | 2025-10-02 | 3d | 2026-01-16 | 2026-01-19 | 0d |  |  | Copia de Lunes - Sabado | 15,600 | 15,600 |  |

Notes:
- 513: Al costo de mano de obra de montaje de esta estructura, se suma al costo la grúa de 80Tn / por USD29350

| ID | WBS | Task | Duration | Start | Finish | Predecessors | Complete | Remaining | Baseline start | Baseline finish | Baseline duration | Baseline 1 start | Baseline 1 finish | Total slack | Free slack | Constraint | Calendar | Cost | Baseline cost | Actual cost |
| --- | --- | --- | --- | --- | --- | --- | --- | --- | --- | --- | --- | --- | --- | --- | --- | --- | --- | --- | --- | --- |
| 517 | 3.2.1.2 | **Nivel 2** | 13d | 2026-02-12 | 2026-02-27 |  |  |  | 2026-02-05 | 2026-02-13 | 8d | 2026-01-24 | 2026-02-07 | 0d |  |  | Copia de Lunes - Sabado | 15,600 | 15,600 |  |
| 518 | 3.2.1.2.1 | Escalera Nivel 2 | 10d | 2026-02-12 | 2026-02-24 | 516, 542 |  |  | 2026-02-05 | 2026-02-10 | 5d | 2026-01-24 | 2026-02-04 | 0d |  |  | Copia de Lunes - Sabado |  |  |  |
| 519 | 3.2.1.2.2 | Piso técnico Nivel 2 | 3d | 2026-02-24 | 2026-02-27 | 518, 355 |  |  | 2026-02-11 | 2026-02-13 | 3d | 2026-02-05 | 2026-02-07 | 0d |  |  | Copia de Lunes - Sabado | 15,600 | 15,600 |  |
| 520 | 3.2.1.3 | **Nivel 3** | 13d | 2026-03-11 | 2026-03-26 |  |  |  | 2026-02-26 | 2026-03-06 | 8d | 2026-02-20 | 2026-03-06 | 0d |  |  | Copia de Lunes - Sabado |  |  |  |
| 521 | 3.2.1.3.1 | Escalera | 10d | 2026-03-11 | 2026-03-23 | 544 |  |  | 2026-02-26 | 2026-03-03 | 5d | 2026-02-20 | 2026-03-03 | 0d |  |  | Copia de Lunes - Sabado |  |  |  |
| 522 | 3.2.1.3.2 | Estructura | 3d | 2026-03-23 | 2026-03-26 | 521 |  |  | 2026-03-04 | 2026-03-06 | 3d | 2026-03-04 | 2026-03-06 | 0d |  |  | Copia de Lunes - Sabado |  |  |  |
| 523 | 3.2.3 | **Soportes y refuerzo en estructura existente** | 128.5d | 2025-11-24 A | 2026-05-27 |  | 82% | 22.77d | 2025-08-26 | 2026-03-25 | 182d | 2025-11-24 | 2026-05-26 | 68.5d |  |  | Copia de Lunes - Sabado | 44,000 | 44,000 | 36,080 |
| 524 | 3.2.3.1 | Modificaciones en estructura para montaje de IC-433 | 5d | 2025-11-24 A | 2026-01-07 | 340, 18SS, 149 | 50% | 2.5d | 2025-10-27 | 2025-10-27 | 1d | 2025-11-24 | 2025-11-28 | 77.5d | 5.7d |  | Copia de Lunes - Sabado |  |  |  |
| 525 | 3.2.3.2 | Modificaciones en estructura para montaje de TQ-411C | 0.5d | 2026-01-16 | 2026-01-16 | 546 |  |  | 2026-03-25 | 2026-03-25 | 0.5d | 2026-01-07 | 2026-01-07 | 180.3d | 57.3d |  | Copia de Lunes - Sabado |  |  |  |
| 526 | 3.2.3.3 | Modificaciones en estructura para montaje de IC-431 | 5d | 2025-11-24 A | 2025-11-28 A | 18SS, 340 | 100% |  | 2025-08-26 | 2025-08-26 | 1d | 2025-11-24 | 2025-11-28 |  |  |  | Copia de Lunes - Sabado |  |  |  |
| 527 | 3.2.3.4 | Modificaciones en estructura para montaje de IC-432 | 5d | 2025-11-24 A | 2025-11-28 A | 18SS, 340 | 100% |  | 2025-08-26 | 2025-08-26 | 1d | 2025-11-24 | 2025-11-28 |  |  |  | Copia de Lunes - Sabado |  |  |  |
| 528 | 3.2.3.5 | Modificaciones en estructura para montaje de IC-444 | 5d | 2025-11-24 A | 2025-11-28 A | 18SS, 340 | 100% |  | 2025-08-26 | 2025-08-26 | 1d | 2025-11-24 | 2025-11-28 |  |  |  | Copia de Lunes - Sabado |  |  |  |
| 529 | 3.2.3.6 | Modificaciones en estructura para montaje de IC-443 | 5d | 2025-11-24 A | 2025-11-28 A | 18SS, 340 | 100% |  | 2025-10-27 | 2025-10-27 | 1d | 2025-11-24 | 2025-11-28 |  |  |  | Copia de Lunes - Sabado |  |  |  |
| 530 | 3.2.3.7 | Modificaciones en estructura para montaje de IC-441 | 5d | 2025-11-24 A | 2025-11-28 A | 18SS, 340 | 100% |  | 2025-10-27 | 2025-10-27 | 1d | 2025-11-24 | 2025-11-28 |  |  |  | Copia de Lunes - Sabado |  |  |  |
| 531 | 3.2.3.8 | Modificaciones en estructura para montaje de SC-440 | 5d | 2025-11-24 A | 2025-11-28 A | 18SS, 340 | 100% |  | 2025-10-27 | 2025-10-27 | 1d | 2025-11-24 | 2025-11-28 |  |  |  | Copia de Lunes - Sabado |  |  |  |
| 532 | 3.2.3.9 | Modificaciones en estructura para montaje de IC-2208 | 2d | 2026-05-25 | 2026-05-27 | 340, 19SS, 573 |  |  | 2025-10-27 | 2025-10-27 | 1d | 2026-05-25 | 2026-05-26 | 4d | 0d |  | Copia de Lunes - Sabado |  |  |  |
| 533 | 3.2.3.10 | Modificaciones en estructura para montaje de IC-2201 | 2d | 2026-05-25 | 2026-05-27 | 340, 19SS, 574 |  |  | 2025-10-27 | 2025-10-27 | 1d | 2026-05-25 | 2026-05-26 | 68d | 0d |  | Copia de Lunes - Sabado |  |  |  |
| 534 | 3.3 | **MONTAJE MECÁNICO DE EQUIPOS** | 124.5d | 2026-01-05 | 2026-05-29 |  |  |  | 2025-08-26 | 2026-05-16 | 227d | 2025-10-02 | 2026-05-28 | 29.5d |  |  | Copia de Lunes - Sabado | 130,200 | 130,200 |  |
| 535 | 3.3.1 | **Dentro de límites de batería** | 66.3d | 2026-01-14 | 2026-04-01 |  |  |  | 2026-01-31 | 2026-03-05 | 29d | 2026-01-05 | 2026-03-12 | 21.3d |  |  | Copia de Lunes - Sabado | 16,000 | 16,000 |  |
| 536 | 3.3.1.1 | **Nivel 0** | 66.3d | 2026-01-14 | 2026-04-01 |  |  |  | 2026-01-31 | 2026-03-05 | 29d | 2026-01-05 | 2026-03-12 | 51.3d |  |  | Copia de Lunes - Sabado | 9,600 | 9,600 |  |
| 537 | 3.3.1.1.1 | Rectificador con columna de escape (TD-440) | 58d | 2026-01-23 | 2026-04-01 | 124, 509, 487, 522FF+5d |  |  | 2026-02-11 | 2026-03-05 | 20d | 2026-01-05 | 2026-03-12 | 103d | 0d | start no earlier than 2026-01-05 | Copia de Lunes - Sabado | 3,200 | 3,200 |  |
| 538 | 3.3.1.1.2 | Precalentador de alimentación al rectificador (IC-442) | 10d | 2026-01-14 | 2026-01-26 | 124, 509, 483 |  |  | 2026-01-31 | 2026-02-11 | 10d | 2026-02-23 | 2026-03-05 | 51.3d | 21.2d |  | Copia de Lunes - Sabado | 3,200 | 3,200 |  |
| 539 | 3.3.1.1.3 | Bomba de reflujo del rectificador con motor (BO-440 A/B) | 2d | 2026-02-19 | 2026-02-21 | 124, 509, 498, 538 |  |  | 2026-01-31 | 2026-02-05 | 5d | 2026-03-06 | 2026-03-07 | 68.1d | 10.6d |  | Copia de Lunes - Sabado | 3,200 | 3,200 |  |
| 540 | 3.3.1.1.4 | Sistema API para bombas BO-440 | 2d | 2026-03-06 | 2026-03-07 | 539, 311 |  |  | 2026-02-06 | 2026-02-07 | 2d | 2026-03-09 | 2026-03-10 | 57.5d |  |  | Copia de Lunes - Sabado |  |  |  |

Notes:
- 524: Estr. Entre Dest. 1/2
- 525: Estr. Entre Dest. 1/2
- 536: Lo marcado con turquesa son los equipos que se encuentran dentro del limite de batería y se puede montar ni bien lleguen
- 537: Level 0 (Dest. 3)
- 538: Level 0 (Dest. 3)
- 539: Level 0 (Dest. 3)
- 540: Level 0 (Dest. 3)

| ID | WBS | Task | Duration | Start | Finish | Predecessors | Baseline start | Baseline finish | Baseline duration | Baseline 1 start | Baseline 1 finish | Total slack | Free slack | Calendar | Cost | Baseline cost |
| --- | --- | --- | --- | --- | --- | --- | --- | --- | --- | --- | --- | --- | --- | --- | --- | --- |
| 541 | 3.3.1.2 | **Nivel 1** | 4d | 2026-02-07 | 2026-02-12 |  | 2026-01-31 | 2026-02-04 | 4d | 2026-01-20 | 2026-01-23 | 0d |  | Copia de Lunes - Sabado | 3,200 | 3,200 |
| 542 | 3.3.1.2.1 | Recalentador del rectificador con columna de escape (IC-440) | 4d | 2026-02-07 | 2026-02-12 | 516, 488 | 2026-01-31 | 2026-02-04 | 4d | 2026-01-20 | 2026-01-23 | 0d |  | Copia de Lunes - Sabado | 3,200 | 3,200 |
| 543 | 3.3.1.3 | **Nivel 2** | 10d | 2026-02-27 | 2026-03-11 |  | 2026-02-14 | 2026-02-25 | 10d | 2026-02-09 | 2026-02-19 | 0d |  | Copia de Lunes - Sabado | 3,200 | 3,200 |
| 544 | 3.3.1.3.1 | Enfriador de alcohol rectificado (IC-445) | 10d | 2026-02-27 | 2026-03-11 | 519 | 2026-02-14 | 2026-02-25 | 10d | 2026-02-09 | 2026-02-19 | 0d |  | Copia de Lunes - Sabado | 3,200 | 3,200 |
| 545 | 3.3.2 | **Destilería 2 (400m3)** | 116.3d | 2026-01-14 | 2026-05-29 |  | 2025-10-02 | 2026-05-16 | 195d | 2026-01-05 | 2026-05-28 | 68d |  | Copia de Lunes - Sabado | 51,200 | 51,200 |
| 546 | 3.3.2.1 | Reboiler columna mostera (IC-433) | 2d | 2026-01-14 | 2026-01-16 | 524, 486 | 2026-03-25 | 2026-03-25 | 0.5d | 2026-01-05 | 2026-01-06 | 71.8d | 0d | Copia de Lunes - Sabado |  |  |
| 547 | 3.3.2.2 | Tanque flash para reboiler de columna mostera (TQ-411C) | 0.5d | 2026-03-25 | 2026-03-25 | 525, 17SS, 496 | 2026-03-26 | 2026-03-26 | 0.5d | 2026-03-25 | 2026-03-25 | 123d | 0d | Copia de Lunes - Sabado | 3,200 | 3,200 |
| 548 | 3.3.2.3 | Bomba de transferencia de fondo del rectificador con motor (BO-441 A/B) | 1d | 2026-02-19 | 2026-02-20 | 509, 497, 124 | 2026-03-25 | 2026-03-25 | 0.5d | 2026-01-06 | 2026-01-06 | 76.1d | 0d | Copia de Lunes - Sabado | 3,200 | 3,200 |
| 549 | 3.3.2.4 | Tanque de reflujo del rectificador (TQ-441) | 2d | 2026-02-20 | 2026-02-23 | 124, 509, 548, 495 | 2026-03-25 | 2026-03-25 | 0.5d | 2026-01-07 | 2026-01-08 | 76.1d | 75.1d | Copia de Lunes - Sabado | 3,200 | 3,200 |
| 550 | 3.3.2.5 | Decantador de fusel oil (SC-440) | 2d | 2026-01-16 | 2026-01-19 | 478, 531, 546 | 2026-03-25 | 2026-03-25 | 1d | 2026-01-09 | 2026-01-10 | 71.8d | 0d | Copia de Lunes - Sabado | 3,200 | 3,200 |
| 551 | 3.3.2.6 | Enfriador de FO del rectificador (IC-441) | 2d | 2026-01-19 | 2026-01-21 | 477, 530, 550 | 2026-03-25 | 2026-03-25 | 1d | 2026-01-12 | 2026-01-13 | 71.8d | 0d | Copia de Lunes - Sabado | 3,200 | 3,200 |
| 552 | 3.3.2.7 | Condensador de venteos de columna de mosto (IC-443) | 3d | 2026-01-21 | 2026-02-06 | 529, 489, 551 | 2026-03-25 | 2026-03-25 | 0.5d | 2026-01-14 | 2026-01-15 | 71.8d | 0d | Copia de Lunes - Sabado | 3,200 | 3,200 |
| 553 | 3.3.2.8 | Botella de vapor para revoiler de columna de mosto IC-443 (TQ-443) | 1d | 2026-02-06 | 2026-02-07 | 481, 552 | 2026-03-25 | 2026-03-25 | 0.5d | 2026-01-16 | 2026-01-16 | 71.8d | 0d | Copia de Lunes - Sabado |  |  |
| 554 | 3.3.2.9 | Condensador de aldehídos III (IC-431) | 2d | 2026-02-07 | 2026-02-10 | 526, 485, 553 | 2026-03-25 | 2026-03-25 | 0.5d | 2026-01-17 | 2026-01-19 | 71.8d | 0d | Copia de Lunes - Sabado | 3,200 | 3,200 |
| 555 | 3.3.2.10 | Botella de vapor para IC-431 (TQ-432) | 1d | 2026-02-10 | 2026-02-11 | 554, 479 | 2026-03-25 | 2026-03-25 | 0.5d | 2026-01-20 | 2026-01-20 | 71.8d | 0d | Copia de Lunes - Sabado |  |  |
| 556 | 3.3.2.11 | Condensador de columna de mosto (IC-432) | 0.5d | 2026-03-25 | 2026-03-25 | 527, 479, 484, 17SS | 2026-03-25 | 2026-03-25 | 0.5d | 2026-03-25 | 2026-03-25 | 124d |  | Copia de Lunes - Sabado | 3,200 | 3,200 |
| 557 | 3.3.2.12 | Botella de vapor para IC-432 (TQ-448) | 0.5d | 2026-02-11 | 2026-02-11 | 482, 555 | 2026-03-25 | 2026-03-25 | 0.5d | 2026-01-21 | 2026-01-21 | 71.8d | 0d | Copia de Lunes - Sabado |  |  |
| 558 | 3.3.2.13 | Condensador de PCV del rectificador (IC-444) | 2d | 2026-02-11 | 2026-02-13 | 476, 528, 557 | 2026-03-25 | 2026-03-25 | 0.5d | 2026-01-21 | 2026-01-23 | 71.8d | 0d | Copia de Lunes - Sabado | 3,200 | 3,200 |
| 559 | 3.3.2.14 | Botella de vapor para condensador de PCV del rectificador IC-444 (TQ-444) | 1d | 2026-02-13 | 2026-02-14 | 558, 480 | 2026-03-25 | 2026-03-25 | 0.5d | 2026-01-23 | 2026-01-24 | 71.8d | 0d | Copia de Lunes - Sabado |  |  |
| 560 | 3.3.2.17 | Lavador de alcohol (TL-440) | 2d | 2026-02-14 | 2026-02-17 | 475, 559 | 2026-03-25 | 2026-03-25 | 1d | 2026-02-16 | 2026-02-17 | 71.8d | 3.7d | Copia de Lunes - Sabado | 3,200 | 3,200 |
| 561 | 3.3.2.18 | Bomba de lavado de fusel oil con motor (BO-442 A/B) | 2d | 2026-02-19 | 2026-02-21 | 124, 509, 499, 560SS | 2026-03-25 | 2026-03-25 | 1d | 2026-02-16 | 2026-02-17 | 68.1d | 0d | Copia de Lunes - Sabado | 3,200 | 3,200 |
| 562 | 3.3.2.19 | Tanque de lavado de fusel oil (TQ-442) | 2d | 2026-02-19 | 2026-02-21 | 124, 509, 561SS, 494 | 2026-03-25 | 2026-03-25 | 1d | 2026-02-16 | 2026-02-17 | 68.1d | 0d | Copia de Lunes - Sabado | 3,200 | 3,200 |
| 563 | 3.3.2.20 | Bomba de vacío con motor (BO-443 A/B) | 2d | 2026-02-19 | 2026-02-21 | 124, 509, 500, 562SS | 2026-03-25 | 2026-03-25 | 1d | 2026-02-16 | 2026-02-17 | 68.1d | 10.6d | Copia de Lunes - Sabado | 3,200 | 3,200 |
| 564 | 3.3.2.21 | Sistema API para bombas BO-443 | 2d | 2026-03-06 | 2026-03-07 | 563, 311 | 2026-03-26 | 2026-03-26 | 1d | 2026-02-18 | 2026-02-19 | 57.5d | 0d | Copia de Lunes - Sabado |  |  |
| 565 | 3.3.2.15 | Bomba de recirculación para reboiler de columna de mosto (BO433A/B) | 2d | 2026-03-09 | 2026-03-10 | 509, 502, 564 | 2026-03-25 | 2026-03-25 | 1d | 2026-01-24 | 2026-01-27 | 60.5d | 0d | Copia de Lunes - Sabado | 3,200 | 3,200 |
| 566 | 3.3.2.16 | Sistema API para bombas BO-433 | 2d | 2026-03-09 | 2026-03-10 | 565SS, 311 | 2026-03-25 | 2026-03-25 | 1d | 2026-02-13 | 2026-02-14 | 60.5d | 0d | Copia de Lunes - Sabado |  |  |
| 567 | 3.3.2.24 | Bed booster (MZ-2403) | 2d | 2026-03-11 | 2026-03-12 | 501, 566 | 2026-03-25 | 2026-03-25 | 1d | 2026-02-20 | 2026-02-21 | 60.5d | 42d | Copia de Lunes - Sabado |  |  |
| 568 | 3.3.2.22 | Recalentador de columna evaporativa (IC-2201) | 2d | 2026-05-27 | 2026-05-29 | 533, 490 | 2026-05-11 | 2026-05-16 | 6d | 2026-05-27 | 2026-05-28 | 68d | 0d | Copia de Lunes - Sabado | 3,200 | 3,200 |
| 569 | 3.3.2.23 | Condensador de producto (IC-2208) | 2d | 2026-05-27 | 2026-05-29 | 532, 491 | 2026-05-11 | 2026-05-16 | 6d | 2026-05-27 | 2026-05-28 | 4d | 3d | Copia de Lunes - Sabado | 3,200 | 3,200 |
| 570 | 3.3.2.25 | Distribuidor de vapor en destilería | 3d | 2026-05-01 | 2026-05-04 | 290, 567 | 2025-10-02 | 2025-10-04 | 3d | 2026-02-23 | 2026-02-25 | 21.5d | 1d | Copia de Lunes - Sabado |  |  |
| 571 | 3.3.2.26 | Cuadros de vapor | 3d | 2026-05-06 | 2026-05-08 | 570, 304 | 2025-10-06 | 2025-10-08 | 3d | 2026-02-26 | 2026-02-28 | 20.5d | 0d | Copia de Lunes - Sabado |  |  |

Notes:
- 541: Lo marcado con turquesa son los equipos que se encuentran dentro del limite de batería y se puede montar ni bien lleguen
- 542: Level 1 (Dest. 3)
- 543: Lo marcado con turquesa son los equipos que se encuentran dentro del limite de batería y se puede montar ni bien lleguen
- 544: Level 2 (Dest. 3)
- 546: Level 1 (Dest. 1/2)
- 547: Level 2 (Dest. 1/2)
- 548: Level 0 (Dest. 3)
- 549: Level 0 (Dest. 3)
- 550: Level 2 (Dest. 3)
- 551: Level 2 (Dest. 3)
- 552: Level 2 (Dest. 2)
- 553: Level 2 (Dest. 2)
- 554: Level 3 (Dest. 2)
- 555: Level 3 (Dest. 3)
- 556: Level 3 (Dest. 2)
- 557: Level 3 (Dest. 2)
- 558: Level 3 (Dest. 2)
- 559: Level 3 (Dest. 2)
- 560: Level 2 (Dest. 3)
- 561: Level 0 (Dest. 3)
- 562: Level 0 (Dest. 3)
- 563: Level 0 (Dest. 3)
- 565: Level 0 (Dest. 1/2). VER CON RAFA. SI SE PUEDE DEJAR MONTADA LA BOMBA ANTES QUE EL TQ-411. Está puesto para una parada antes.
- 568: Level 1 (Dest. 2)
- 569: Level 2 (Dest. 2)

| ID | WBS | Task | Duration | Start | Finish | Predecessors | Complete | Remaining | Baseline start | Baseline finish | Baseline duration | Baseline 1 start | Baseline 1 finish | Total slack | Free slack | Constraint | Calendar | Cost | Baseline cost |
| --- | --- | --- | --- | --- | --- | --- | --- | --- | --- | --- | --- | --- | --- | --- | --- | --- | --- | --- | --- |
| 572 | 3.3.3 | **Desmontaje de equipos** | 3d | 2026-05-21 | 2026-05-25 |  |  |  | 2026-05-07 | 2026-05-09 | 3d | 2026-05-21 | 2026-05-23 | 4d |  |  | Copia de Lunes - Sabado |  |  |
| 573 | 3.3.3.1 | Recalentador de columna evaporativa (IC-2201) | 3d | 2026-05-21 | 2026-05-25 | 19SS, 124 |  |  | 2026-05-07 | 2026-05-09 | 3d | 2026-05-21 | 2026-05-23 | 4d | 0d |  | Copia de Lunes - Sabado |  |  |
| 574 | 3.3.3.2 | Condensador de producto (IC-2208) | 3d | 2026-05-21 | 2026-05-25 | 19SS, 124 |  |  | 2026-05-07 | 2026-05-09 | 3d | 2026-05-21 | 2026-05-23 | 68d | 0d |  | Copia de Lunes - Sabado |  |  |
| 575 | 3.3.4 | **Mantenimiento de equipos fuera de límites de batería** | 3d | 2026-01-05 | 2026-01-07 |  |  |  | 2025-08-26 | 2025-10-29 | 56d | 2025-10-02 | 2025-11-26 | 124.5d |  |  | Copia de Lunes - Sabado | 56,000 | 56,000 |
| 576 | 3.3.4.1 | Mantenimiento de intercambiadores existentes | 1d | 2026-01-05 | 2026-01-05 | 16SS |  |  | 2025-08-26 | 2025-08-26 | 1d | 2025-10-02 | 2025-10-02 | 126.5d |  | start no earlier than 2025-12-23 | Copia de Lunes - Sabado | 14,000 | 14,000 |
| 577 | 3.3.4.2 | Bombas destilería | 1d | 2026-01-05 | 2026-01-05 | 18SS |  |  | 2025-10-27 | 2025-10-27 | 1d | 2025-11-24 | 2025-11-24 | 126.5d |  | start no earlier than 2025-12-23 | Copia de Lunes - Sabado | 14,000 | 14,000 |
| 578 | 3.3.4.3 | Reboiler | 1d | 2026-01-05 | 2026-01-05 | 18SS |  |  | 2025-10-27 | 2025-10-27 | 1d | 2025-11-24 | 2025-11-24 | 126.5d |  | start no earlier than 2025-12-23 | Copia de Lunes - Sabado | 14,000 | 14,000 |
| 579 | 3.3.4.4 | Torre mostera | 3d | 2026-01-05 | 2026-01-07 | 18SS |  |  | 2025-10-27 | 2025-10-29 | 3d | 2025-11-24 | 2025-11-26 | 124.5d |  | start no earlier than 2025-12-23 | Copia de Lunes - Sabado | 14,000 | 14,000 |
| 580 | 3.3.5 | **Torres de enfriamiento** | 3d | 2026-05-02 | 2026-05-05 |  |  |  | 2025-10-30 | 2025-11-01 | 3d | 2026-02-12 | 2026-02-14 | 15.5d |  |  | Copia de Lunes - Sabado | 7,000 | 7,000 |
| 581 | 3.3.5.1 | Bomba torre de enfriamiento | 3d | 2026-05-02 | 2026-05-05 | 276, 130, 384 |  |  | 2025-10-30 | 2025-11-01 | 3d | 2026-02-12 | 2026-02-14 | 15.5d | 2d |  | Copia de Lunes - Sabado | 7,000 | 7,000 |
| 582 | 3.3.6 | **Bombas perifericas** | 42.5d | 2026-04-04 | 2026-05-23 |  |  |  | 2025-12-18 | 2025-12-19 | 2d | 2026-01-12 | 2026-05-22 | 45.5d |  |  | Copia de Lunes - Sabado |  |  |
| 583 | 3.3.6.1 | Bombas de mosto fermentado | 2d | 2026-04-04 | 2026-04-06 | 269 |  |  | 2025-12-18 | 2025-12-19 | 2d | 2026-01-12 | 2026-01-13 | 45.5d | 34d |  | Copia de Lunes - Sabado |  |  |
| 584 | 3.3.6.2 | Bombas vinasa liviana a destilería | 2d | 2026-05-14 | 2026-05-15 | 297 |  |  | 2025-12-18 | 2025-12-19 | 2d | 2026-02-24 | 2026-02-25 | 11.5d | 0d |  | Copia de Lunes - Sabado |  |  |
| 585 | 3.3.6.3 | Bombas BO-421-A/B y BO-432 A/B | 2d | 2026-05-21 | 2026-05-23 | 262, 19SS |  |  |  |  |  | 2026-05-21 | 2026-05-22 | 73d |  |  | Copia de Lunes - Sabado |  |  |
| 586 | 3.3.7 | **Intercambiadores** | 29.5d | 2026-04-20 | 2026-05-23 |  |  |  | 2025-10-16 | 2026-05-08 | 176d | 2026-03-14 | 2026-05-22 | 8d |  |  | Copia de Lunes - Sabado |  |  |
| 587 | 3.3.7.1 | Intercambiador IC-421 | 2d | 2026-04-20 | 2026-04-21 | 325 |  |  | 2025-10-16 | 2025-10-17 | 2d | 2026-03-14 | 2026-03-16 | 35.5d |  | start no earlier than 2025-12-23 | Copia de Lunes - Sabado |  |  |
| 588 | 3.3.7.2 | Intercambiador IC-2209 | 2d | 2026-05-21 | 2026-05-23 | 332, 19SS |  |  | 2026-05-07 | 2026-05-08 | 2d | 2026-05-21 | 2026-05-22 | 8d |  |  | Copia de Lunes - Sabado |  |  |
| 589 | 3.3.8 | **Equipos de servicios** | 47.5d | 2026-03-30 | 2026-05-23 |  |  |  | 2025-10-28 | 2026-05-08 | 166d | 2026-03-30 | 2026-05-22 | 8d |  |  | Copia de Lunes - Sabado |  |  |
| 590 | 3.3.8.2 | Distribuidor de vapor en caldera | 2d | 2026-05-21 | 2026-05-23 | 283, 19SS |  |  | 2026-05-07 | 2026-05-08 | 2d | 2026-05-21 | 2026-05-22 | 8d |  |  | Copia de Lunes - Sabado |  |  |
| 591 | 3.3.8.3 | Alimentadores de acopio | 1d | 2026-03-30 | 2026-03-30 | 318 |  |  | 2025-12-19 | 2025-12-19 | 1d | 2026-03-30 | 2026-03-30 | 54.5d |  |  | Copia de Lunes - Sabado |  |  |
| 592 | 3.4 | **PIPING** | 133.5d | 2025-11-24 A | 2026-06-02 |  | 2% | 131.35d | 2025-10-09 | 2026-05-20 | 192d | 2025-11-24 | 2026-06-01 | 65d |  |  | Copia de Lunes - Sabado | 933,101 | 1,155,251 |
| 593 | 3.4.1 | **Piping destilación** | 119.3d | 2026-01-14 | 2026-06-02 |  |  |  | 2025-10-09 | 2026-05-18 | 190d | 2026-01-05 | 2026-06-01 | 1d |  |  | Copia de Lunes - Sabado | 355,601 | 355,601 |
| 594 | 3.4.1.1 | **Fabricación** | 60d | 2026-01-14 | 2026-03-25 |  |  |  | 2025-10-09 | 2026-04-10 | 158d | 2026-01-05 | 2026-03-14 | 45.3d |  |  | Copia de Lunes - Sabado | 104,590 | 104,590 |
| 595 | 3.4.1.1.1 | Fabricación piping mayor 6" dentro de límites | 15d | 2026-02-19 | 2026-03-09 | 169, 66, 503 |  |  | 2025-10-09 | 2025-10-25 | 15d | 2026-01-06 | 2026-01-22 | 14.1d | 13.6d |  | Copia de Lunes - Sabado |  |  |
| 596 | 3.4.1.1.2 | Fabricación cañerías restantes | 60d | 2026-01-14 | 2026-03-25 | 169, 492 |  |  | 2026-01-31 | 2026-04-10 | 60d | 2026-01-05 | 2026-03-14 | 51.3d | 0d |  | Copia de Lunes - Sabado |  |  |

| ID | WBS | Task | Duration | Start | Finish | Predecessors | Complete | Remaining | Baseline start | Baseline finish | Baseline duration | Baseline 1 start | Baseline 1 finish | Total slack | Free slack | Constraint | Calendar | Cost | Baseline cost |
| --- | --- | --- | --- | --- | --- | --- | --- | --- | --- | --- | --- | --- | --- | --- | --- | --- | --- | --- | --- |
| 597 | 3.4.1.2 | **Montaje** | 59.5d | 2026-03-25 | 2026-06-02 |  |  |  | 2025-10-27 | 2026-05-18 | 175d | 2026-03-25 | 2026-06-01 | 0.5d |  |  | Copia de Lunes - Sabado | 251,011 | 251,011 |
| 598 | 3.4.1.2.1 | Montaje piping mayor 6" dentro de límites | 1d | 2026-03-25 | 2026-03-25 | 595, 17SS |  |  | 2025-10-27 | 2025-10-31 | 5d | 2026-03-25 | 2026-03-25 | 0.5d |  |  | Copia de Lunes - Sabado |  |  |
| 599 | 3.4.1.2.2 | Montaje cañerías restantes | 45d | 2026-03-26 | 2026-05-18 | 596SS+10d, 598, 538, 522 |  |  | 2026-03-12 | 2026-05-02 | 45d | 2026-03-26 | 2026-05-16 | 0d |  | finish no earlier than 2026-05-02 | Copia de Lunes - Sabado | 251,011 | 251,011 |
| 600 | 3.4.1.2.3 | Acometida de líneas | 10d | 2026-05-21 | 2026-06-02 | 19SS, 599, 598, 549, 550, 551, 553, 555, 557, 559, 560, 561, 562, 569FF, 567, 503 |  |  | 2026-05-07 | 2026-05-18 | 10d | 2026-05-21 | 2026-06-01 | 1d | 0d |  | Copia de Lunes - Sabado |  |  |
| 601 | 3.4.2 | **Piping tanque de flasheo** | 61.3d | 2026-01-14 | 2026-03-26 |  |  |  | 2026-01-14 | 2026-03-27 | 62.5d | 2026-01-05 | 2026-03-26 | 123d |  |  | Copia de Lunes - Sabado | 288,750 | 288,750 |
| 602 | 3.4.2.1 | Fabricación | 30d | 2026-01-14 | 2026-02-18 | 169, 492 |  |  | 2026-01-14 | 2026-02-17 | 30d | 2026-01-05 | 2026-02-07 | 148.3d | 25.3d |  | Copia de Lunes - Sabado | 100,000 | 100,000 |
| 603 | 3.4.2.2 | Montaje | 5d | 2026-03-19 | 2026-03-25 | 17FF, 565FF, 547FF, 566FF, 546FF, 602 |  |  | 2026-03-20 | 2026-03-26 | 5d | 2026-03-19 | 2026-03-25 | 123d | 0d |  | Copia de Lunes - Sabado | 188,750 | 188,750 |
| 604 | 3.4.2.3 | Acometida a lineas existentes | 1d | 2026-03-25 | 2026-03-26 | 603, 17SS |  |  | 2026-03-26 | 2026-03-27 | 1d | 2026-03-25 | 2026-03-26 | 123d | 0d |  | Copia de Lunes - Sabado |  |  |
| 605 | 3.4.3 | **Interconexiones** | 133.5d | 2025-11-24 A | 2026-06-02 |  | 16% | 112.42d | 2025-10-27 | 2026-05-20 | 177d | 2025-11-24 | 2026-06-01 | 40d |  |  | Copia de Lunes - Sabado | 288,750 | 288,750 |
| 606 | 3.4.3.1 | Tie-in points | 3d | 2025-11-24 A | 2025-11-26 A | 18SS, 40, 175 | 100% |  | 2025-10-27 | 2025-10-29 | 3d | 2025-11-24 | 2025-11-26 |  |  |  | Copia de Lunes - Sabado |  |  |
| 607 | 3.4.3.2 | Fabricación | 11d | 2026-05-18 | 2026-05-30 | 599, 370, 503, 175 |  |  | 2026-05-04 | 2026-05-20 | 15d | 2026-05-18 | 2026-05-29 | 42d | 7d |  | Copia de Lunes - Sabado | 100,000 | 100,000 |
| 608 | 3.4.3.3 | Montaje | 5d | 2026-05-27 | 2026-06-02 | 607FS-10d, 19FF, 363, 606, 510 |  |  | 2026-05-13 | 2026-05-18 | 5d | 2026-05-27 | 2026-06-01 | 35d |  |  | Copia de Lunes - Sabado | 188,750 | 188,750 |
| 609 | 3.5 | **MONTAJE ELÉCTRICO** | 70d | 2026-03-11 | 2026-06-01 |  |  |  | 2025-10-15 | 2026-05-16 | 184d | 2025-01-01 | 2026-07-22 | 25d |  |  | Copia de Lunes - Sabado | 84,469.58 | 84,469.58 |
| 610 | 3.5.1 | **Tableros eléctricos** | 37.5d | 2026-04-08 | 2026-05-21 |  |  |  | 2025-10-15 | 2026-04-10 | 153d | 2025-01-01 | 2026-07-22 | 11.5d |  |  | Copia de Lunes - Sabado | 17,391 | 17,391 |
| 611 | 3.5.1.1 | Tablero sala destilería | 20d | 2026-04-08 | 2026-04-30 | 393, 400, 195, 511, 431 |  |  | 2026-03-19 | 2026-04-10 | 20d | 2026-06-30 | 2026-07-22 | 11.5d |  |  | Copia de Lunes - Sabado | 9,938 | 9,938 |
| 612 | 3.5.1.2 | Tablero sala de caldera | 10d | 2026-05-09 | 2026-05-21 | 408, 431, 201 |  |  | 2026-01-14 | 2026-01-24 | 10d | 2026-05-07 | 2026-05-18 | 75d | 0d |  | Copia de Lunes - Sabado | 7,453 | 7,453 |
| 613 | 3.5.2 | **Intervención de tableros existentes** | 47.5d | 2026-03-13 | 2026-05-07 |  |  |  | 2026-01-14 | 2026-03-25 | 61d | 2026-05-07 | 2026-05-29 | 86.5d |  |  | Copia de Lunes - Sabado | 7,450.99 | 7,450.99 |
| 614 | 3.5.2.1 | Tablero SET | 5d | 2026-05-02 | 2026-05-07 | 208, 18SS, 438 |  |  | 2026-01-31 | 2026-02-05 | 5d | 2026-05-25 | 2026-05-29 | 86.5d | 11.5d |  | Copia de Lunes - Sabado | 2,484.33 | 2,484.33 |
| 615 | 3.5.2.2 | Tablero sala destilería | 1d | 2026-03-25 | 2026-03-25 | 423, 17SS, 416, 431, 214 |  |  | 2026-03-25 | 2026-03-25 | 1d | 2026-05-07 | 2026-05-07 | 123.5d | 48.5d |  | Copia de Lunes - Sabado | 2,484.33 | 2,484.33 |
| 616 | 3.5.2.3 | Tablero sala de calderas | 5d | 2026-03-13 | 2026-03-19 | 18SS, 220, 431 |  |  | 2026-01-14 | 2026-01-19 | 5d | 2026-05-07 | 2026-05-12 | 129d | 54d |  | Copia de Lunes - Sabado | 2,482.33 | 2,482.33 |
| 617 | 3.5.3 | **Montaje en campo** | 70d | 2026-03-11 | 2026-06-01 |  |  |  | 2025-12-13 | 2026-05-16 | 133d | 2026-02-25 | 2026-05-30 | 1d |  |  | Copia de Lunes - Sabado | 59,627.59 | 59,627.59 |
| 618 | 3.5.3.1 | **Destilería** | 70d | 2026-03-11 | 2026-06-01 |  |  |  | 2026-02-26 | 2026-05-16 | 69d | 2026-02-25 | 2026-05-30 | 1d |  |  | Copia de Lunes - Sabado | 59,627.59 | 59,627.59 |
| 619 | 3.5.3.1.1 | Canalización potencia / señal | 15d | 2026-03-11 | 2026-03-28 | 227, 113, 544 |  |  | 2026-02-26 | 2026-03-14 | 15d | 2026-02-25 | 2026-03-13 | 25d | 0d |  | Copia de Lunes - Sabado | 14,906.75 | 14,906.75 |
| 620 | 3.5.3.1.2 | Tendido de cables de potencia | 15d | 2026-03-28 | 2026-04-15 | 619 |  |  | 2026-03-16 | 2026-04-01 | 15d | 2026-03-14 | 2026-03-31 | 25d | 0d |  | Copia de Lunes - Sabado | 14,906.75 | 14,906.75 |
| 621 | 3.5.3.1.3 | Tendido de cable de señal | 15d | 2026-03-28 | 2026-04-15 | 619 |  |  | 2026-03-16 | 2026-04-01 | 15d | 2026-03-14 | 2026-03-31 | 25d |  |  | Copia de Lunes - Sabado | 14,906.75 | 14,906.75 |
| 622 | 3.5.3.1.4 | Conexionado de cable de potencia | 6d | 2026-04-15 | 2026-04-22 | 620, 544 |  |  | 2026-04-02 | 2026-04-08 | 6d | 2026-04-01 | 2026-04-07 | 25d |  |  | Copia de Lunes - Sabado | 5,963 | 5,963 |
| 623 | 3.5.3.1.5 | Montaje de instrumentos | 3d | 2026-05-18 | 2026-05-21 | 599, 446, 227 |  |  | 2026-05-04 | 2026-05-06 | 3d | 2026-05-18 | 2026-05-20 | 0d |  |  | Copia de Lunes - Sabado | 2,981.34 | 2,981.34 |
| 624 | 3.5.3.1.6 | Conexionado de cable de señal | 6d | 2026-05-14 | 2026-05-21 | 623FF, 621 |  |  | 2026-04-30 | 2026-05-06 | 6d | 2026-05-14 | 2026-05-20 | 0d |  |  | Copia de Lunes - Sabado | 5,963 | 5,963 |
| 625 | 3.5.3.1.7 | Montaje y conexionado de instrumentos de líneas de acometida | 9d | 2026-05-21 | 2026-06-01 | 600SS |  |  | 2026-05-07 | 2026-05-16 | 9d | 2026-05-21 | 2026-05-30 | 1d |  |  | Copia de Lunes - Sabado |  |  |
| 626 | 3.5.3.2 | Bombas torre de enfriamiento | 5d | 2026-05-08 | 2026-05-13 | 581, 233, 453 |  |  | 2025-12-18 | 2025-12-23 | 5d | 2026-02-28 | 2026-03-05 | 13.5d | 0d |  | Copia de Lunes - Sabado |  |  |

Notes:
- 600: La acometida de líneas montadas en parada anual, con las líneas montadas en estructura de nueva destilación.
- 603: Incluye proporcional de presupuestado para aislaciones
- 604: Ver si esto se podría hacer en la parada 13 de Marzo, en la misma que se monta el tanque TQ-411
- 608: Incluye proporcional de presupuestado para aislaciones

| ID | WBS | Task | Duration | Start | Finish | Predecessors | Baseline start | Baseline finish | Baseline duration | Baseline 1 start | Baseline 1 finish | Total slack | Free slack | Calendar | Cost | Baseline cost | Text2 | Text28 | Text29 | Text30 | Number1 |
| --- | --- | --- | --- | --- | --- | --- | --- | --- | --- | --- | --- | --- | --- | --- | --- | --- | --- | --- | --- | --- | --- |
| 627 | 3.6 | **PROGRAMACIÓN** | 45d | 2026-01-05 | 2026-02-25 |  | 2025-09-11 | 2025-11-01 | 45d | 2026-01-06 | 2026-02-26 | 66.5d |  | Copia de Lunes - Sabado | 45,000 | 45,000 |  |  |  |  |  |
| 628 | 3.6.1 | Programación Software Destilería | 45d | 2026-01-05 | 2026-02-25 | 169, 240 | 2025-09-11 | 2025-11-01 | 45d | 2026-01-06 | 2026-02-26 | 66.5d |  | Copia de Lunes - Sabado | 45,000 | 45,000 |  |  |  |  |  |
| 629 | 4 | **PUESTA EN MARCHA** | 128d | 2026-03-20 | 2026-08-17 |  | 2025-12-20 | 2026-08-01 | 193d | 2025-01-13 | 2026-08-15 | 0d |  | Copia de Lunes - Sabado | 127,433 | 127,433 | 0% | N | N | N | 150 |
| 630 | 4.1 | **PRE-COMISIONADO** | 86d | 2026-03-20 | 2026-06-29 |  | 2025-12-20 | 2026-06-22 | 158d | 2025-01-13 | 2026-06-27 | 42d |  |  | 127,433 | 127,433 |  |  |  |  |  |
| 631 | 4.1.1 | **Verificaciones (PRAJ)** | 86d | 2026-03-20 | 2026-06-29 |  | 2026-04-08 | 2026-06-22 | 65d | 2026-03-02 | 2026-06-27 | 42d |  |  | 117,000 | 117,000 |  |  |  |  |  |
| 632 | 1.6.1.1.1 | Montaje de TD-440 | 25d | 2026-03-20 | 2026-04-18 | 537FS-10d |  |  |  | 2026-03-02 | 2026-03-30 | 103d |  |  |  |  |  |  |  |  |  |
| 633 | 4.1.1.1 | Montaje mecanico para pruebas | 25d | 2026-05-15 | 2026-06-13 | 645SF | 2026-04-08 | 2026-05-30 | 45d | 2026-05-15 | 2026-06-13 | 55d |  |  |  |  |  |  |  |  |  |
| 634 | 4.1.1.2 | Montaje electrico | 25d | 2026-05-15 | 2026-06-13 | 645SF | 2026-04-25 | 2026-05-30 | 30d | 2026-05-15 | 2026-06-13 | 55d |  |  |  |  |  |  |  |  |  |
| 635 | 4.1.1.3 | Procesista | 38d | 2026-05-15 | 2026-06-29 | 19SS-5d | 2026-05-01 | 2026-06-22 | 45d | 2026-05-15 | 2026-06-27 | 42d |  |  |  |  |  |  |  |  |  |
| 636 | 4.1.2 | **Pruebas** | 16.5d | 2026-05-14 | 2026-06-02 |  | 2025-12-20 | 2026-05-18 | 128d | 2025-01-13 | 2026-06-01 | 0d |  |  | 10,433 | 10,433 |  |  |  |  |  |
| 637 | 4.1.2.1 | Destilería | 16d | 2026-05-14 | 2026-06-02 | 622SS, 624SS, 540, 564, 628, 625FF, 611 | 2026-04-30 | 2026-05-18 | 16d | 2026-05-14 | 2026-06-01 | 0d |  |  | 6,433 | 6,433 |  |  |  |  |  |
| 638 | 4.1.2.3 | Bombas Torres de enfriamiento | 3d | 2026-05-14 | 2026-05-16 | 626 | 2025-12-24 | 2025-12-26 | 3d | 2026-03-06 | 2026-03-09 | 13.5d |  |  | 3,000 | 3,000 |  |  |  |  |  |
| 639 | 4.1.2.4 | Bombas periféricas | 3d | 2026-05-16 | 2026-05-19 | 583, 584 | 2025-12-20 | 2025-12-23 | 3d | 2026-02-26 | 2026-02-28 | 11.5d |  |  | 1,000 | 1,000 |  |  |  |  |  |
| 640 | 4.1.3 | **Capacitación y entrenamiento** | 27d | 2026-04-28 | 2026-05-29 |  | 2026-04-14 | 2026-05-14 | 27d | 2026-04-28 | 2026-05-28 | 68d |  |  |  |  |  |  |  |  |  |
| 641 | 4.1.3 | Confección de documentación | 20d | 2026-04-28 | 2026-05-21 | 644SS-30d | 2026-04-14 | 2026-05-06 | 20d | 2026-04-28 | 2026-05-20 | 68d | 0d |  |  |  |  |  |  |  |  |
| 642 | 4.1.3 | Capacitación del personal | 7d | 2026-05-21 | 2026-05-29 | 641 | 2026-05-07 | 2026-05-14 | 7d | 2026-05-21 | 2026-05-28 | 68d |  |  |  |  |  |  |  |  |  |
| 643 | 4.2 | **COMISIONADO** | 65d | 2026-06-02 | 2026-08-17 |  | 2026-05-19 | 2026-08-01 | 65d | 2026-06-02 | 2026-08-15 | 0d |  |  |  |  | 0% | N | N | N | 105 |
| 644 | 4.2.1 | Puesta en marcha con producto (estabilización de la planta y operación continua en estado estable de la planta al 70 % de su capacidad) | 10d | 2026-06-02 | 2026-06-13 | 19, 639, 637, 638, 571, 576, 577, 578, 579, 587, 588, 590, 591 | 2026-05-19 | 2026-05-29 | 10d | 2026-06-02 | 2026-06-12 | 0d |  |  |  |  |  |  |  |  |  |
| 645 | 4.2.2 | Aumento de la capacidad de planta de 70% to 100% | 10d | 2026-06-13 | 2026-06-25 | 644 | 2026-05-30 | 2026-06-10 | 10d | 2026-06-13 | 2026-06-24 | 0d |  |  |  |  |  |  |  |  |  |
| 646 | 4.2.3 | Estabilización de la planta y operación continua al 100 % de su capacidad | 15d | 2026-06-25 | 2026-07-13 | 645 | 2026-06-11 | 2026-06-27 | 15d | 2026-06-25 | 2026-07-11 | 0d |  |  |  |  |  |  |  |  |  |
| 647 | 4.2.4 | Ejecución de garantía de rendimiento de la planta | 30d | 2026-07-13 | 2026-08-17 | 646, 608 | 2026-06-29 | 2026-08-01 | 30d | 2026-07-13 | 2026-08-15 | 0d |  |  |  |  |  |  |  |  |  |
